# NEW_6477046-BOILER-WG110-BLB001

Schedule from MS Project XML, 2026-08-17 to 2026-10-03, status date 2025-05-09, 10 hours a day, A marks actual dates.

## Calendars

- Standard: Mon-Fri 07:30-15:30; Sat-Sun off.
- 24 Hours: Mon-Sun 00:00-00:00.
- 10.3 CALENDAR: Mon-Sun 07:00-17:00.

## Resources

| Resource | Group |
| --- | --- |
| WGP-PROD | W5P1 |
| WC-MISC | WCG-OTHER |
| WGP-ETP | W5E1 |
| WC-SCAF | WCG-UGL |
| WC-VIBE | WCG-ALS |
| WC-ELECT | WCG-UGL |
| WGP-MTP | W5M1 |
| WC-SNDBST | WCG-SRG |
| WC-NDT | WCG-ALS |
| WC-MECH | WCG-UGL |
| WC-OPER | WCG-VEOLIA |
| WC-VACTRK | WCG-VEOLIA |
| WC-INSP | WCG-ALS |
| WGP-GL | W5P1 |
| WGP-DELAY | W5M1 |
| WGP-ENG | W5M1 |
| WC-CRN25 | WCG-FREO |
| WC-HP55M | WCG-VEOLIA |
| WGP-DRONE | W7D1 |
| WC-CPINSP | WCS-ALS |
| WC-ALIGN | WCT-ALS |
| WC-CRN60 | WCG-GCS |
| WC-CRN20 | WCG-GCS |
| WC-LAGG | WCG-SRG |
| WC-CRN95 | WCG-GCS |
| WC-CRN80 |  |
| WC-LPW | WCG-VEOLIA |
| METALLURGICAL |  |
| WESTARC |  |
| WC-CRN100 | WCG-GCS |
| WC-GENER | SRG TENDER |

## Schedule

| ID | WBS | Task | Type | Duration | Start | Finish | Predecessors | Complete | Remaining | Total slack | Free slack | Resources | Work | Actual work | Day | Work Order No. | Operation No. | Operation Description | Assigned Department |
| --- | --- | --- | --- | --- | --- | --- | --- | --- | --- | --- | --- | --- | --- | --- | --- | --- | --- | --- | --- |
| 1 | 1 | **Pre-Work** |  | 16.35d | 2026-08-17 07:00 A | 2026-09-14 11:00 |  | 6% | 15.4d | 11.65d |  |  | 599h | 40h | Day4 |  |  |  |  |
| 2 | 1.1 | **Scaffold** |  | 16.35d | 2026-08-17 07:30 A | 2026-09-14 11:00 |  | 14% | 14.14d | 11.65d |  |  | 296h | 40h | Day4 |  |  |  |  |
| 3 | 1.1.1 | Conduct all pre-work scaffold lifts |  | 8h | 2026-08-17 07:30 A | 2026-08-17 15:30 A | 71FS-28ed | 100% |  |  |  | WC-GENER [200%] | 16h | 16h | Day-26 | WO6899500 | 10 | SRG - Boiler 1 MOH scaffold pre-work | WCG-OTHER |
| 4 | 1.1.2 | Scaffold access to Feedwater flow element (1.3) |  | 4h | 2026-08-18 07:30 A | 2026-08-18 11:30 A | 3 | 100% |  |  |  | WC-GENER [200%] | 8h | 8h | Day-25 | WO6899500 | 10 | SRG - Boiler 1 MOH scaffold pre-work | WCG-OTHER |
| 5 | 1.1.3 | Scaffold access to Feedwater isolating valve and NRV, 4-way pipe support (1.4 & 1.5) |  | 8h | 2026-08-18 11:30 A | 2026-08-19 11:30 A | 4 | 100% |  |  |  | WC-GENER [200%] | 16h | 16h | Day-25 | WO6899500 | 10 | SRG - Boiler 1 MOH scaffold pre-work | WCG-OTHER |
| 6 | 1.1.4 | Scaffold access to Steam drum & Steam drum safety valves (2.1 & 2.3.6-10) |  | 12h | 2026-08-19 11:30 | 2026-08-20 15:30 | 5 |  |  | 13.75d | 0d | WC-GENER [200%] | 24h |  | Day-24 | WO6899500 | 10 | SRG - Boiler 1 MOH scaffold pre-work | WCG-OTHER |
| 7 | 1.1.5 | Scaffold access to Attemperator inspection ports (3.2.4) |  | 6h | 2026-08-21 07:30 | 2026-08-21 13:30 | 6 |  |  | 13.75d | 0d | WC-GENER [200%] | 12h |  | Day-22 | WO6899500 | 10 | SRG - Boiler 1 MOH scaffold pre-work | WCG-OTHER |
| 8 | 1.1.6 | Scaffold access to Attemperator Externals (3.3) |  | 8h | 2026-08-21 13:30 | 2026-08-24 13:30 | 7 |  |  | 13.75d | 0d | WC-GENER [200%] | 16h |  | Day-22 | WO6899500 | 10 | SRG - Boiler 1 MOH scaffold pre-work | WCG-OTHER |
| 9 | 1.1.7 | Scaffold access to secondary superheater outlet header (5.1.1-2) |  | 8h | 2026-08-24 13:30 | 2026-08-25 13:30 | 8 |  |  | 13.75d | 0d | WC-GENER [200%] | 16h |  | Day-19 | WO6899500 | 10 | SRG - Boiler 1 MOH scaffold pre-work | WCG-OTHER |
| 10 | 1.1.8 | Scaffold access to Furnace door #4 (8.1.2) |  | 2h | 2026-08-25 13:30 | 2026-08-25 15:30 | 9 |  |  | 13.75d | 0d | WC-GENER [200%] | 4h |  | Day-18 | WO6899500 | 10 | SRG - Boiler 1 MOH scaffold pre-work | WCG-OTHER |
| 11 | 1.1.9 | Scaffold access to HS piping (10.1.6 & 10.2.7-8) |  | 16h | 2026-08-26 07:30 | 2026-08-27 15:30 | 10 |  |  | 13.75d | 0d | WC-GENER [200%] | 32h |  | Day-17 | WO6899500 | 10 | SRG - Boiler 1 MOH scaffold pre-work | WCG-OTHER |
| 12 | 1.1.10 | Scaffold to access Flash tank & Flash tank safety valve (11.1.2 & 11.2.6) |  | 6h | 2026-08-28 07:30 | 2026-08-28 13:30 | 11 |  |  | 13.75d | 0d | WC-GENER [200%] | 12h |  | Day-15 | WO6899500 | 10 | SRG - Boiler 1 MOH scaffold pre-work | WCG-OTHER |
| 13 | 1.1.11 | Scaffold access to FD fan door #3 (12.1.2) |  | 1h | 2026-08-28 13:30 | 2026-08-28 14:30 | 12 |  |  | 13.75d | 0d | WC-GENER [200%] | 2h |  | Day-15 | WO6899500 | 10 | SRG - Boiler 1 MOH scaffold pre-work | WCG-OTHER |
| 14 | 1.1.12 | Scaffold access to FD fan outlet ducting door #14 & #15 (12.1.3) |  | 4h | 2026-08-28 14:30 | 2026-08-31 10:30 | 13 |  |  | 13.75d | 0d | WC-GENER [200%] | 8h |  | Day-15 | WO6899500 | 10 | SRG - Boiler 1 MOH scaffold pre-work | WCG-OTHER |
| 15 | 1.1.13 | Scaffold access to FD fan expansion joint (12.2.7) |  | 4h | 2026-08-31 10:30 | 2026-08-31 14:30 | 14 |  |  | 13.75d | 0d | WC-GENER [200%] | 8h |  | Day-12 | WO6899500 | 10 | SRG - Boiler 1 MOH scaffold pre-work | WCG-OTHER |
| 16 | 1.1.14 | Scaffold access to Rotary air heater door #2 (13.1.4) |  | 1h | 2026-08-31 14:30 | 2026-08-31 15:30 | 15 |  |  | 13.75d | 0d | WC-GENER [200%] | 2h |  | Day-12 | WO6899500 | 10 | SRG - Boiler 1 MOH scaffold pre-work | WCG-OTHER |
| 17 | 1.1.15 | Scaffold handrail at Rotary air heater door #5 (13.1.7) |  | 1h | 2026-09-01 07:30 | 2026-09-01 08:30 | 16 |  |  | 13.75d | 0d | WC-GENER [200%] | 2h |  | Day-11 | WO6899500 | 10 | SRG - Boiler 1 MOH scaffold pre-work | WCG-OTHER |
| 18 | 1.1.16 | Scaffold access to Rotary air heater hot & cold end bearings (13.1.8-9) |  | 6h | 2026-09-01 08:30 | 2026-09-01 14:30 | 17 |  |  | 13.75d | 0d | WC-GENER [200%] | 12h |  | Day-11 | WO6899500 | 10 | SRG - Boiler 1 MOH scaffold pre-work | WCG-OTHER |
| 19 | 1.1.17 | Scaffold to access Rotary air heater for installation of anti-rotation device (13.3.7) |  | 4h | 2026-09-01 14:30 | 2026-09-02 10:30 | 18 |  |  | 13.75d | 0d | WC-GENER [200%] | 8h |  | Day-11 | WO6899500 | 10 | SRG - Boiler 1 MOH scaffold pre-work | WCG-OTHER |
| 20 | 1.1.18 | Scaffold to access Rotary air heater expansion joints x3 (13.4.4) |  | 8h | 2026-09-02 10:30 | 2026-09-03 10:30 | 19 |  |  | 13.75d | 0d | WC-GENER [200%] | 16h |  | Day-10 | WO6899500 | 10 | SRG - Boiler 1 MOH scaffold pre-work | WCG-OTHER |
| 21 | 1.1.19 | Scaffold access to Windbox door #1 (14.1.4) |  | 1h | 2026-09-03 10:30 | 2026-09-03 11:30 | 20 |  |  | 13.75d | 0d | WC-GENER [200%] | 2h |  | Day-9 | WO6899500 | 10 | SRG - Boiler 1 MOH scaffold pre-work | WCG-OTHER |
| 22 | 1.1.20 | Scaffold access to Continuous blowdown valve and enclosure rear wall drain lines (15.2.1) |  | 6h | 2026-09-03 11:30 | 2026-09-04 09:30 | 21 |  |  | 13.75d | 0d | WC-GENER [200%] | 12h |  | Day-9 | WO6899500 | 10 | SRG - Boiler 1 MOH scaffold pre-work | WCG-OTHER |
| 23 | 1.1.21 | Scaffold access to Final drains (15.2.2) |  | 6h | 2026-09-04 09:30 | 2026-09-04 15:30 | 22 |  |  | 13.75d | 0d | WC-GENER [200%] | 12h |  | Day-8 | WO6899500 | 10 | SRG - Boiler 1 MOH scaffold pre-work | WCG-OTHER |
| 24 | 1.1.22 | Scaffold access to HS drains (15.2.3) |  | 6h | 2026-09-07 07:30 | 2026-09-07 13:30 | 23 |  |  | 13.75d | 0d | WC-GENER [200%] | 12h |  | Day-5 | WO6899500 | 10 | SRG - Boiler 1 MOH scaffold pre-work | WCG-OTHER |
| 25 | 1.1.23 | Erect 1m mobile scaffold for misc drains access (15.3.1) |  | 2h | 2026-09-07 13:30 | 2026-09-07 15:30 | 24 |  |  | 14.2d | 0d | WC-GENER [200%] | 4h |  | Day-5 | WO6899500 | 10 | SRG - Boiler 1 MOH scaffold pre-work | WCG-OTHER |
| 26 | 1.1.24 | Scaffold access to Continuous blowdown & downcomer base plate (15.3.2 & 16.1.2) |  | 2h | 2026-09-08 07:30 | 2026-09-08 09:30 | 25 |  |  | 14.2d | 0d | WC-GENER [200%] | 4h |  | Day-4 | WO6899500 | 10 | SRG - Boiler 1 MOH scaffold pre-work | WCG-OTHER |
| 27 | 1.1.25 | Scaffold access to Attemperator return line 4-way pipe support (16.1.1) |  | 4h | 2026-09-08 09:30 | 2026-09-08 13:30 | 26 |  |  | 14.2d | 0d | WC-GENER [200%] | 8h |  | Day-4 | WO6899500 | 10 | SRG - Boiler 1 MOH scaffold pre-work | WCG-OTHER |
| 28 | 1.1.26 | Erect 1m mobile scaffold to access top of MCC panel (18.1) |  | 2h | 2026-09-08 13:30 | 2026-09-08 15:30 | 27 |  |  | 14.2d | 0d | WC-GENER [200%] | 4h |  | Day-4 | WO6899500 | 10 | SRG - Boiler 1 MOH scaffold pre-work | WCG-OTHER |
| 29 | 1.1.27 | Scaffold access to HS header vertical elbow (19.1.4) |  | 2h | 2026-09-09 07:30 | 2026-09-09 09:30 | 28 |  |  | 14.2d | 0d | WC-GENER [200%] | 4h |  | Day-3 | WO6899500 | 10 | SRG - Boiler 1 MOH scaffold pre-work | WCG-OTHER |
| 30 | 1.1.28 | Erect scaffold below steam drum safety valve platform prior to grid mesh removal |  | 2h | 2026-09-09 09:30 | 2026-09-09 11:30 | 29 |  |  | 14d | 0d | WC-GENER [200%] | 4h |  | Day-3 | WO6899500 | 10 | SRG - Boiler 1 MOH scaffold pre-work | WCG-OTHER |
| 31 | 1.1.29 | Erect scaffold to access gas vent valve |  | 2h | 2026-09-09 11:30 | 2026-09-09 13:30 | 30 |  |  | 13.8d | 0d | WC-GENER [200%] | 4h |  | Day-3 | WO6899500 | 10 | SRG - Boiler 1 MOH scaffold pre-work | WCG-OTHER |
| 32 | 1.1.30 | Erect scaffold to access HS header isolation valve |  | 4h | 2026-09-09 13:30 | 2026-09-09 17:30 | 31 |  |  | 13.6d | 1.95d | WC-GENER [200%] | 8h |  | Day-3 | WO6899500 | 10 | SRG - Boiler 1 MOH scaffold pre-work | WCG-OTHER |
| 33 | 1.1.31 | Scaffold barricade & ladder access to Economsier & RAH (9.1.3 & 13.1.6) |  | 2h | 2026-09-14 09:00 | 2026-09-14 11:00 | 73 |  |  | 11.65d | 0d | WC-GENER [200%] | 4h |  | Day2 | WO6899500 | 10 | SRG - Boiler 1 MOH scaffold pre-work | WCG-OTHER |
| 34 | 1.1.32 | Pre-Work Scaffold Complete | milestone | 0h | 2026-09-14 11:00 | 2026-09-14 11:00 | 32, 33 |  |  | 11.65d | 0d |  |  |  | Day2 |  |  |  |  |

| ID | WBS | Task | Type | Duration | Start | Finish | Predecessors | Total slack | Free slack | Calendar | Resources | Work | Day | Work Order No. | Operation No. | Assigned Department |
| --- | --- | --- | --- | --- | --- | --- | --- | --- | --- | --- | --- | --- | --- | --- | --- | --- |
| 35 | 1.2 | **Online Lagging Removal** |  | 7.2d | 2026-08-31 07:00 | 2026-09-10 15:30 |  | 12.8d |  |  |  | 188h | Day4 |  |  |  |
| 36 | 1.2.1 | Strip lagging on Feedwater station piping and valves (1.2.2) |  | 12h | 2026-08-31 07:00 | 2026-09-01 09:00 | 71FS-14ed | 24.6d | 0d | 10.3 CALENDAR | WC-GENER [200%] | 24h | Day-12 | WO6899500 | 20 | WCG-OTHER |
| 37 | 1.2.2 | Strip lagging on Feedwater flow element nozzles (1.3.3) |  | 4h | 2026-09-01 09:00 | 2026-09-01 13:00 | 4, 36 | 24.6d | 0d | 10.3 CALENDAR | WC-GENER [200%] | 8h | Day-11 | WO6899500 | 20 | WCG-OTHER |
| 38 | 1.2.3 | Strip lagging on Feedwater isolating valve and NRV (1.4.3) |  | 6h | 2026-09-01 13:00 | 2026-09-02 09:00 | 5, 37 | 24.6d | 0d | 10.3 CALENDAR | WC-GENER [200%] | 12h | Day-11 | WO6899500 | 20 | WCG-OTHER |
| 39 | 1.2.4 | Strip lagging on Feedwater 4-way sliding support (1.5.3) |  | 4h | 2026-09-02 09:00 | 2026-09-02 13:00 | 38 | 24.6d | 0d | 10.3 CALENDAR | WC-GENER [200%] | 8h | Day-10 | WO6899500 | 20 | WCG-OTHER |
| 40 | 1.2.5 | Strip lagging on Steam drum doors (2.1.6-7) |  | 4h | 2026-09-02 13:00 | 2026-09-02 17:00 | 6, 39 | 24.6d | 0d | 10.3 CALENDAR | WC-GENER [200%] | 8h | Day-10 | WO6899500 | 20 | WCG-OTHER |
| 41 | 1.2.6 | Strip lagging on Flash tank (11.2) |  | 20h | 2026-09-03 07:00 | 2026-09-04 17:00 | 12, 40 | 24.6d | 0d | 10.3 CALENDAR | WC-GENER [200%] | 40h | Day-9 | WO6899500 | 20 | WCG-OTHER |
| 42 | 1.2.7 | Strip lagging on Blowdown vessel (11.3.1) |  | 4h | 2026-09-05 07:00 | 2026-09-05 11:00 | 41 | 24.6d | 0d | 10.3 CALENDAR | WC-GENER [200%] | 8h | Day-7 | WO6899500 | 20 | WCG-OTHER |
| 43 | 1.2.8 | Strip lagging on FD fan and ducting (12.1.6) |  | 8h | 2026-09-05 11:00 | 2026-09-06 09:00 | 15, 42 | 24.6d | 1.45d | 10.3 CALENDAR | WC-GENER [200%] | 16h | Day-7 | WO6899500 | 20 | WCG-OTHER |
| 44 | 1.2.9 | Strip lagging on above ground level drains and blowdown systems (15.2.2-8) |  | 16h | 2026-09-07 13:30 | 2026-09-09 09:30 | 24, 43 | 23.15d | 0d | 10.3 CALENDAR | WC-GENER [200%] | 32h | Day-5 | WO6899500 | 20 | WCG-OTHER |
| 45 | 1.2.10 | Strip lagging on ground level drains and blowdown system (15.3.3-5) |  | 12h | 2026-09-09 09:30 | 2026-09-10 11:30 | 44 | 23.15d | 0d | 10.3 CALENDAR | WC-GENER [200%] | 24h | Day-3 | WO6899500 | 20 | WCG-OTHER |
| 46 | 1.2.11 | Strip lagging on Downcomer base plate (16.1.4) |  | 4h | 2026-09-10 11:30 | 2026-09-10 15:30 | 45 | 23.15d | 0d | 10.3 CALENDAR | WC-GENER [200%] | 8h | Day-2 | WO6899500 | 20 | WCG-OTHER |
| 47 | 1.2.12 | Online Lagging Removal Complete | milestone | 0h | 2026-09-10 15:30 | 2026-09-10 15:30 | 46, 37, 39, 40, 43, 42 | 12.8d | 1.15d |  |  |  | Day-2 |  |  |  |
| 48 | 1.3 | **Shutdown TA1** |  | 1.6d | 2026-09-07 20:00 | 2026-09-09 16:00 |  | 13.6d |  |  |  | 48h | Day2 |  |  |  |
| 49 | 1.3.1 | Shutdown TA1 in preperation for Boiler 1 MOH |  | 40h | 2026-09-07 20:00 | 2026-09-09 12:00 | 71FS-6ed | 13.95d | 0d |  | WGP-PROD | 40h | Day-5 | WO6908139 | 10 | W5P1 |
| 50 | 1.3.2 | Raise TA1 HV permit |  | 4h | 2026-09-09 12:00 | 2026-09-09 16:00 | 49 | 13.6d | 1.95d |  | WGP-ETP [200%] | 8h | Day-3 | WO6908139 | 20 | W5E1 |
| 51 | 1.4 | **Starter Maintenance - Pre-work** |  | 0d | 2026-09-12 07:00 | 2026-09-12 10:30 |  | 12d |  |  |  | 7h | Day2 |  |  |  |
| 52 | 1.4.1 | PDMAIN34 - LV STARTER (POWERHOUSE) MAINTENANCE - STARTER-WG110-ICF101 |  | 0.5h | 2026-09-12 07:00 | 2026-09-12 07:30 | 71FS-2ed | 12d | 0d |  | WGP-ETP [200%] | 1h | Day0 | 6856614 | 30 | W5E1 |
| 53 | 1.4.2 | PDMAIN34 - LV STARTER (POWERHOUSE) MAINTENANCE - STARTER-WG110-ICF102 |  | 0.5h | 2026-09-12 07:30 | 2026-09-12 08:00 | 52 | 12d | 0d |  | WGP-ETP [200%] | 1h | Day0 | 6860881 | 30 | W5E1 |
| 54 | 1.4.3 | PDMAIN34 - LV STARTER (POWERHOUSE) MAINTENANCE - STARTER-WG110-101BD05 |  | 0.5h | 2026-09-12 08:00 | 2026-09-12 08:30 | 53 | 12d | 0d |  | WGP-ETP [200%] | 1h | Day0 | 6860933 | 30 | W5E1 |
| 55 | 1.4.4 | PDMAIN34 - LV STARTER (POWERHOUSE) MAINTENANCE - STARTER-WG110-SAS202 |  | 0.5h | 2026-09-12 08:30 | 2026-09-12 09:00 | 54 | 12d | 0d |  | WGP-ETP [200%] | 1h | Day0 | 6860904 | 30 | W5E1 |
| 56 | 1.4.5 | PDMAIN34 - LV STARTER (POWERHOUSE) MAINTENANCE - STARTER-WG110-101SH10 |  | 0.5h | 2026-09-12 09:00 | 2026-09-12 09:30 | 55 | 12d | 0d |  | WGP-ETP [200%] | 1h | Day0 | 6860932 | 30 | W5E1 |
| 57 | 1.4.6 | PDMAIN34 - LV STARTER (POWERHOUSE) MAINTENANCE - STARTER-WG110-101LEV04 |  | 0.5h | 2026-09-12 09:30 | 2026-09-12 10:00 | 56 | 12d | 0d |  | WGP-ETP [200%] | 1h | Day0 | 6860939 | 30 | W5E1 |
| 58 | 1.4.7 | PDMAIN34 - LV STARTER (POWERHOUSE) MAINTENANCE - STARTER-WG110-101LEV05 |  | 0.5h | 2026-09-12 10:00 | 2026-09-12 10:30 | 57 | 12d | 0.35d |  | WGP-ETP [200%] | 1h | Day0 | 6860941 | 30 | W5E1 |
| 59 | 1.5 | 80T Crane to assist with pre-work scaffold lifts |  | 48h | 2026-08-17 07:00 | 2026-08-21 15:00 | 71FS-28ed | 24.05d | 12.4d |  | WC-CRN80 | 48h | Day-26 | WO6899500 | 30 | WCG-GCS |
| 60 | 1.6 | Cleanaway to deliver 1x general waste & 1x Lagging bin |  | 1h | 2026-09-07 07:30 | 2026-09-07 08:30 | 71FS-7ed | 15.9d | 4.25d |  |  |  | Day-5 |  |  |  |
| 61 | 1.7 | Remove gridmesh to allow steam drum safety valve removal |  | 3h | 2026-08-20 15:30 | 2026-08-21 08:30 | 6 | 24.7d | 13.05d |  | WGP-MTP [200%] | 6h | Day-23 | WO6899500 | 40 | W5M1 |
| 62 | 1.8 | Remove RAH gridmesh to allow access for installation of anit-rotation device |  | 3h | 2026-09-02 10:30 | 2026-09-02 13:30 | 19 | 17.8d | 6.15d |  | WGP-MTP [200%] | 6h | Day-10 | WO6899500 | 50 | W5M1 |
| 63 | 1.9 | Pre-work Complete | milestone | 0h | 2026-09-14 11:00 | 2026-09-14 11:00 | 34, 47, 59, 60, 61, 62, 50, 58 | 11.65d |  |  |  |  | Day2 |  |  |  |

Notes:
- 36: Operation Description: SRG - Boiler 1 MOH lagging pre-work
- 37: Operation Description: SRG - Boiler 1 MOH lagging pre-work
- 38: Operation Description: SRG - Boiler 1 MOH lagging pre-work
- 39: Operation Description: SRG - Boiler 1 MOH lagging pre-work
- 40: Operation Description: SRG - Boiler 1 MOH lagging pre-work
- 41: Operation Description: SRG - Boiler 1 MOH lagging pre-work
- 42: Operation Description: SRG - Boiler 1 MOH lagging pre-work
- 43: Operation Description: SRG - Boiler 1 MOH lagging pre-work
- 44: Operation Description: SRG - Boiler 1 MOH lagging pre-work
- 45: Operation Description: SRG - Boiler 1 MOH lagging pre-work
- 46: Operation Description: SRG - Boiler 1 MOH lagging pre-work
- 49: Operation Description: Shutdown TA1 in preperation for Boiler 1 MOH
- 50: Operation Description: Raise TA1 HV permit
- 52: Operation Description: LV STARTER MAJOR MAINTENANCE
- 53: Operation Description: LV STARTER MAJOR MAINTENANCE
- 54: Operation Description: LV STARTER MAJOR MAINTENANCE
- 55: Operation Description: LV STARTER MAJOR MAINTENANCE
- 56: Operation Description: LV STARTER MAJOR MAINTENANCE
- 57: Operation Description: LV STARTER MAJOR MAINTENANCE
- 58: Operation Description: LV STARTER MAJOR MAINTENANCE
- 59: Operation Description: Conduct all pre-work scaffold lifts
- 61: Operation Description: Remove gridmesh to allow steam drum safety valve removal
- 62: Operation Description: Remove RAH gridmesh to allow access for installation of anit-rotation device

| ID | WBS | Task | Type | Duration | Start | Finish | Predecessors | Total slack | Free slack | Calendar | Resources | Work | Day | Work Order No. | Operation No. | Assigned Department |
| --- | --- | --- | --- | --- | --- | --- | --- | --- | --- | --- | --- | --- | --- | --- | --- | --- |
| 64 | 2 | **Boiler Offline** |  | 33.1d | 2026-09-13 19:00 | 2026-09-27 14:00 |  | 0.2d |  | 24 Hours |  | 2935h | Day4 |  |  |  |
| 65 | 2.1 | **Shutdown & Isolations** |  | 8d | 2026-09-13 19:00 | 2026-09-26 17:00 |  | 0d |  |  |  | 273h | Day4 |  |  |  |
| 66 | 2.1.1 | **ADMIN ONLY** |  | 8d | 2026-09-13 19:00 | 2026-09-26 17:00 |  | 4d |  |  |  | 132h | Day3 |  |  |  |
| 67 | 2.1.1.1 | ADMIN ONLY - PARTS OPERATION - BOILER 1 MAJOR OVERHAUL |  | 1h | 2026-09-13 19:00 | 2026-09-13 20:00 |  | 12d |  |  | WGP-DELAY | 1h | Day1 | 6477046 | 10 | W5M1 |
| 68 | 2.1.1.2 | ADMIN ONLY - FLOW ORIFICE ORDER OP |  | 1h | 2026-09-13 19:00 | 2026-09-13 20:00 |  | 12d |  |  | WGP-DELAY | 1h | Day1 | 6477046 | 500 | W5M1 |
| 69 | 2.1.1.3 | 100T crane for boiler 1 major overhaul |  | 130h | 2026-09-14 07:00 | 2026-09-26 17:00 |  | 4d |  |  | WC-CRN100 | 130h | Day2 | 6477046 | 1050 | WCG-GCS |
| 70 | 2.1.2 | **Shutdown Boiler** |  | 0.55d | 2026-09-13 19:00 | 2026-09-14 13:00 |  | 0d |  |  |  | 33h | Day4 |  |  |  |
| 71 | 2.1.2.1 | Shutdown Boiler |  | 1h | 2026-09-13 19:00 | 2026-09-13 20:00 |  | 0d |  |  | WGP-PROD | 1h | Day1 | 6477046 | 20 | W5P1 |
| 72 | 2.1.2.2 | Boiler Cooldown - Observe pressure drops and temps. Do not exceed 2° per min - AUACDS-21393 |  | 18h | 2026-09-13 19:00 | 2026-09-14 13:00 |  | 0d |  |  | WGP-PROD | 18h | Day1 | 6477046 | 20 | W5P1 |
| 73 | 2.1.2.3 | Run FD fan to assist with cooldown |  | 14h | 2026-09-13 19:00 | 2026-09-14 09:00 |  | 0d |  |  | WGP-PROD | 14h | Day1 | 6477046 | 20 | W5P1 |
| 74 | 2.1.3 | **Electrical Isolations** |  | 0.35d | 2026-09-13 20:00 | 2026-09-14 11:00 |  | 0.45d |  |  |  | 11h | Day4 |  |  |  |
| 75 | 2.1.3.1 | Confirm zero energy on the Main Steam Stop, Main Steam Stop Bypass, and HS Header Rotorks - Shift EI |  | 2h | 2026-09-13 20:00 | 2026-09-13 22:00 | 71 | 3.3d | 1.3d | 24 Hours | WGP-ETP | 2h | Day1 | 6477046 | 30 | W5E1 |
| 76 | 2.1.3.2 | Rack out FD fan |  | 1h | 2026-09-14 09:00 | 2026-09-14 10:00 | 73 | 0.3d | 0d |  | WGP-ETP [200%] | 2h | Day2 | WO6908099 | 10 | W5E1 |
| 77 | 2.1.3.3 | Isolate 415v MCC board |  | 2h | 2026-09-14 07:00 | 2026-09-14 09:00 | 71 | 0.55d | 0d |  | WGP-ETP [200%] | 4h | Day2 | 6477046 | 31 | W5E1 |
| 78 | 2.1.3.4 | Isolate oxygen analyser power supplies |  | 0.5h | 2026-09-14 09:00 | 2026-09-14 09:30 | 77 | 0.6d | 0d |  | WGP-ETP | 0.5h | Day2 | 6477046 | 32 | W5E1 |
| 79 | 2.1.3.5 | Isolate & disconnect Igniters for CSE |  | 1h | 2026-09-14 09:30 | 2026-09-14 10:30 | 78 | 0.5d | 0d |  | WGP-ETP [200%] | 2h | Day2 | 6477046 | 33 | W5E1 |
| 80 | 2.1.3.6 | Isolate attemperator power supply |  | 0.5h | 2026-09-14 10:30 | 2026-09-14 11:00 | 79 | 0.45d | 0d |  | WGP-ETP | 0.5h | Day2 | 6477046 | 34 | W5E1 |
| 81 | 2.1.3.7 | Electrical Isolations Complete | milestone | 0h | 2026-09-14 11:00 | 2026-09-14 11:00 | 75, 80, 77 | 0.45d |  |  |  |  | Day2 |  |  |  |
| 82 | 2.1.4 | **Gas Purge, Pressure Test & Isolation** |  | 0.65d | 2026-09-13 20:00 | 2026-09-14 14:00 |  | 0d |  |  |  | 21h | Day4 |  |  |  |
| 83 | 2.1.4.1 | Isolate & tag for gas purge & pressure test |  | 4h | 2026-09-13 20:00 | 2026-09-14 00:00 | 71 | 0d |  |  | WGP-PROD | 4h | Day1 | 6477046 | 40 | W5P1 |
| 84 | 2.1.4.2 | Connect nitrogen & set up for purge and pressure test |  | 1h | 2026-09-14 07:00 | 2026-09-14 08:00 | 83 | 0.25d | 0d |  | WGP-ETP | 1h | Day2 | 6477046 | 50 | W5E1 |
| 85 | 2.1.4.3 | Purge natural gas system - Thermal Systems |  | 1h | 2026-09-14 08:00 | 2026-09-14 09:00 | 84 | 0.3d | 0d |  | WC-MISC | 1h | Day2 | 6477046 | 60 | WCG-OTHER |
| 86 | 2.1.4.4 | Purge LPG gas system - Thermal Systems |  | 1h | 2026-09-14 09:00 | 2026-09-14 10:00 | 85 | 0.3d | 0d |  | WC-MISC | 1h | Day2 | 6477046 | 60 | WCG-OTHER |
| 87 | 2.1.4.5 | Conduct gas system pressure test - Thermal Systems |  | 2h | 2026-09-14 07:00 | 2026-09-14 09:00 | 83 | 0.35d | 0.1d |  | WC-MISC | 2h | Day2 | 6477046 | 60 | WCG-OTHER |
| 88 | 2.1.4.6 | Assist with purge and pressure test |  | 2h | 2026-09-14 08:00 | 2026-09-14 10:00 | 84 | 0.3d | 0d |  | WGP-ETP | 2h | Day2 | 6477046 | 50 | W5E1 |
| 89 | 2.1.4.7 | Amend gas system isolation & tag for blank swing |  | 1h | 2026-09-14 10:00 | 2026-09-14 11:00 | 86, 87, 88, 76 | 0.3d | 0d |  | WGP-PROD | 1h | Day2 | 6477046 | 41 | W5P1 |
| 90 | 2.1.4.8 | Swing Main and Pilot Gas System Blanks |  | 0.5h | 2026-09-14 11:00 | 2026-09-14 11:30 | 89 | 0.4d | 0d |  | WGP-MTP [200%] | 1h | Day2 | 6477046 | 70 | W5M1 |
| 91 | 2.1.4.9 | Disconnect LPG gas hoses |  | 1h | 2026-09-14 11:30 | 2026-09-14 12:30 | 90 | 0.3d | 0.15d |  | WGP-MTP [200%] | 2h | Day2 | 6477046 | 70 | W5M1 |
| 92 | 2.1.4.10 | Remove burner 1 gas spool and blank for CSE |  | 0.5h | 2026-09-14 11:00 | 2026-09-14 11:30 | 89 | 0.3d | 0d |  | WGP-MTP [200%] | 1h | Day2 | 6477046 | 70 | W5M1 |
| 93 | 2.1.4.11 | Remove burner 2 gas spool and blank for CSE |  | 0.5h | 2026-09-14 11:30 | 2026-09-14 12:00 | 92 | 0.3d | 0d |  | WGP-MTP [200%] | 1h | Day2 | 6477046 | 70 | W5M1 |
| 94 | 2.1.4.12 | Remove burner 3 gas spool and blank for CSE |  | 0.5h | 2026-09-14 12:00 | 2026-09-14 12:30 | 93 | 0.3d | 0d |  | WGP-MTP [200%] | 1h | Day2 | 6477046 | 70 | W5M1 |
| 95 | 2.1.4.13 | Remove burner 4 gas spool and blank for CSE |  | 0.5h | 2026-09-14 12:30 | 2026-09-14 13:00 | 94 | 0.25d | 0d |  | WGP-MTP [200%] | 1h | Day2 | 6477046 | 70 | W5M1 |
| 96 | 2.1.4.14 | Remove burner 5 gas spool and blank for CSE |  | 0.5h | 2026-09-14 13:00 | 2026-09-14 13:30 | 95 | 0.2d | 0d |  | WGP-MTP [200%] | 1h | Day2 | 6477046 | 70 | W5M1 |
| 97 | 2.1.4.15 | Remove burner 6 gas spool and blank for CSE |  | 0.5h | 2026-09-14 13:30 | 2026-09-14 14:00 | 96 | 0.15d | 0d |  | WGP-MTP [200%] | 1h | Day2 | 6477046 | 70 | W5M1 |
| 98 | 2.1.4.16 | Gas Purge, Pressure & Isolations Test Complete | milestone | 0h | 2026-09-14 14:00 | 2026-09-14 14:00 | 91, 97 | 0.15d | 0d |  |  |  | Day2 |  |  |  |

Notes:
- 67: Operation Description: PARTS OPERATION BOILER 1 MAJOR OVERHAUL
- 68: Operation Description: ADMIN ONLY - FLOW ORIFICE ORDER OP
- 69: Operation Description: 100T crane for boiler 1 major overhaul
- 71: Operation Description: Shutdown Boiler
- 72: Operation Description: Shutdown Boiler
- 73: Operation Description: Shutdown Boiler
- 75: just before production isolations / Operation Description: Confirm zero energy on the Main Steam Stop, Main Steam Stop Bypass, and HS Header Rotorks - Shift EI
- 76: Operation Description: RACK OUT FD FAN MOTOR
- 77: Operation Description: Isolate 415v MCC board
- 78: Operation Description: Isolate oxygen analyser power supplies
- 79: Operation Description: Isolate & disconnect Igniters for CSE
- 80: Operation Description: Isolate attemperator power supply
- 83: Operation Description: Isolate & tag for gas purge & pressure test
- 84: Operation Description: ASSIST WITH BOILER GAS PURGE
- 85: Operation Description: THERMAL SYSTEMS - CONDUCT BOILER GAS PURGE
- 86: Operation Description: THERMAL SYSTEMS - CONDUCT BOILER GAS PURGE
- 87: Operation Description: THERMAL SYSTEMS - CONDUCT BOILER GAS PURGE
- 88: Operation Description: ASSIST WITH BOILER GAS PURGE
- 89: Operation Description: Amend gas system isolation & tag for blank swing
- 90: Operation Description: SWING GAS BLANKS & REMOVE BURNER SPOOLS
- 91: Operation Description: SWING GAS BLANKS & REMOVE BURNER SPOOLS
- 92: Operation Description: SWING GAS BLANKS & REMOVE BURNER SPOOLS
- 93: Operation Description: SWING GAS BLANKS & REMOVE BURNER SPOOLS
- 94: Operation Description: SWING GAS BLANKS & REMOVE BURNER SPOOLS
- 95: Operation Description: SWING GAS BLANKS & REMOVE BURNER SPOOLS
- 96: Operation Description: SWING GAS BLANKS & REMOVE BURNER SPOOLS
- 97: Operation Description: SWING GAS BLANKS & REMOVE BURNER SPOOLS

| ID | WBS | Task | Type | Duration | Start | Finish | Predecessors | Total slack | Free slack | Calendar | Resources | Work | Day | Work Order No. | Operation No. | Operation Description | Assigned Department | Text12 |
| --- | --- | --- | --- | --- | --- | --- | --- | --- | --- | --- | --- | --- | --- | --- | --- | --- | --- | --- |
| 99 | 2.1.5 | **Boiler Isolations & Hydrostatic Leak Test** |  | 0.55d | 2026-09-14 10:00 | 2026-09-15 02:30 |  | 0.15d |  |  |  | 76h | Day2 |  |  |  |  |  |
| 100 | 2.1.5.1 | Isolate & tag boiler for hydro leak test |  | 2h | 2026-09-14 10:00 | 2026-09-14 12:00 | 83, 76 | 0.3d | 0d |  | WGP-PROD | 2h | Day2 | 6477046 | 80 | Isolate & tag boiler for hydro leak test | W5P1 |  |
| 101 | 2.1.5.2 | Open & barricade air path doors for hydro leak test |  | 2h | 2026-09-14 12:00 | 2026-09-14 14:00 | 73, 100 | 0.15d | 0d |  | WC-GENER [400%] | 8h | Day2 | 6477046 | 110 | SRG - OPEN DOORS FOR BOILER HYDRO LEAK TEST | WCG-OTHER |  |
| 102 | 2.1.5.3 | Open & barricade gas path doors for hydro leak test |  | 2h | 2026-09-14 12:00 | 2026-09-14 14:00 | 73, 100 | 0.15d | 0d |  | WC-GENER [400%] | 8h | Day2 | 6477046 | 110 | SRG - OPEN DOORS FOR BOILER HYDRO LEAK TEST | WCG-OTHER |  |
| 103 | 2.1.5.4 | Open & barricade remaining air & gas path doors |  | 4h | 2026-09-14 14:00 | 2026-09-14 18:00 | 101, 102 | 0d |  |  | WC-GENER [400%] | 16h | Day2 | 6477046 | 120 | SRG - OPEN BOILER DOORS | WCG-OTHER |  |
| 104 | 2.1.5.5 | Civmec Remove door refractory wickets |  | 2h | 2026-09-14 12:00 | 2026-09-14 14:00 | 73, 100 | 0.15d |  |  | WC-MISC [400%] | 8h | Day2 | 6477046 | 91 | Civmec Remove door refractory wickets | WCG-OTHER |  |
| 105 | 2.1.5.6 | Insert FD fan rotation prevention tube |  | 1h | 2026-09-14 12:00 | 2026-09-14 13:00 | 73, 100 | 0.25d | 0.1d |  | WGP-PROD | 1h | Day2 | 6477046 | 81 | Insert FD fan rotation prevention tube | W5P1 |  |
| 106 | 2.1.5.7 | Complete isolation & raise CSE for boiler hydro leak test |  | 1h | 2026-09-14 14:00 | 2026-09-14 15:00 | 101, 102, 105, 72, 98 | 0.05d | 0d |  | WGP-PROD [200%] | 2h | Day2 | 6477046 | 82 | Complete isolation & raise CSE for boiler hydro leak test | W5P1 |  |
| 107 | 2.1.5.8 | Conduct boiler hydro leak test |  | 2h | 2026-09-14 15:00 | 2026-09-14 17:00 | 106 | 0d |  |  | WGP-PROD | 2h | Day2 | 6477046 | 100 | CONDUCT BOILER HYDRO LEAK TEST | W5P1 |  |
| 108 | 2.1.5.9 | Engineer to witness the hydro leak test |  | 2h | 2026-09-14 15:00 | 2026-09-14 17:00 | 106 | 1d | 0d | 24 Hours | WGP-ENG | 2h | Day2 | 6477046 | 700 | ENGINEERING INSPECTIONS | W5M1 |  |
| 109 | 2.1.5.10 | Sentry to assist with boiler hydro leak test inspection |  | 2h | 2026-09-14 15:00 | 2026-09-14 17:00 | 106 | 0d |  |  | WGP-PROD | 2h | Day2 | 6477046 | 100 | CONDUCT BOILER HYDRO LEAK TEST | W5P1 |  |
| 110 | 2.1.5.11 | Drain boiler after hydro leak test and isolate |  | 4h | 2026-09-14 17:00 | 2026-09-14 21:00 | 108, 107, 109 | 0d |  |  | WGP-PROD | 4h | Day2 | 6477046 | 100 | CONDUCT BOILER HYDRO LEAK TEST | W5P1 |  |
| 111 | 2.1.5.12 | Conduct attemperator leak test | inactive | 2h | 2026-09-14 21:00 | 2026-09-14 23:00 | 110 | 0d |  |  | WGP-PROD | 2h | Day2 | 6477046 |  |  |  |  |
| 112 | 2.1.5.13 | Amend air & gas path CSE after hydro leak test |  | 2h | 2026-09-14 21:00 | 2026-09-14 23:00 | 111, 103, 104, 81 | 0d |  |  | WGP-PROD [200%] | 4h | Day2 | 6477046 | 83 | Amend air & gas path CSE after hydro leak test | W5P1 |  |
| 113 | 2.1.5.14 | Isolate & tag to open water side doors |  | 0.5h | 2026-09-14 21:00 | 2026-09-14 21:30 | 111 | 0d |  |  | WGP-PROD [200%] | 1h | Day2 | 6477046 | 84 | Isolate & tag to open water side doors | W5P1 |  |
| 114 | 2.1.5.15 | Open & barricade steam drum doors |  | 1h | 2026-09-14 21:30 | 2026-09-14 22:30 | 113 | 0d |  |  | WC-GENER [400%] | 4h | Day2 | 6477046 | 120 | SRG - OPEN BOILER DOORS | WCG-OTHER |  |
| 115 | 2.1.5.16 | Open & barricade flash tank door |  | 1h | 2026-09-14 22:30 | 2026-09-14 23:30 | 114 | 0d |  |  | WC-GENER [400%] | 4h | Day2 | 6477046 | 120 | SRG - OPEN BOILER DOORS | WCG-OTHER |  |
| 116 | 2.1.5.17 | Open & barricade IBO door |  | 1h | 2026-09-14 23:30 | 2026-09-15 00:30 | 115 | 0d |  |  | WC-GENER [400%] | 4h | Day2 | 6477046 | 120 | SRG - OPEN BOILER DOORS | WCG-OTHER |  |
| 117 | 2.1.5.18 | Raise CSE's for statutory inspections |  | 2h | 2026-09-15 00:30 | 2026-09-15 02:30 | 116 | 0d |  |  | WGP-PROD [200%] | 4h | Day3 | 6477046 | 85 | Raise CSE's for statutory inspections | W5P1 |  |
| 118 | 2.1.5.19 | Boiler Isolations & Leak Test Complete | milestone | 0h | 2026-09-15 02:30 | 2026-09-15 02:30 | 117, 112 | 0.15d | 0d |  |  |  | Day3 |  |  |  |  |  |
| 119 | 2.2 | **Maintenance** |  | 6.4d | 2026-09-13 20:00 | 2026-09-23 19:00 |  | 0d |  |  |  | 2536h | Day2 |  |  |  |  |  |
| 120 | 2.2.1 | **Feedwater System (1)** |  | 5.05d | 2026-09-13 20:00 | 2026-09-22 10:00 |  | 0d |  |  |  | 104.5h | Day2 |  |  |  |  |  |
| 121 | 2.2.1.1 | Perform fused alumina blasting of all exposed welds – as per scope 1.2, 1.3, and 1.4 |  | 3h | 2026-09-13 20:00 | 2026-09-13 23:00 | 71 | 0d |  |  | WC-SNDBST [200%] | 6h | Day1 | 6477046 | 1020 | SRG - BOILER 1 MOH SANDBLASTING SCOPE | WCG-OTHER | L |
| 122 | 2.2.1.2 | Perform NDT of feedwater system – as per scope 1.2, 1.3, and 1.4 |  | 8h | 2026-09-14 07:00 | 2026-09-14 15:00 | 121 | 5.05d | 0d |  | WC-NDT [200%] | 16h | Day2 | 6477046 | 1040 | BOILER 1 MAJOR OVERHAUL NDT & METALLURGY SCOPE | WCT-ALS |  |
| 123 | 2.2.1.3 | Inspect and record cold position of feedwater system hangers |  | 1.5h | 2026-09-14 15:00 | 2026-09-14 16:30 | 122 | 5.05d | 4.25d |  | WGP-ENG | 1.5h | Day2 | 6477046 | 700 | ENGINEERING INSPECTIONS | W5M1 |  |

| ID | WBS | Task | Type | Duration | Start | Finish | Predecessors | Total slack | Free slack | Resources | Work | Day | Work Order No. | Operation No. | Assigned Department | Text12 |
| --- | --- | --- | --- | --- | --- | --- | --- | --- | --- | --- | --- | --- | --- | --- | --- | --- |
| 124 | 2.2.1.4 | **Feedwater Control Valves** |  | 2.8d | 2026-09-15 08:00 | 2026-09-18 12:00 |  | 0.3d |  |  | 68h | Day2 |  |  |  |  |
| 125 | 2.2.1.4.1 | Disconnect 2x feedwater fisher control valves |  | 2h | 2026-09-15 08:00 | 2026-09-15 10:00 | 426 | 0.3d | 0d | WGP-ETP [200%] | 4h | Day3 | 6477046 | 130 | W5E1 |  |
| 126 | 2.2.1.4.2 | Strip & overhaul 2x feedwater fisher control valves |  | 30h | 2026-09-15 10:00 | 2026-09-18 10:00 | 125 | 2.3d | 0d | WC-MISC [200%] | 60h | Day3 | 6477046 | 140 | WCG-OTHER |  |
| 127 | 2.2.1.4.3 | Reconnect 2x feedwater fisher control valves |  | 2h | 2026-09-18 10:00 | 2026-09-18 12:00 | 126 | 2.3d | 1.4d | WGP-ETP [200%] | 4h | Day6 | 6477046 | 130 | W5E1 |  |
| 128 | 2.2.1.5 | **Adhoc Maintenance** |  | 4d | 2026-09-15 10:00 | 2026-09-22 10:00 |  | 0.9d |  |  | 13h | Day3 |  |  |  |  |
| 129 | 2.2.1.5.1 | **WESTARC - Replace passing LEV04 drain valve** |  | 4d | 2026-09-15 10:00 | 2026-09-22 10:00 |  | 0.9d |  |  | 13h | Day3 |  |  |  |  |
| 130 | 2.2.1.5.1.1 | Tag for replacement of passing LEV04 drain valve |  | 1h | 2026-09-15 10:00 | 2026-09-15 11:00 | 125 | 0.9d | 0d | WGP-PROD | 1h | Day3 | WO5829395 | 10 | W5P1 |  |
| 131 | 2.2.1.5.1.2 | WESTARC - Replace passing LEV04 drain valve |  | 4h | 2026-09-15 11:00 | 2026-09-15 15:00 | 130 | 0.85d | 0d | WC-MISC [200%] | 8h | Day3 | WO5829395 | 20 | WCG-OTHER |  |
| 132 | 2.2.1.5.1.3 | NDT/MPI after replacement of LEV04 drain valve |  | 2h | 2026-09-22 08:00 | 2026-09-22 10:00 | 131 | 0.9d | 0d | WC-NDT [200%] | 4h | Day10 | WO5829395 | 30 | WCT-ALS |  |
| 133 | 2.2.1.6 | Feewater Control Valve Maintenance Complete | milestone | 0h | 2026-09-22 10:00 | 2026-09-22 10:00 | 127, 123, 132 | 0.9d |  |  |  | Day10 |  |  |  |  |
| 134 | 2.2.2 | **Steam Drum (2)** |  | 5.45d | 2026-09-15 02:30 | 2026-09-23 14:00 |  | 0.15d |  |  | 143h | Day2 |  |  |  |  |
| 135 | 2.2.2.1 | **Steam Drum Internal 2.2** |  | 5.05d | 2026-09-15 02:30 | 2026-09-23 10:00 |  | 0.15d |  |  | 51h | Day2 |  |  |  |  |
| 136 | 2.2.2.1.1 | LPW steam drum pending visual inspection |  | 8h | 2026-09-15 02:30 | 2026-09-15 11:00 | 118 | 0.15d | 0d | WC-OPER [200%]; WC-LPW | 12h | Day3 | 6477046 | 1060 | WCG-VEOLIA |  |
| 137 | 2.2.2.1.2 | Remove approximately 100–200 L of remaining water from drum (both ends) |  | 4h | 2026-09-15 11:00 | 2026-09-15 15:00 | 136 | 0.05d | 0d | WC-OPER [200%]; WC-VACTRK | 12h | Day3 | 6477046 | 1060 | WCG-VEOLIA |  |
| 138 | 2.2.2.1.3 | Power wire brush all accessible internal welds selected for NDT (Steam Drum) - as per scope 2.2 |  | 6h | 2026-09-15 15:00 | 2026-09-15 21:00 | 137 | 0.05d | 0d | WC-GENER [200%] | 12h | Day3 | 6477046 | 1000 | WCG-OTHER |  |
| 139 | 2.2.2.1.4 | Perform NDT of steam drum internals – as per scope 2.2 |  | 4h | 2026-09-22 08:00 | 2026-09-22 12:00 | 138 | 0.2d | 0d | WC-NDT [200%] | 8h | Day10 | 6477046 | 1040 | WCT-ALS |  |
| 140 | 2.2.2.1.5 | Conduct internal visual inspection of steam drum – as per scope 2.2 |  | 3h | 2026-09-22 12:00 | 2026-09-22 15:00 | 139 | 0.05d | 0d | WGP-ENG | 3h | Day10 | 6477046 | 700 | W5M1 |  |
| 141 | 2.2.2.1.6 | Close steam drum doors #12 (South) and #13 (North) and replace door gaskets |  | 2h | 2026-09-23 08:00 | 2026-09-23 10:00 | 140 | 0.55d | 0.4d | WGP-MTP [200%] | 4h | Day11 | 6477046 | 150 | W5M1 |  |
| 142 | 2.2.2.2 | **Steam Drum External 2.3** |  | 4.45d | 2026-09-15 16:00 | 2026-09-23 12:00 |  | 0d |  |  | 77h | Day2 |  |  |  |  |
| 143 | 2.2.2.2.1 | Strip lagging from steam drum for external inspection – as per scope 2.3 |  | 24h | 2026-09-15 16:00 | 2026-09-16 16:00 | 325 | 0d |  | WC-GENER [200%] | 48h | Day3 | 6477046 | 1030 | WCG-OTHER | L1 |
| 144 | 2.2.2.2.2 | Perform dry fused alumina blasting of all exposed welds (Steam Drum) |  | 4h | 2026-09-18 23:00 | 2026-09-19 03:00 | 143, 173 | 0d |  | WC-SNDBST [200%] | 8h | Day6 | 6477046 | 1020 | WCG-SRG | L |
| 145 | 2.2.2.2.3 | Vacuum blasting debris (Steam Drum) |  | 4h | 2026-09-19 03:00 | 2026-09-19 09:00 | 144 | 0d |  | WC-VACTRK; WC-OPER [200%] | 6h | Day7 | 6477046 | 1060 | WCG-VEOLIA |  |
| 146 | 2.2.2.2.4 | Perform NDT of steam drum externals – as per scope 2.3 |  | 6h | 2026-09-22 12:00 | 2026-09-23 09:00 | 145 | 0.3d | 0d | WC-NDT [200%] | 12h | Day10 | 6477046 | 1040 | WCT-ALS |  |
| 147 | 2.2.2.2.5 | Conduct external visual inspection of steam drum – as per scope 2.3 |  | 3h | 2026-09-23 09:00 | 2026-09-23 12:00 | 146, 149 | 0.3d | 0d | WGP-ENG | 3h | Day11 | 6477046 | 700 | W5M1 |  |

Notes:
- 125: Operation Description: DISCONNECT/RECONNECT FEEDWATER FISHER CONTROL VALVES
- 126: Operation Description: WPC - Strip & overhaul 2x feedwater fisher control valves
- 127: Operation Description: DISCONNECT/RECONNECT FEEDWATER FISHER CONTROL VALVES
- 130: Operation Description: TAGOUT FOR CHANGEOUT BOILER 1 FEED WATER SYSTEM LEV04 DRAIN VALVE - CONSTANTLY PASSING
- 131: Operation Description: WESTARC - CHANGEOUT BOILER 1 FEED WATER SYSTEM LEV04 DRAIN VALVE - CONSTANTLY PASSING
- 132: Operation Description: MPI/NDT OF PIPING AFTER VALVE INSTALL ON BOILER 1 FEED DRAIN LINE
- 136: Operation Description: VEOLIA - BOILER 1 MOH SCOPE
- 137: Operation Description: VEOLIA - BOILER 1 MOH SCOPE
- 138: Operation Description: SRG MECH - BOILER 1 MECHNICAL SCOPE
- 139: Operation Description: BOILER 1 MAJOR OVERHAUL NDT & METALLURGY SCOPE
- 140: Operation Description: ENGINEERING INSPECTIONS
- 141: Operation Description: Close steam drum doors #12 (South) and #13 (North) and replace door gaskets
- 143: Operation Description: SRG - BOILER 1 MAJOR OVERHAUL LAGGING SCOPE
- 144: Operation Description: SRG - BOILER 1 MOH SANDBLASTING SCOPE
- 145: Operation Description: VEOLIA - BOILER 1 MOH SCOPE
- 146: Operation Description: BOILER 1 MAJOR OVERHAUL NDT & METALLURGY SCOPE
- 147: Operation Description: ENGINEERING INSPECTIONS

| ID | WBS | Task | Type | Duration | Start | Finish | Predecessors | Total slack | Free slack | Resources | Work | Day | Work Order No. | Operation No. | Assigned Department | Text12 |
| --- | --- | --- | --- | --- | --- | --- | --- | --- | --- | --- | --- | --- | --- | --- | --- | --- |
| 148 | 2.2.2.3 | **Steam Drum Safety Valves** |  | 5.05d | 2026-09-15 07:00 | 2026-09-23 10:00 |  | 0.55d |  |  | 13h | Day3 |  |  |  |  |
| 149 | 2.2.2.3.1 | Changeout steam drum west safety valves with certified spares |  | 2h | 2026-09-15 07:00 | 2026-09-15 09:00 | 118 | 1.05d | 0d | WGP-MTP [200%] | 4h | Day3 | 6819789 | 10 | W5M1 |  |
| 150 | 2.2.2.3.2 | Changeout steam drum east safety valves with certified spares |  | 2h | 2026-09-23 08:00 | 2026-09-23 10:00 | 118 | 0.55d | 0d | WGP-MTP [200%] | 4h | Day11 | 6819790 | 10 | W5M1 |  |
| 151 | 2.2.2.3.3 | Crane required to assist with safety valve removal |  | 5h | 2026-09-15 07:00 | 2026-09-15 12:00 | 118 | 5.15d | 4.6d | WC-CRN100 | 5h | Day3 |  |  |  |  |
| 152 | 2.2.2.3.4 | Steam Drum Safety Valve Maintenace Complete | milestone | 0h | 2026-09-23 10:00 | 2026-09-23 10:00 | 149, 151, 150 | 0.55d | 0.4d |  |  | Day11 |  |  |  |  |
| 153 | 2.2.2.4 | Inspect steam drum magnatrol |  | 1h | 2026-09-23 12:00 | 2026-09-23 13:00 | 147 | 0.25d | 0d | WGP-ETP | 1h | Day11 | 6477046 | 160 | W5E1 |  |
| 154 | 2.2.2.5 | Inspect steam drum aquarian |  | 1h | 2026-09-23 13:00 | 2026-09-23 14:00 | 153 | 0.15d | 0d | WGP-ETP | 1h | Day11 | 6477046 | 160 | W5E1 |  |
| 155 | 2.2.2.6 | Steam Drum Complete | milestone | 0h | 2026-09-23 14:00 | 2026-09-23 14:00 | 147, 141, 152, 154 | 0.15d | 0d |  |  | Day11 |  |  |  |  |
| 156 | 2.2.3 | **Attemperator (3)** |  | 3.85d | 2026-09-15 14:00 | 2026-09-22 12:30 |  | 0.65d |  |  | 269h | Day2 |  |  |  |  |
| 157 | 2.2.3.1 | Strip lagging from attemperator door #19 |  | 4h | 2026-09-16 13:00 | 2026-09-16 17:00 | 278 | 0d |  | WC-GENER [200%] | 8h | Day4 | 6477046 | 1030 | WCG-OTHER | L2 |
| 158 | 2.2.3.2 | **Attemperator Internal - (3.2)** |  | 2.05d | 2026-09-16 17:00 | 2026-09-21 12:00 |  | 1.1d |  |  | 61.5h | Day2 |  |  |  |  |
| 159 | 2.2.3.2.1 | Open attemperator vessel door #19 |  | 2h | 2026-09-17 07:00 | 2026-09-17 09:00 | 157 | 1.45d | 0d | WGP-MTP [200%] | 4h | Day5 | 6477046 | 170 | W5M1 |  |
| 160 | 2.2.3.2.2 | Raise CSE - Attemperator door #19 |  | 1h | 2026-09-17 09:00 | 2026-09-17 10:00 | 159 | 1.35d | 0.1d | WGP-PROD [200%] | 2h | Day5 | 6477046 | 180 | W5P1 |  |
| 161 | 2.2.3.2.3 | Remove insulation from attemperator inspection nozzles I5 and I6, fully exposing end caps |  | 4h | 2026-09-16 17:00 | 2026-09-16 21:00 | 157 | 1.6d | 0d | WC-GENER [200%] | 8h | Day4 | 6477046 | 1030 | WCG-OTHER |  |
| 162 | 2.2.3.2.4 | Cut inspection caps from attemperator inspection ports I5 (North) and I6 (South) in preparation for borescope inspection - WESTARC |  | 4h | 2026-09-17 07:00 | 2026-09-17 11:00 | 161 | 1.25d | 0d | WC-MISC [200%] | 8h | Day5 | 6477046 | 1070 | WCG-OTHER |  |
| 163 | 2.2.3.2.5 | Power wire buff of attemperator steam inlet and outlet piping welds to nozzles |  | 4h | 2026-09-17 11:00 | 2026-09-17 15:00 | 160, 162 | 0.85d | 0d | WC-GENER [200%] | 8h | Day5 | 6477046 | 1000 | WCG-OTHER |  |
| 164 | 2.2.3.2.6 | Perform NDT of steam inlet and outlet piping nozzle welds – as per scope 3.2 |  | 4h | 2026-09-18 13:30 | 2026-09-19 08:30 | 163 | 0.3d | 0d | WC-NDT [200%] | 8h | Day6 | 6477046 | 1040 | WCT-ALS |  |
| 165 | 2.2.3.2.7 | Conduct internal visual inspection via door #16 – as per scope 3.2 |  | 1.5h | 2026-09-19 08:30 | 2026-09-19 10:00 | 164 | 0.5d | 0d | WGP-ENG | 1.5h | Day7 | 6477046 | 700 | W5M1 |  |
| 166 | 2.2.3.2.8 | Install new attemperator inspection caps at nozzles I5 and I6 following inspection - WESTARC |  | 6h | 2026-09-19 10:00 | 2026-09-19 16:00 | 165 | 0.65d | 0d | WC-MISC [200%] | 12h | Day7 | 6477046 | 1070 | WCG-OTHER |  |
| 167 | 2.2.3.2.9 | Perform NDT of inspection nozzle I5 and I6 welds after reinstatement – as per scope 3.2 |  | 2h | 2026-09-21 07:00 | 2026-09-21 09:00 | 166 | 1.05d | 0d | WC-NDT [200%] | 4h | Day9 | 6477046 | 1040 | WCT-ALS |  |
| 168 | 2.2.3.2.10 | Remove CSE - Attemperator door #19 |  | 1h | 2026-09-21 09:00 | 2026-09-21 10:00 | 167 | 1.1d | 0d | WGP-PROD [200%] | 2h | Day9 | 6477046 | 180 | W5P1 |  |
| 169 | 2.2.3.2.11 | Close attemperator vessel door #19 |  | 2h | 2026-09-21 10:00 | 2026-09-21 12:00 | 168 | 1.1d | 0d | WGP-MTP [200%] | 4h | Day9 | 6477046 | 190 | W5M1 |  |
| 170 | 2.2.3.2.12 | Attemperator Internal Complete | milestone | 0h | 2026-09-21 12:00 | 2026-09-21 12:00 | 169 | 1.1d | 0.35d |  |  | Day9 |  |  |  |  |
| 171 | 2.2.3.3 | **Attemperator External - (3.3)** |  | 2.4d | 2026-09-16 17:00 | 2026-09-21 16:30 |  | 0.75d |  |  | 79.5h | Day2 |  |  |  |  |
| 172 | 2.2.3.3.1 | Remove insulation to expose welds for NDT – as per scope 3.3 (Attemperator) |  | 20h | 2026-09-16 17:00 | 2026-09-17 13:00 | 157 | 0.8d | 0.25d | WC-GENER [200%] | 40h | Day4 | 6477046 | 1030 | WCG-OTHER |  |
| 173 | 2.2.3.3.2 | Perform dry fused alumina blasting of all exposed welds – as per scope 3.3 (attemperator) |  | 5h | 2026-09-18 18:00 | 2026-09-18 23:00 | 172, 228 | 0d |  | WC-SNDBST [200%] | 10h | Day6 | 6477046 | 1020 | WCG-SRG | L |
| 174 | 2.2.3.3.3 | Vacuum blasting debris (Attemperator) |  | 8h | 2026-09-18 23:00 | 2026-09-19 11:00 | 173 | 0d |  | WC-VACTRK; WC-OPER [200%] | 12h | Day6 | 6477046 | 1060 | WCG-VEOLIA |  |
| 175 | 2.2.3.3.4 | Perform NDT of attemperator externals – as per scope 3.3 |  | 8h | 2026-09-21 07:00 | 2026-09-21 15:00 | 174 | 0.65d | 0d | WC-NDT [200%] | 16h | Day9 | 6477046 | 1040 | WCT-ALS |  |
| 176 | 2.2.3.3.5 | Conduct external visual inspection of attemperator – as per scope 3.3 |  | 1.5h | 2026-09-21 15:00 | 2026-09-21 16:30 | 175 | 0.65d | 0d | WGP-ENG | 1.5h | Day9 | 6477046 | 700 | W5M1 |  |
| 177 | 2.2.3.3.6 | Attemperator External Complete | milestone | 0h | 2026-09-21 16:30 | 2026-09-21 16:30 | 176 | 0.75d | 0d |  |  | Day9 |  |  |  |  |

Notes:
- 149: Operation Description: Changeout steam drum west safety valves with certified spares
- 150: Operation Description: Changeout steam drum east safety valves with certified spares
- 153: Operation Description: Inspect steam drum magnatrol & aquarian
- 154: Operation Description: Inspect steam drum magnatrol & aquarian
- 157: Operation Description: SRG - BOILER 1 MAJOR OVERHAUL LAGGING SCOPE
- 159: Operation Description: Open attemperator vessel door #19
- 160: Operation Description: CSE - Attemperator door #19
- 161: Operation Description: SRG - BOILER 1 MAJOR OVERHAUL LAGGING SCOPE
- 162: Operation Description: WESTARC - BOILER 1 MOH SCOPE
- 163: Operation Description: SRG MECH - BOILER 1 MECHNICAL SCOPE
- 164: Operation Description: BOILER 1 MAJOR OVERHAUL NDT & METALLURGY SCOPE
- 165: Operation Description: ENGINEERING INSPECTIONS
- 166: Operation Description: WESTARC - BOILER 1 MOH SCOPE
- 167: Operation Description: BOILER 1 MAJOR OVERHAUL NDT & METALLURGY SCOPE
- 168: Operation Description: CSE - Attemperator door #19
- 169: Operation Description: Close attemperator vessel door #19
- 172: Operation Description: SRG - BOILER 1 MAJOR OVERHAUL LAGGING SCOPE
- 173: Operation Description: SRG - BOILER 1 MOH SANDBLASTING SCOPE
- 174: Operation Description: VEOLIA - BOILER 1 MOH SCOPE
- 175: Operation Description: BOILER 1 MAJOR OVERHAUL NDT & METALLURGY SCOPE
- 176: Operation Description: ENGINEERING INSPECTIONS

| ID | WBS | Task | Type | Duration | Start | Finish | Predecessors | Total slack | Free slack | Resources | Work | Day | Work Order No. | Operation No. | Operation Description | Assigned Department | Text12 |
| --- | --- | --- | --- | --- | --- | --- | --- | --- | --- | --- | --- | --- | --- | --- | --- | --- | --- |
| 178 | 2.2.3.4 | **Attemperator Control Valves** |  | 3.5d | 2026-09-15 14:00 | 2026-09-22 09:00 |  | 1d |  |  | 80h | Day2 |  |  |  |  |  |
| 179 | 2.2.3.4.1 | Remove attemperator control valves and take to workshop for overhaul |  | 6h | 2026-09-15 14:00 | 2026-09-16 10:00 | 256 | 1.4d | 0d | WGP-MTP [200%] | 12h | Day3 | 6477046 | 200 | OVERHAUL ATTEMPERATOR CONTROL VALVE | W5M1 |  |
| 180 | 2.2.3.4.2 | Crane required to remove attemperator control valves |  | 4h | 2026-09-16 10:00 | 2026-09-16 14:00 | 179 | 1.4d | 0d | WC-CRN100 | 4h | Day4 |  |  |  |  |  |
| 181 | 2.2.3.4.3 | Overhaul attemperator control valves & replace linkages |  | 20h | 2026-09-17 09:00 | 2026-09-19 09:00 | 180 | 0d |  | WGP-MTP [200%] | 40h | Day5 | 6477046 | 200 | OVERHAUL ATTEMPERATOR CONTROL VALVE | W5M1 |  |
| 182 | 2.2.3.4.4 | Refit attemperator control valves after overhaul |  | 10h | 2026-09-20 15:00 | 2026-09-21 15:00 | 181 | 0.8d | 0d | WGP-MTP [200%] | 20h | Day8 | 6477046 | 200 | OVERHAUL ATTEMPERATOR CONTROL VALVE | W5M1 |  |
| 183 | 2.2.3.4.5 | Crane required to install attemperator control valves |  | 4h | 2026-09-21 15:00 | 2026-09-22 09:00 | 182 | 0.85d | 0d | WC-CRN100 | 4h | Day9 |  |  |  |  |  |
| 184 | 2.2.3.4.6 | Attemperator Control Valve Maintenance Complete | milestone | 0h | 2026-09-22 09:00 | 2026-09-22 09:00 | 183 | 1d | 0.35d |  |  | Day10 |  |  |  |  |  |
| 185 | 2.2.3.5 | Reinstate all attemperator lagging |  | 20h | 2026-09-21 16:30 | 2026-09-22 12:30 | 170, 177, 517 | 0.65d | 0d | WC-GENER [200%] | 40h | Day9 | 6477046 | 1030 | SRG - BOILER 1 MAJOR OVERHAUL LAGGING SCOPE | WCG-OTHER | RL |
| 186 | 2.2.3.6 | Attemperator Maintenance Complete | milestone | 0h | 2026-09-22 12:30 | 2026-09-22 12:30 | 185, 184 | 0.65d |  |  |  | Day10 |  |  |  |  |  |
| 187 | 2.2.4 | **Penthouse (4)** |  | 4.41d | 2026-09-15 02:30 | 2026-09-22 11:36 |  | 0.74d |  |  | 64h | Day2 |  |  |  |  |  |
| 188 | 2.2.4.1 | **Secondary Superheater Inlet Header (4.2)** |  | 1.6d | 2026-09-15 02:30 | 2026-09-16 16:36 |  | 0.8d |  |  | 37.6h | Day2 |  |  |  |  |  |
| 189 | 2.2.4.1.1 | Erect access scaffold inside door #11 |  | 4h | 2026-09-15 02:30 | 2026-09-15 06:30 | 345, 118 | 0.8d | 0d | WC-GENER [200%] | 8h | Day3 | 6477046 | 1010 | SRG - BOILER 1 MOH OFFLINE SCAFFOLD SCOPE | WCG-OTHER |  |
| 190 | 2.2.4.1.2 | Perform dry fused alumina blasting of tube to header welds and structural header support welds - As per scope 4.2 (SSIH) |  | 4h | 2026-09-15 23:00 | 2026-09-16 03:00 | 189, 442 | 0d |  | WC-SNDBST [200%] | 8h | Day3 | 6477046 | 1020 | SRG - BOILER 1 MOH SANDBLASTING SCOPE | WCG-SRG | M |
| 191 | 2.2.4.1.3 | Vacuum blasting debris (SSIH) |  | 8h | 2026-09-16 03:00 | 2026-09-16 11:00 | 190 | 0.74d | 0d | WC-VACTRK; WC-OPER [200%] | 12h | Day4 | 6477046 | 1060 | VEOLIA - BOILER 1 MOH SCOPE | WCG-VEOLIA |  |
| 192 | 2.2.4.1.4 | Perform NDT of secondary superheater inlet header - as per scope 4.2 |  | 4h | 2026-09-16 11:00 | 2026-09-16 15:00 | 191 | 0.74d | 0d | WC-NDT [200%] | 8h | Day4 | 6477046 | 1040 | BOILER 1 MAJOR OVERHAUL NDT & METALLURGY SCOPE | WCT-ALS |  |
| 193 | 2.2.4.1.5 | Conduct visual inspection of secondary superheater inlet header |  | 1.6h | 2026-09-16 15:00 | 2026-09-16 16:36 | 192 | 3d | 0d | WGP-ENG | 1.6h | Day4 | 6477046 | 700 | ENGINEERING INSPECTIONS | W5M1 |  |
| 194 | 2.2.4.1.6 | Secondary Superheater Inlet Header Complete | milestone | 0h | 2026-09-16 16:36 | 2026-09-16 16:36 | 193 | 3.55d | 2.81d |  |  | Day4 |  |  |  |  |  |
| 195 | 2.2.4.2 | **Economiser Riser Headers (4.3)** |  | 0.07d | 2026-09-16 16:36 | 2026-09-17 08:12 |  | 3.11d |  |  | 1.6h | Day2 |  |  |  |  |  |
| 196 | 2.2.4.2.1 | Conduct visual inspection of economiser riser headers |  | 1.6h | 2026-09-16 16:36 | 2026-09-17 08:12 | 193 | 3.11d | 0d | WGP-ENG | 1.6h | Day4 | 6477046 | 700 | ENGINEERING INSPECTIONS | W5M1 |  |
| 197 | 2.2.4.2.2 | Economiser Riser Headers Complete | milestone | 0h | 2026-09-17 08:12 | 2026-09-17 08:12 | 196 | 3.48d | 2.74d |  |  | Day5 |  |  |  |  |  |
| 198 | 2.2.4.3 | **Upper Waterwall Header (4.4)** |  | 0.16d | 2026-09-17 08:12 | 2026-09-17 09:48 |  | 3.13d |  |  | 1.6h | Day2 |  |  |  |  |  |
| 199 | 2.2.4.3.1 | Conduct visual inspection of upper waterwall header - as per scope 4.4 |  | 1.6h | 2026-09-17 08:12 | 2026-09-17 09:48 | 196 | 3d | 0d | WGP-ENG | 1.6h | Day5 | 6477046 | 700 | ENGINEERING INSPECTIONS | W5M1 |  |
| 200 | 2.2.4.3.2 | Upper Waterwall Header Complete | milestone | 0h | 2026-09-17 09:48 | 2026-09-17 09:48 | 199 | 3.32d | 2.58d |  |  | Day5 |  |  |  |  |  |
| 201 | 2.2.4.4 | **Saturated Steam Tubes (4.5)** |  | 0.16d | 2026-09-17 09:48 | 2026-09-17 11:24 |  | 3d |  |  | 1.6h | Day2 |  |  |  |  |  |
| 202 | 2.2.4.4.1 | Conduct visual inspection of saturated steam tubes - as per scope 4.5 |  | 1.6h | 2026-09-17 09:48 | 2026-09-17 11:24 | 199 | 3d | 0d | WGP-ENG | 1.6h | Day5 | 6477046 | 700 | ENGINEERING INSPECTIONS | W5M1 |  |
| 203 | 2.2.4.4.2 | Saturated Steam Tubes Complete | milestone | 0h | 2026-09-17 11:24 | 2026-09-17 11:24 | 202 | 3.16d | 2.42d |  |  | Day5 |  |  |  |  |  |

| ID | WBS | Task | Type | Duration | Start | Finish | Predecessors | Total slack | Free slack | Resources | Work | Day | Work Order No. | Operation No. | Text12 | Assigned Department |
| --- | --- | --- | --- | --- | --- | --- | --- | --- | --- | --- | --- | --- | --- | --- | --- | --- |
| 204 | 2.2.4.5 | **Drum and Drum Connections (4.6)** |  | 3.61d | 2026-09-16 03:00 | 2026-09-22 11:36 |  | 0.74d |  |  | 21.6h | Day2 |  |  |  |  |
| 205 | 2.2.4.5.1 | Perform dry fused alumina blasting of drum and drum connections - As per scope 4.6 |  | 3h | 2026-09-16 03:00 | 2026-09-16 06:00 | 190 | 0.8d | 0.35d | WC-SNDBST [200%] | 6h | Day4 | 6477046 | 1020 | M | WCG-SRG |
| 206 | 2.2.4.5.2 | Vacuum blasting debris (drum and drum connections) |  | 2h | 2026-09-16 11:00 | 2026-09-16 13:00 | 205, 191 | 0.94d | 0.2d | WC-VACTRK; WC-OPER [200%] | 6h | Day4 | 6477046 | 1060 |  | WCG-VEOLIA |
| 207 | 2.2.4.5.3 | Perform NDT of drum and drum connections - as per scope 4.6 |  | 4h | 2026-09-21 15:00 | 2026-09-22 10:00 | 206, 192 | 0.74d | 0d | WC-NDT [200%] | 8h | Day9 | 6477046 | 1040 |  | WCT-ALS |
| 208 | 2.2.4.5.4 | Conduct visual inspection of drum and drum connections - as per scope 4.6 |  | 1.6h | 2026-09-22 10:00 | 2026-09-22 11:36 | 207, 202 | 0.74d | 0d | WGP-ENG | 1.6h | Day10 | 6477046 | 700 |  | W5M1 |
| 209 | 2.2.4.5.5 | Drum and Drum Connections Complete | milestone | 0h | 2026-09-22 11:36 | 2026-09-22 11:36 | 208 | 0.74d | 0d |  |  | Day10 |  |  |  |  |
| 210 | 2.2.4.6 | Penthouse Maintenance Complete | milestone | 0h | 2026-09-22 11:36 | 2026-09-22 11:36 | 194, 197, 200, 203, 209 | 0.74d |  |  |  | Day10 |  |  |  |  |
| 211 | 2.2.5 | **Secondary Superheater Outlet Header (5)** |  | 3.2d | 2026-09-16 21:00 | 2026-09-23 02:00 |  | 0d |  |  | 203h | Day2 |  |  |  |  |
| 212 | 2.2.5.1 | Remove lagging from secondary superheater outlet header - as per scope 5.1 |  | 24h | 2026-09-16 21:00 | 2026-09-17 21:00 | 143, 407 | 0d |  | WC-GENER [200%] | 48h | Day4 | 6477046 | 1030 | L2 | WCG-OTHER |
| 213 | 2.2.5.2 | Remove old thermocouples, identify and keep current thermocouples or replace as required (SSOH) |  | 2h | 2026-09-18 07:00 | 2026-09-18 09:00 | 212 | 0.65d | 0d | WGP-ETP | 2h | Day6 | 6477046 | 420 |  | W5E1 |
| 214 | 2.2.5.3 | Install stepping planks on bottom of header enclosure for safe access |  | 2h | 2026-09-17 21:00 | 2026-09-17 23:00 | 212 | 0d |  | WC-GENER [200%] | 4h | Day5 | 6477046 | 1010 |  | WCG-OTHER |
| 215 | 2.2.5.4 | Perform dry fused alumina blasting of secondary superheater outlet header - As per scope 5.2 |  | 4h | 2026-09-17 23:00 | 2026-09-18 03:00 | 214 | 0d |  | WC-SNDBST [200%] | 8h | Day5 | 6477046 | 1020 | M | WCG-SRG |
| 216 | 2.2.5.5 | Vacuum blasting debris (SSOH) |  | 8h | 2026-09-18 03:00 | 2026-09-18 11:00 | 215 | 0.35d | 0d | WC-VACTRK; WC-OPER [200%] | 12h | Day6 | 6477046 | 1060 |  | WCG-VEOLIA |
| 217 | 2.2.5.6 | Remove 300mm tube sample from secondary superheater outlet header & install new section of tube - as per scope 5.2 |  | 4h | 2026-09-18 11:00 | 2026-09-18 15:00 | 216 | 0.05d | 0d | WC-MISC [200%] | 8h | Day6 | 6477046 | 1070 |  | WCG-OTHER |
| 218 | 2.2.5.7 | Removed tube section from SSOH to be sent for analysis |  | 2h | 2026-09-18 15:00 | 2026-09-19 08:00 | 217 | 0d |  | WC-NDT | 2h | Day6 | 6477046 | 1040 |  | WCT-ALS |
| 219 | 2.2.5.8 | Perform NDT of secondary superheater outlet header - as per scope 5.2 |  | 8h | 2026-09-19 08:00 | 2026-09-19 16:00 | 218 | 0d |  | WC-NDT [200%] | 16h | Day7 | 6477046 | 1040 |  | WCT-ALS |
| 220 | 2.2.5.9 | Perform metallurgy testing of SSOH - as per scope 5.2 |  | 4h | 2026-09-21 07:00 | 2026-09-21 11:00 | 219 | 0.25d | 0d | WC-NDT | 4h | Day9 | 6477046 | 1040 |  | WCT-ALS |
| 221 | 2.2.5.10 | Conduct visual inspection of secondary superheater outlet header |  | 3h | 2026-09-21 11:00 | 2026-09-21 14:00 | 220 | 0.15d | 0d | WGP-ENG | 3h | Day9 | 6477046 | 700 |  | W5M1 |
| 222 | 2.2.5.11 | heatech - Install 4 additional thermocouples as identified by engineering. This work is critical to review potential design excursions (SSOH) |  | 12h | 2026-09-18 09:00 | 2026-09-19 11:00 | 213 | 0.65d |  | WC-MISC [200%] | 24h | Day6 | 6477046 | 1090 |  | WCG-OTHER |
| 223 | 2.2.5.12 | Box up secondary superheater outlet header |  | 4h | 2026-09-21 14:00 | 2026-09-21 18:00 | 221, 222 | 0d |  | WC-GENER [200%] | 8h | Day9 | 6477046 | 1000 |  | WCG-OTHER |
| 224 | 2.2.5.13 | Install new insulation and reinstate cladding on secondary superheater outlet header - as per scope 5.1 |  | 32h | 2026-09-21 18:00 | 2026-09-23 02:00 | 223, 517 | 0d |  | WC-GENER [200%] | 64h | Day9 | 6477046 | 1030 | RL | WCG-OTHER |
| 225 | 2.2.5.14 | Secondary Superheater Outlet Header Complete | milestone | 0h | 2026-09-23 02:00 | 2026-09-23 02:00 | 224 | 0.35d |  |  |  | Day11 |  |  |  |  |
| 226 | 2.2.6 | **Primary Superheater Outlet Header (6)** |  | 2.7d | 2026-09-16 16:00 | 2026-09-22 10:30 |  | 0.8d |  |  | 53.5h | Day2 |  |  |  |  |
| 227 | 2.2.6.1 | Remove cladding and insulation on primary superheater outlet header - as per scope 6.1 |  | 12h | 2026-09-16 16:00 | 2026-09-17 04:00 | 143 | 0.8d |  | WC-GENER [200%] | 24h | Day4 | 6477046 | 1030 | L1 | WCG-OTHER |
| 228 | 2.2.6.2 | Perform dry fused alumina blasting of primary superheater outlet header - As per scope 6.1 |  | 3h | 2026-09-18 03:00 | 2026-09-18 06:00 | 227, 215 | 0.8d | 0d | WC-SNDBST [200%] | 6h | Day6 | 6477046 | 1020 | L | WCG-SRG |
| 229 | 2.2.6.3 | Vacuum blasting debris (PSOH) |  | 4h | 2026-09-18 06:00 | 2026-09-18 10:00 | 228 | 0.55d | 0d | WC-VACTRK; WC-OPER [200%] | 9h | Day6 | 6477046 | 1060 |  | WCG-VEOLIA |
| 230 | 2.2.6.4 | Perform NDT of primary superheater outlet header - as per scope 6.1 |  | 6h | 2026-09-21 11:00 | 2026-09-22 08:00 | 229 | 0.85d | 0d | WC-NDT [200%] | 12h | Day9 | 6477046 | 1040 |  | WCT-ALS |
| 231 | 2.2.6.5 | Conduct visual inspection of primary superheater outlet header |  | 2.5h | 2026-09-22 08:00 | 2026-09-22 10:30 | 230 | 0.85d | 0d | WGP-ENG | 2.5h | Day10 | 6477046 | 700 |  | W5M1 |
| 232 | 2.2.6.6 | Primary Superheater Outlet Header Complete | milestone | 0h | 2026-09-22 10:30 | 2026-09-22 10:30 | 231 | 0.85d |  |  |  | Day10 |  |  |  |  |

Notes:
- 205: Operation Description: SRG - BOILER 1 MOH SANDBLASTING SCOPE
- 206: Operation Description: VEOLIA - BOILER 1 MOH SCOPE
- 207: Operation Description: BOILER 1 MAJOR OVERHAUL NDT & METALLURGY SCOPE
- 208: Operation Description: ENGINEERING INSPECTIONS
- 212: Operation Description: SRG - BOILER 1 MAJOR OVERHAUL LAGGING SCOPE
- 213: Operation Description: Remove old thermocouples, identify and keep current thermocouples or replace as required (SSOH)
- 214: Operation Description: SRG - BOILER 1 MOH OFFLINE SCAFFOLD SCOPE
- 215: Operation Description: SRG - BOILER 1 MOH SANDBLASTING SCOPE
- 216: Operation Description: VEOLIA - BOILER 1 MOH SCOPE
- 217: Operation Description: WESTARC - BOILER 1 MOH SCOPE
- 218: Operation Description: BOILER 1 MAJOR OVERHAUL NDT & METALLURGY SCOPE
- 219: Operation Description: BOILER 1 MAJOR OVERHAUL NDT & METALLURGY SCOPE
- 220: Operation Description: BOILER 1 MAJOR OVERHAUL NDT & METALLURGY SCOPE
- 221: Operation Description: ENGINEERING INSPECTIONS
- 222: Operation Description: heatech - Install 4 additional thermocouples as identified by engineering. This work is critical to review potential design excursions (SSOH)
- 223: Operation Description: SRG MECH - BOILER 1 MECHNICAL SCOPE
- 224: Operation Description: SRG - BOILER 1 MAJOR OVERHAUL LAGGING SCOPE
- 227: Operation Description: SRG - BOILER 1 MAJOR OVERHAUL LAGGING SCOPE
- 228: Operation Description: SRG - BOILER 1 MOH SANDBLASTING SCOPE
- 229: Operation Description: VEOLIA - BOILER 1 MOH SCOPE
- 230: Operation Description: BOILER 1 MAJOR OVERHAUL NDT & METALLURGY SCOPE
- 231: Operation Description: ENGINEERING INSPECTIONS

| ID | WBS | Task | Type | Duration | Start | Finish | Predecessors | Total slack | Free slack | Resources | Work | Day | Work Order No. | Operation No. | Operation Description | Assigned Department |
| --- | --- | --- | --- | --- | --- | --- | --- | --- | --- | --- | --- | --- | --- | --- | --- | --- |
| 233 | 2.2.7 | **Superheater Enclosure (7)** |  | 4.75d | 2026-09-15 08:00 | 2026-09-22 16:00 |  | 0.35d |  |  | 49h | Day2 |  |  |  |  |
| 234 | 2.2.7.1 | **Superheater Tube Bank (7.2)** |  | 0.25d | 2026-09-15 08:00 | 2026-09-15 10:30 |  | 0.35d |  |  | 2.5h | Day2 |  |  |  |  |
| 235 | 2.2.7.1.1 | Conduct visual inspection of superheater tube bank - as per scope 7.2 |  | 2.5h | 2026-09-15 08:00 | 2026-09-15 10:30 | 315 | 0.35d | 0d | WGP-ENG | 2.5h | Day3 | 6477046 | 700 | ENGINEERING INSPECTIONS | W5M1 |
| 236 | 2.2.7.1.2 | Superheater Tube Bank Complete | milestone | 0h | 2026-09-15 10:30 | 2026-09-15 10:30 | 235 | 4.85d |  |  |  | Day3 |  |  |  |  |
| 237 | 2.2.7.2 | **Primary Superheater Outlet Tubes #7, 8 & 9 (7.3)** |  | 1.1d | 2026-09-15 10:30 | 2026-09-16 13:30 |  | 0.35d |  |  | 12h | Day2 |  |  |  |  |
| 238 | 2.2.7.2.1 | Perform metallugical testing of primary superheater outlet tubes 7, 8 & 9 - as per scope 7.3 |  | 4h | 2026-09-15 10:30 | 2026-09-15 14:30 | 235 | 0.25d | 0d | WC-NDT | 4h | Day3 | 6477046 | 1040 | BOILER 1 MAJOR OVERHAUL NDT & METALLURGY SCOPE | WCT-ALS |
| 239 | 2.2.7.2.2 | Calculate useful remnant life of primary superheater outlet tubes 7, 8 & 9 based on results of OT and HT (HRL) |  | 8h | 2026-09-15 14:30 | 2026-09-16 13:30 | 238 | 0.25d | 0d | WC-NDT | 8h | Day3 | 6477046 | 1040 | BOILER 1 MAJOR OVERHAUL NDT & METALLURGY SCOPE | WCT-ALS |
| 240 | 2.2.7.2.3 | Primary Superheater Outlet Tubes #7, 8 & 9 complete | milestone | 0h | 2026-09-16 13:30 | 2026-09-16 13:30 | 239 | 3.75d | 3.4d |  |  | Day4 |  |  |  |  |
| 241 | 2.2.7.3 | **Secondary Superheater Outlet Tubes #9, 10 (7.4)** |  | 3.4d | 2026-09-16 13:30 | 2026-09-22 16:00 |  | 0.25d |  |  | 16h | Day2 |  |  |  |  |
| 242 | 2.2.7.3.1 | Review current tube metal thermocouples and recommend additional locations and installation methodology as required - as per scope 7.4 (secondary superheater outlet tubes #9 & 10) |  | 4h | 2026-09-16 13:30 | 2026-09-17 08:30 | 239 | 0.25d | 0d | WC-NDT | 4h | Day4 | 6477046 | 1040 | BOILER 1 MAJOR OVERHAUL NDT & METALLURGY SCOPE | WCT-ALS |
| 243 | 2.2.7.3.2 | Perform metallugical testing of secondary superheater outlet tubes #9 & 10 - as per scope 7.4 |  | 4h | 2026-09-17 08:30 | 2026-09-17 12:30 | 242 | 0.3d | 0d | WC-NDT | 4h | Day5 | 6477046 | 1040 | BOILER 1 MAJOR OVERHAUL NDT & METALLURGY SCOPE | WCT-ALS |
| 244 | 2.2.7.3.3 | Calculate useful remnant life of secondary superheater outlet tubes #9 & 10 based on results of OT and HT (HRL) |  | 8h | 2026-09-22 08:00 | 2026-09-22 16:00 | 243 | 0.35d | 0d | WC-NDT | 8h | Day10 | 6477046 | 1040 | BOILER 1 MAJOR OVERHAUL NDT & METALLURGY SCOPE | WCT-ALS |
| 245 | 2.2.7.3.4 | Secondary Superheater Outlet Tubes #9 & 10 Complete | milestone | 0h | 2026-09-22 16:00 | 2026-09-22 16:00 | 244 | 0.35d | 0d |  |  | Day10 |  |  |  |  |
| 246 | 2.2.7.4 | **Superheater Enclosure Wall Tubes (7.5)** |  | 0.25d | 2026-09-15 10:30 | 2026-09-15 13:00 |  | 3.23d |  |  | 2.5h | Day2 |  |  |  |  |
| 247 | 2.2.7.4.1 | Conduct visual inspection of superheater enclosure wall tubes - as per scope 7.5 |  | 2.5h | 2026-09-15 10:30 | 2026-09-15 13:00 | 235 | 3.23d | 0d | WGP-ENG | 2.5h | Day3 | 6477046 | 700 | ENGINEERING INSPECTIONS | W5M1 |
| 248 | 2.2.7.4.2 | Superheater Enclosure Wall Tubes Complete | milestone | 0h | 2026-09-15 13:00 | 2026-09-15 13:00 | 247 | 4.6d | 4.25d |  |  | Day3 |  |  |  |  |
| 249 | 2.2.7.5 | **Screen Wall Tubes (7.6)** |  | 0.25d | 2026-09-15 13:00 | 2026-09-15 15:30 |  | 3.23d |  |  | 2.5h | Day2 |  |  |  |  |
| 250 | 2.2.7.5.1 | Conduct visual inspection of screen wall tubes - as per scope 7.6 |  | 2.5h | 2026-09-15 13:00 | 2026-09-15 15:30 | 247 | 3.2d | 0d | WGP-ENG | 2.5h | Day3 | 6477046 | 700 | ENGINEERING INSPECTIONS | W5M1 |
| 251 | 2.2.7.5.2 | Screen Wall Tubes Complete | milestone | 0h | 2026-09-15 15:30 | 2026-09-15 15:30 | 250 | 4.35d | 4d |  |  | Day3 |  |  |  |  |
| 252 | 2.2.7.6 | **Superheater Enclosure Headers (7.7)** |  | 3.13d | 2026-09-17 08:12 | 2026-09-22 16:00 |  | 0.35d |  |  | 2.5h | Day2 |  |  |  |  |
| 253 | 2.2.7.6.1 | Conduct visual inspection of superheater enclosure headers - as per scope 7.7 |  | 2.5h | 2026-09-17 08:12 | 2026-09-17 10:42 | 250 | 3.23d | 2.88d | WGP-ENG | 2.5h | Day5 | 6477046 | 700 | ENGINEERING INSPECTIONS | W5M1 |
| 254 | 2.2.7.6.2 | Superheater enclosure Headers Complete | milestone | 0h | 2026-09-22 16:00 | 2026-09-22 16:00 | 253, 240, 245, 248, 251 | 0.35d |  |  |  | Day10 |  |  |  |  |
| 255 | 2.2.7.7 | **Superheater Safety Valve** |  | 3.9d | 2026-09-15 09:00 | 2026-09-22 08:00 |  | 1.1d |  |  | 11h | Day3 |  |  |  |  |
| 256 | 2.2.7.7.1 | Changeout superheater safety valve with certified spare |  | 3h | 2026-09-15 09:00 | 2026-09-15 12:00 | 149 | 1.1d | 0d | WGP-MTP [200%] | 6h | Day3 | 6819791 | 10 | Changeout superheater safety valve with certified spare | W5M1 |
| 257 | 2.2.7.7.2 | Crane to assist with superheater safety valve changeout |  | 3h | 2026-09-15 09:00 | 2026-09-15 12:00 | 149 | 4.7d | 3.6d | WC-CRN100 | 3h | Day3 |  |  |  |  |
| 258 | 2.2.7.7.3 | Send safety valves off-site for service & recertification |  | 1h | 2026-09-22 07:00 | 2026-09-22 08:00 | 256 | 1.05d | 0d | WGP-MTP [200%] | 2h | Day10 | 6819791 | 20 | Send safety valves off-site for service & recertification | W5M1 |
| 259 | 2.2.7.7.4 | Superheater Safety Valve Complete | milestone | 0h | 2026-09-22 08:00 | 2026-09-22 08:00 | 256, 257, 258 | 1.1d |  |  |  | Day10 |  |  |  |  |

| ID | WBS | Task | Type | Duration | Start | Finish | Predecessors | Total slack | Free slack | Resources | Work | Day | Work Order No. | Operation No. | Operation Description | Assigned Department | Text12 |
| --- | --- | --- | --- | --- | --- | --- | --- | --- | --- | --- | --- | --- | --- | --- | --- | --- | --- |
| 260 | 2.2.8 | **Furnace (8)** |  | 4.85d | 2026-09-15 02:30 | 2026-09-23 08:00 |  | 0.3d |  |  | 40h | Day2 |  |  |  |  |  |
| 261 | 2.2.8.1 | **Burners (8.2)** |  | 1.05d | 2026-09-15 02:30 | 2026-09-16 10:00 |  | 3.2d |  |  | 18h | Day2 |  |  |  |  |  |
| 262 | 2.2.8.1.1 | Internal scaffold access to all 6 burners and inspection ports in sidewalls - Do not restrict access to refractory |  | 8h | 2026-09-15 02:30 | 2026-09-15 10:30 | 118 | 3.2d | 0d | WC-GENER [200%] | 16h | Day3 | 6477046 | 1010 | SRG - BOILER 1 MOH OFFLINE SCAFFOLD SCOPE | WCG-OTHER |  |
| 263 | 2.2.8.1.2 | Conduct visual inspection of all burners & inspection ports - as per scope 8.2 |  | 2h | 2026-09-16 08:00 | 2026-09-16 10:00 | 262 | 3.65d | 0d | WGP-ENG | 2h | Day4 | 6477046 | 700 | ENGINEERING INSPECTIONS | W5M1 |  |
| 264 | 2.2.8.1.3 | Burner Maintenanec Complete | milestone | 0h | 2026-09-16 10:00 | 2026-09-16 10:00 | 263 | 4.1d |  |  |  | Day4 |  |  |  |  |  |
| 265 | 2.2.8.2 | **Furnace Tubes (8.3)** |  | 0.15d | 2026-09-17 07:00 | 2026-09-17 09:00 |  | 3.35d |  |  | 2h | Day2 |  |  |  |  |  |
| 266 | 2.2.8.2.1 | Conduct visual inspection of furnace tubes - as per scope 8.3 |  | 2h | 2026-09-17 07:00 | 2026-09-17 09:00 | 263 | 3.35d | 0d | WGP-ENG | 2h | Day5 | 6477046 | 700 | ENGINEERING INSPECTIONS | W5M1 |  |
| 267 | 2.2.8.2.2 | Furnance Tubes Complete | milestone | 0h | 2026-09-17 09:00 | 2026-09-17 09:00 | 266 | 3.4d |  |  |  | Day5 |  |  |  |  |  |
| 268 | 2.2.8.3 | **Burner Inspection Ports (8.4)** |  | 0.8d | 2026-09-22 08:00 | 2026-09-23 08:00 |  | 0.3d |  |  | 20h | Day2 |  |  |  |  |  |
| 269 | 2.2.8.3.1 | Inspect & clean burner inspection port glass windows |  | 5h | 2026-09-22 08:00 | 2026-09-22 13:00 | 343 | 0.6d | 0.3d | WGP-MTP [200%] | 10h | Day10 | 6477046 | 210 | Inspect & clean burner inspection port glass windows | W5M1 |  |
| 270 | 2.2.8.3.2 | Replace burner inspection port air hoses |  | 5h | 2026-09-22 13:00 | 2026-09-23 08:00 | 343 | 0.25d | 0d | WGP-MTP [200%] | 10h | Day10 | 6477046 | 220 | Replace burner inspection port air hoses | W5M1 |  |
| 271 | 2.2.8.3.3 | Burner Inspection Port Maintenance Complete | milestone | 0h | 2026-09-23 08:00 | 2026-09-23 08:00 | 270, 269 | 0.3d |  |  |  | Day11 |  |  |  |  |  |
| 272 | 2.2.9 | **Economiser (9)** |  | 1.6d | 2026-09-15 06:30 | 2026-09-16 16:30 |  | 1.6d |  |  | 11h | Day2 |  |  |  |  |  |
| 273 | 2.2.9.1 | Install marine ply boards flat ontop of economiser fin tubes to enable engineering inspection |  | 2h | 2026-09-15 06:30 | 2026-09-15 08:30 | 189 | 1.6d | 0d | WC-GENER [200%] | 4h | Day3 | 6477046 | 1010 | SRG - BOILER 1 MOH OFFLINE SCAFFOLD SCOPE | WCG-OTHER |  |
| 274 | 2.2.9.2 | Conduct visual inspection of economiser - as per scope 9.1 |  | 3h | 2026-09-16 11:30 | 2026-09-16 14:30 | 273 | 3.45d | 0d | WGP-ENG | 3h | Day4 | 6477046 | 700 | ENGINEERING INSPECTIONS | W5M1 |  |
| 275 | 2.2.9.3 | Remove marine ply boards used for economiser inspections |  | 2h | 2026-09-16 14:30 | 2026-09-16 16:30 | 274 | 3.45d | 0d | WC-GENER [200%] | 4h | Day4 | 6477046 | 1010 | SRG - BOILER 1 MOH OFFLINE SCAFFOLD SCOPE | WCG-OTHER |  |
| 276 | 2.2.9.4 | Economiser Complete | milestone | 0h | 2026-09-16 16:30 | 2026-09-16 16:30 | 275 | 3.55d |  |  |  | Day4 |  |  |  |  |  |
| 277 | 2.2.10 | **HS Piping (10)** |  | 3.9d | 2026-09-15 13:00 | 2026-09-22 12:00 |  | 0.25d |  |  | 155h | Day2 |  |  |  |  |  |
| 278 | 2.2.10.1 | Remove lagging on HS piping - as per scope 10.1 & 10.2 |  | 24h | 2026-09-15 13:00 | 2026-09-16 13:00 | 441 | 0.25d | 0d | WC-GENER [200%] | 48h | Day3 | 6477046 | 1030 | SRG - BOILER 1 MAJOR OVERHAUL LAGGING SCOPE | WCG-OTHER | L2 |
| 279 | 2.2.10.2 | Perform fused alumina blasting of HS piping exposed welds - as per scope 10.1 |  | 5h | 2026-09-16 18:00 | 2026-09-16 23:00 | 278 | 0d |  | WC-SNDBST [200%] | 10h | Day4 | 6477046 | 1020 | SRG - BOILER 1 MOH SANDBLASTING SCOPE | WCG-SRG | M |
| 280 | 2.2.10.3 | Vacuum blasting debris (HS Piping) |  | 12h | 2026-09-16 23:00 | 2026-09-17 13:00 | 279 | 0.25d | 0d | WC-VACTRK; WC-OPER [200%] | 18h | Day4 | 6477046 | 1060 | VEOLIA - BOILER 1 MOH SCOPE | WCG-VEOLIA |  |
| 281 | 2.2.10.4 | Perform NDT on HS piping - as per scope 10.1 |  | 8h | 2026-09-18 07:00 | 2026-09-18 15:00 | 280 | 0.05d | 0d | WC-NDT [200%] | 16h | Day6 | 6477046 | 1040 | BOILER 1 MAJOR OVERHAUL NDT & METALLURGY SCOPE | WCT-ALS |  |
| 282 | 2.2.10.5 | Perform metallugical testing of HS piping - as per scope 10.1 |  | 12h | 2026-09-18 15:00 | 2026-09-21 09:00 | 281 | 0.05d | 0d | WC-NDT | 12h | Day6 | 6477046 | 1040 | BOILER 1 MAJOR OVERHAUL NDT & METALLURGY SCOPE | WCT-ALS |  |
| 283 | 2.2.10.6 | Conduct visual inspection of HS piping & pipe hangers - as per scope 10.1 & 10.2 |  | 3h | 2026-09-21 09:00 | 2026-09-21 12:00 | 282 | 0.7d | 0d | WGP-ENG | 3h | Day9 | 6477046 | 700 | ENGINEERING INSPECTIONS | W5M1 |  |
| 284 | 2.2.10.7 | Reinstante lagging on HS Piping |  | 24h | 2026-09-21 12:00 | 2026-09-22 12:00 | 283, 517 | 0.7d | 0d | WC-GENER [200%] | 48h | Day9 | 6477046 | 1030 | SRG - BOILER 1 MAJOR OVERHAUL LAGGING SCOPE | WCG-OTHER | RL |
| 285 | 2.2.10.8 | HS Piping Maintenance Complete | milestone | 0h | 2026-09-22 12:00 | 2026-09-22 12:00 | 284 | 0.7d |  |  |  | Day10 |  |  |  |  |  |

| ID | WBS | Task | Type | Duration | Start | Finish | Predecessors | Total slack | Free slack | Resources | Work | Day | Work Order No. | Operation No. | Text12 | Assigned Department |
| --- | --- | --- | --- | --- | --- | --- | --- | --- | --- | --- | --- | --- | --- | --- | --- | --- |
| 286 | 2.2.11 | **Flash Tank & Blowdown Vessel (11)** |  | 6.4d | 2026-09-13 23:00 | 2026-09-23 19:00 |  | 0d |  |  | 424h | Day2 |  |  |  |  |
| 287 | 2.2.11.1 | **Flash Tank (11.2)** |  | 6.4d | 2026-09-13 23:00 | 2026-09-23 17:00 |  | 0d |  |  | 402h | Day2 |  |  |  |  |
| 288 | 2.2.11.1.1 | Perform fused alumina blasting of exposed external door welds, nozzle welds, and support leg attachment welds (FLT) |  | 3h | 2026-09-13 23:00 | 2026-09-14 02:00 | 121 | 0d |  | WC-SNDBST [200%] | 6h | Day1 | 6477046 | 1020 | L | WCG-SRG |
| 289 | 2.2.11.1.2 | Vacuum blasting debris (FLT) |  | 4h | 2026-09-14 02:00 | 2026-09-14 09:00 | 288 | 0d |  | WC-VACTRK; WC-OPER [200%] | 6h | Day2 | 6477046 | 1060 |  | WCG-VEOLIA |
| 290 | 2.2.11.1.3 | Perform NDT of flash tank – as per scope 11.2 |  | 8h | 2026-09-23 07:00 | 2026-09-23 15:00 | 289 | 0d |  | WC-NDT [200%] | 16h | Day11 | 6477046 | 1040 |  | WCT-ALS |
| 291 | 2.2.11.1.4 | Conduct visual inspection of flash tank – Internal and External |  | 2h | 2026-09-23 15:00 | 2026-09-23 17:00 | 290 | 0d |  | WGP-ENG | 2h | Day11 | 6477046 | 700 |  | W5M1 |
| 292 | 2.2.11.1.5 | **Flash Tank Maintenance** |  | 4.55d | 2026-09-15 02:30 | 2026-09-22 13:00 |  | 0.8d |  |  | 372h | Day3 |  |  |  |  |
| 293 | 2.2.11.1.5.1 | Remove flash tank fisher control valve & prepare for transport |  | 2h | 2026-09-15 02:30 | 2026-09-15 04:30 | 118 | 0.8d | 0d | WC-GENER [200%] | 4h | Day3 | 6477046 | 1000 |  | WCG-OTHER |
| 294 | 2.2.11.1.5.2 | Remove flash tank leveltrol & prepare for transport |  | 2h | 2026-09-15 04:30 | 2026-09-15 06:30 | 293 | 0.95d | 0d | WC-GENER [200%] | 4h | Day3 | WO6522219 | 10 |  | WCG-OTHER |
| 295 | 2.2.11.1.5.3 | Remove flash tank safety valve & prepare for transport |  | 2h | 2026-09-15 06:30 | 2026-09-15 08:30 | 294 | 1.5d | 0d | WC-GENER [200%] | 4h | Day3 | 6800110 | 10 |  | WCG-OTHER |
| 296 | 2.2.11.1.5.4 | Crane to assist with removing flash tank valves & leveltrol |  | 6h | 2026-09-15 07:00 | 2026-09-15 13:00 | 118 | 5.05d |  | WC-CRN100 | 6h | Day3 |  |  |  |  |
| 297 | 2.2.11.1.5.5 | WPC to service flash tank fisher control valve & leveltrol |  | 7ed | 2026-09-15 06:30 | 2026-09-22 06:30 | 294 | 2.85d | 0d | WGP-DELAY | 168h | Day3 |  |  |  |  |
| 298 | 2.2.11.1.5.6 | Valvology - Service and re-certify flash tank safety valve |  | 7ed | 2026-09-15 08:30 | 2026-09-22 08:30 | 295 | 4.25d | 0.2d | WGP-DELAY | 168h | Day3 | 6800110 | 20 |  | WCG-OTHER |
| 299 | 2.2.11.1.5.7 | Install flash tank fisher control valve |  | 2h | 2026-09-22 06:30 | 2026-09-22 08:30 | 297 | 1.5d | 0d | WC-GENER [200%] | 4h | Day10 | 6477046 | 1000 |  | WCG-OTHER |
| 300 | 2.2.11.1.5.8 | Install flash tank leveltrol |  | 2h | 2026-09-22 08:30 | 2026-09-22 10:30 | 299 | 1.3d | 0d | WC-GENER [200%] | 4h | Day10 | WO6522219 | 21 |  | WCG-OTHER |
| 301 | 2.2.11.1.5.9 | Install flash tank safety valve |  | 2h | 2026-09-22 10:30 | 2026-09-22 12:30 | 298, 300 | 1.1d |  | WC-GENER [200%] | 4h | Day10 | 6800110 | 30 |  | WCG-OTHER |
| 302 | 2.2.11.1.5.10 | Crane to assist with installing flash tank valves & leveltrol |  | 6h | 2026-09-22 07:00 | 2026-09-22 13:00 | 297 | 1.05d |  | WC-CRN100 | 6h | Day10 |  |  |  |  |
| 303 | 2.2.11.1.6 | Flash Tank Complete | milestone | 0h | 2026-09-23 17:00 | 2026-09-23 17:00 | 291, 296, 301, 302 | 0d |  |  |  | Day11 |  |  |  |  |
| 304 | 2.2.11.2 | **Blowdown Vessel (11.3)** |  | 6.15d | 2026-09-14 02:00 | 2026-09-23 13:00 |  | 0d |  |  | 20h | Day2 |  |  |  |  |
| 305 | 2.2.11.2.1 | Perform fused alumina blasting of exposed external manway welds (BDV) |  | 2h | 2026-09-14 02:00 | 2026-09-14 04:00 | 288 | 0d |  | WC-SNDBST [200%] | 4h | Day2 | 6477046 | 1020 | L | WCG-SRG |
| 306 | 2.2.11.2.2 | Vacuum blasting debris (BDV) |  | 4h | 2026-09-14 04:00 | 2026-09-14 09:00 | 305 | 0.35d | 0d | WC-VACTRK; WC-OPER [200%] | 6h | Day2 | 6477046 | 1060 |  | WCG-VEOLIA |
| 307 | 2.2.11.2.3 | Perform NDT of blowdown vessel – as per scope 11.3 |  | 4h | 2026-09-23 07:00 | 2026-09-23 11:00 | 306 | 0.35d | 0d | WC-NDT [200%] | 8h | Day11 | 6477046 | 1040 |  | WCT-ALS |
| 308 | 2.2.11.2.4 | Conduct visual inspection of blowdown vessel – Internal and External |  | 2h | 2026-09-23 11:00 | 2026-09-23 13:00 | 307 | 0.25d | 0d | WGP-ENG | 2h | Day11 | 6477046 | 700 |  | W5M1 |
| 309 | 2.2.11.2.5 | Blowdown Vessel Complete | milestone | 0h | 2026-09-23 13:00 | 2026-09-23 13:00 | 308 | 0.25d |  |  |  | Day11 |  |  |  |  |
| 310 | 2.2.11.3 | Remove CSE – Flash Tank door #16 and Blowdown Vessel door #17 |  | 2h | 2026-09-23 17:00 | 2026-09-23 19:00 | 303, 309 | 0d |  | WGP-PROD | 2h | Day11 | 6477046 | 310 |  | W5P1 |
| 311 | 2.2.11.4 | Flash Tank & Blowdown Vessel Complete | milestone | 0h | 2026-09-23 19:00 | 2026-09-23 19:00 | 310 | 0d |  |  |  | Day11 |  |  |  |  |

Notes:
- 288: Operation Description: SRG - BOILER 1 MOH SANDBLASTING SCOPE
- 289: Operation Description: VEOLIA - BOILER 1 MOH SCOPE
- 290: Operation Description: BOILER 1 MAJOR OVERHAUL NDT & METALLURGY SCOPE
- 291: Operation Description: ENGINEERING INSPECTIONS
- 293: Operation Description: SRG MECH - BOILER 1 MECHNICAL SCOPE
- 294: Operation Description: Remove flash tank leveltrol & prepare for transport
- 295: Operation Description: Remove flash tank safety valve & prepare for transport
- 298: Operation Description: Valvology - Service and re-certify flash tank safety valve
- 299: Operation Description: SRG MECH - BOILER 1 MECHNICAL SCOPE
- 300: Operation Description: Install flash tank leveltrol
- 301: Operation Description: Install flash tank safety valve
- 305: Operation Description: SRG - BOILER 1 MOH SANDBLASTING SCOPE
- 306: Operation Description: VEOLIA - BOILER 1 MOH SCOPE
- 307: Operation Description: BOILER 1 MAJOR OVERHAUL NDT & METALLURGY SCOPE
- 308: Operation Description: ENGINEERING INSPECTIONS
- 310: Operation Description: Remove CSE – Flash Tank door #16 and Blowdown Vessel door #17

| ID | WBS | Task | Type | Duration | Start | Finish | Predecessors | Total slack | Free slack | Resources | Work | Day | Work Order No. | Operation No. | Operation Description | Assigned Department | Text12 |
| --- | --- | --- | --- | --- | --- | --- | --- | --- | --- | --- | --- | --- | --- | --- | --- | --- | --- |
| 312 | 2.2.12 | **FD Fan (12)** |  | 4.15d | 2026-09-15 07:00 | 2026-09-22 09:00 |  | 0.3d |  |  | 67h | Day2 |  |  |  |  |  |
| 313 | 2.2.12.1 | **FD Fan and Inlet Attenuation Module Inspection** |  | 4.15d | 2026-09-15 07:00 | 2026-09-22 09:00 |  | 0.3d |  |  | 62h | Day2 |  |  |  |  |  |
| 314 | 2.2.12.1.1 | **FD Fan Maintenance** |  | 4.15d | 2026-09-15 07:00 | 2026-09-22 09:00 |  | 0.3d |  |  | 13h | Day2 |  |  |  |  |  |
| 315 | 2.2.12.1.1.1 | Visually inspect inlet guide vanes, bushes, and linkages |  | 1h | 2026-09-15 07:00 | 2026-09-15 08:00 | 108 | 0.3d | 0d | WGP-ENG | 1h | Day3 | 6477046 | 700 | ENGINEERING INSPECTIONS | W5M1 |  |
| 316 | 2.2.12.1.1.2 | Ensure IGV bushes are protected from water and debris intrusion prior to LPW of Fan impeller | inactive | 2h | 2026-09-15 08:00 | 2026-09-15 10:00 | 315 | -2.3d | 0d | WC-OPER [200%] | 4h | Day3 | 6477046 |  |  |  |  |
| 317 | 2.2.12.1.1.3 | LPW FD fan impeller | inactive | 4h | 2026-09-15 10:00 | 2026-09-15 14:00 | 316 | -2.3d | 0d | WC-OPER [200%]; WC-LPW | 12h | Day3 | 6477046 |  |  |  |  |
| 318 | 2.2.12.1.1.4 | Remove FD fan bearings and strip shaft ready for NDT | inactive | 20h | 2026-09-15 15:00 | 2026-09-17 15:00 | 317, 332, 315 | -3.15d | 0d | WGP-MTP [200%] | 40h | Day3 | 6477046 | 230 | CHANGEOUT FD FAN BEARINGS | W5M1 |  |
| 319 | 2.2.12.1.1.5 | Perform NDT of FD fan shaft | inactive | 6h | 2026-09-17 15:00 | 2026-09-18 12:00 | 318 | -3.2d | 0d | WC-NDT [200%] | 12h | Day5 | 6477046 | 1040 | BOILER 1 MAJOR OVERHAUL NDT & METALLURGY SCOPE | WCT-ALS |  |
| 320 | 2.2.12.1.1.6 | Install new FD fan bearings and inpro seals | inactive | 20h | 2026-09-18 12:00 | 2026-09-20 12:00 | 319 | -3.2d | 0d | WGP-MTP [200%] | 40h | Day6 | 6477046 | 230 | CHANGEOUT FD FAN BEARINGS | W5M1 |  |
| 321 | 2.2.12.1.1.7 | Service Automatic Lubricators |  | 2h | 2026-09-15 11:00 | 2026-09-15 13:00 | 320 | 1.05d | 0d | WGP-MTP [200%] | 4h | Day3 | 6477046 | 240 | Service FD fan Automatic Lubricators | W5M1 |  |
| 322 | 2.2.12.1.1.8 | Changeout FD fan actuator ram |  | 2h | 2026-09-21 15:00 | 2026-09-21 17:00 | 321 | 0.85d | 0d | WGP-MTP [200%] | 4h | Day9 | 6477046 | 250 | Changeout FD fan actuator ram | W5M1 |  |
| 323 | 2.2.12.1.1.9 | Stroke test and confirm smooth operation of IGV |  | 2h | 2026-09-22 07:00 | 2026-09-22 09:00 | 322 | 0.95d |  | WGP-ETP [200%] | 4h | Day10 | 6477046 | 260 | Stroke test and confirm smooth operation of IGV | W5E1 |  |
| 324 | 2.2.12.1.2 | **Replace FD Fan Outlet Expansion Joint** |  | 2.15d | 2026-09-15 10:00 | 2026-09-18 03:00 |  | 0.55d |  |  | 48h | Day2 |  |  |  |  |  |
| 325 | 2.2.12.1.2.1 | Partial insulation removal as required to enable access to all expansion joint bolts |  | 6h | 2026-09-15 10:00 | 2026-09-15 16:00 | 360 | 0d |  | WC-GENER [200%] | 12h | Day3 | 6477046 | 1030 | SRG - BOILER 1 MAJOR OVERHAUL LAGGING SCOPE | WCG-OTHER | L1 |
| 326 | 2.2.12.1.2.2 | Replace FD fan outlet expansion joint |  | 12h | 2026-09-15 16:00 | 2026-09-16 04:00 | 325 | 2.4d | 1.6d | WC-GENER [200%] | 24h | Day3 | 6477046 | 1000 | SRG MECH - BOILER 1 MECHNICAL SCOPE | WCG-OTHER |  |
| 327 | 2.2.12.1.2.3 | Refit insulation after replacement of FD Fan outlet expansion joint |  | 6h | 2026-09-17 21:00 | 2026-09-18 03:00 | 326, 517 | 0.8d |  | WC-GENER [200%] | 12h | Day5 | 6477046 | 1030 | SRG - BOILER 1 MAJOR OVERHAUL LAGGING SCOPE | WCG-OTHER | RL |
| 328 | 2.2.12.1.3 | Conduct visual inspection of FD fan - As per scope 12.2 |  | 1h | 2026-09-17 09:00 | 2026-09-17 10:00 | 318, 325 | 3.3d |  | WGP-ENG | 1h | Day5 | 6477046 | 700 | ENGINEERING INSPECTIONS | W5M1 |  |
| 329 | 2.2.12.2 | **FD Fan Motor** | inactive | 2.15d | 2026-09-15 07:00 | 2026-09-17 13:00 |  | -2.4d | 0d |  | 58h | Day2 |  |  |  |  |  |
| 330 | 2.2.12.2.1 | Raise HV permit for FD fan motor | inactive | 1h | 2026-09-15 07:00 | 2026-09-15 08:00 | 81, 98, 118 | -2.4d | 0d | WGP-ETP | 1h | Day3 | 6736730 | 15 | RAISE FD MOTOR HV PERMIT | W5E1 |  |
| 331 | 2.2.12.2.2 | Disconnect FD fan motor ready for changeout | inactive | 2h | 2026-09-15 08:00 | 2026-09-15 10:00 | 330 | -2.4d | 0d | WGP-ETP [200%] | 4h | Day3 | 6736730 | 20 | DISCONNECT MOTOR FOR OVERHAUL | W5E1 |  |
| 332 | 2.2.12.2.3 | Remove FD fan motor and send to RIMS yard | inactive | 5h | 2026-09-15 10:00 | 2026-09-15 15:00 | 331 | -2.4d | 0d | WGP-MTP [200%] | 10h | Day3 | 6477046 | 270 | CHANGEOUT FD FAN MOTOR | W5M1 |  |
| 333 | 2.2.12.2.4 | 25t crane to assist with FD fan motor removal | inactive | 4h | 2026-09-15 10:00 | 2026-09-15 14:00 | 331 | 2.55d | 0.15d | WC-CRN25 | 4h | Day3 | 6477046 | 1080 | 25T FRANNA REQUIRED TO ASSIST WITH FD FAN MAINTENANCE | WCG-GCS |  |
| 334 | 2.2.12.2.5 | Review report for new motor and confirm correct grease has been used - Mobilith SHC100 (AML381) | inactive | 1h | 2026-09-15 15:00 | 2026-09-15 16:00 | 332, 321 | 1.7d | 0d | WGP-ENG | 1h | Day3 | 6477046 | 700 | ENGINEERING INSPECTIONS | W5M1 |  |
| 335 | 2.2.12.2.6 | Install new FD fan motor | inactive | 5h | 2026-09-15 16:00 | 2026-09-16 11:00 | 334 | 1.75d | 0d | WGP-MTP [200%] | 10h | Day3 | 6477046 | 270 | CHANGEOUT FD FAN MOTOR | W5M1 |  |
| 336 | 2.2.12.2.7 | 25T crane to assist with FD fan motor installation | inactive | 4h | 2026-09-15 16:00 | 2026-09-16 10:00 | 334, 333 | 2.15d | 0.9d | WC-CRN25 | 4h | Day3 | 6477046 | 1080 | 25T FRANNA REQUIRED TO ASSIST WITH FD FAN MAINTENANCE | WCG-GCS |  |
| 337 | 2.2.12.2.8 | Conduct alignment of FD Fan | inactive | 10h | 2026-09-16 11:00 | 2026-09-17 11:00 | 335 | 1.25d | 0d | WGP-MTP [200%] | 20h | Day4 |  |  |  |  |  |
| 338 | 2.2.12.2.9 | Connect new FD fan motor | inactive | 2h | 2026-09-17 11:00 | 2026-09-17 13:00 | 335, 336, 337 | 1.05d | 0d | WGP-ETP [200%] | 4h | Day5 | 6736730 | 30 | RECONNECT MOTOR FOR OVERHAUL | W5E1 |  |

Notes:
- 316: Removed from scope
- 317: Removed from scope

| ID | WBS | Task | Type | Duration | Start | Finish | Predecessors | Total slack | Free slack | Resources | Work | Day | Work Order No. | Operation No. | Assigned Department | Text12 |
| --- | --- | --- | --- | --- | --- | --- | --- | --- | --- | --- | --- | --- | --- | --- | --- | --- |
| 339 | 2.2.12.3 | **Adhoc Maintenance - FD Fan** |  | 2.85d | 2026-09-15 11:00 | 2026-09-19 13:00 |  | 0d |  |  | 5h | Day2 |  |  |  |  |
| 340 | 2.2.12.3.1 | Fit auto drain to fd fan bypass instrumentation |  | 2h | 2026-09-19 11:00 | 2026-09-19 13:00 | 509 | 0d |  | WGP-ETP | 2h | Day7 | WO6567186 | 10 | W5E1 |  |
| 341 | 2.2.12.3.2 | Extend FD fan shaft guard |  | 3h | 2026-09-15 11:00 | 2026-09-15 14:00 | 320 | 2.55d |  | WGP-MTP | 3h | Day3 | WO6805557 | 10 | W5M1 |  |
| 342 | 2.2.12.3.3 | Adhoc Maintenance - FD Fan - Complete | milestone | 0h | 2026-09-19 13:00 | 2026-09-19 13:00 | 341, 340 | 0d |  |  |  | Day7 |  |  |  |  |
| 343 | 2.2.12.4 | FD Fan Complete | milestone | 0h | 2026-09-19 13:00 | 2026-09-19 13:00 | 338, 327, 342 | 0d |  |  |  | Day7 |  |  |  |  |
| 344 | 2.2.13 | **RAH & Ducting (13)** |  | 4.6d | 2026-09-14 13:00 | 2026-09-22 11:00 |  | 0.25d |  |  | 348.5h | Day2 |  |  |  |  |
| 345 | 2.2.13.1 | Erect falls protection barricades & install access ladders for doors #2, #3 & FD fan - as per scope 13.1.10-13 |  | 5h | 2026-09-14 13:00 | 2026-09-14 18:00 | 72 | 0d |  | WC-GENER [200%] | 10h | Day2 | 6477046 | 1010 | WCG-OTHER |  |
| 346 | 2.2.13.2 | Strip lagging around RAH drive gear to allow inspection |  | 4h | 2026-09-14 18:00 | 2026-09-14 22:00 | 345 | 0d |  | WC-GENER [200%] | 8h | Day2 | 6477046 | 1030 | WCG-OTHER | L1 |
| 347 | 2.2.13.3 | **Rotary Air Heater Drive Mechanism (13.2)** |  | 0.45d | 2026-09-16 09:00 | 2026-09-16 13:30 |  | 3.75d |  |  | 7.5h | Day2 |  |  |  |  |
| 348 | 2.2.13.3.1 | Conduct visual inspection of drive gear, pin rack and gearbox |  | 1.5h | 2026-09-16 09:00 | 2026-09-16 10:30 | 346 | 3.75d | 0d | WGP-ENG | 1.5h | Day4 | 6477046 | 700 | W5M1 |  |
| 349 | 2.2.13.3.2 | Lubricate and maintain drive gear |  | 3h | 2026-09-16 10:30 | 2026-09-16 13:30 | 348 | 3.75d | 2.95d | WC-GENER [200%] | 6h | Day4 | 6477046 | 1000 | WCG-OTHER |  |
| 350 | 2.2.13.4 | **Rotary Air Heater Body & Bearings (13.3)** |  | 1.8d | 2026-09-14 22:00 | 2026-09-17 09:30 |  | 0.95d |  |  | 53.5h | Day2 |  |  |  |  |
| 351 | 2.2.13.4.1 | Conduct inspection of RAH hot and cold end bearings and note clearances |  | 4h | 2026-09-14 22:00 | 2026-09-15 02:00 | 346 | 0.95d | 0d | WC-GENER [200%] | 8h | Day2 | 6477046 | 1000 | WCG-OTHER |  |
| 352 | 2.2.13.4.2 | Conduct inspection and service of hot end oil system cooler, pump and filters |  | 4h | 2026-09-15 07:00 | 2026-09-15 11:00 | 351 | 1.25d | 0.45d | WGP-MTP [200%] | 8h | Day3 | 6477046 | 1002 | W5M1 |  |
| 353 | 2.2.13.4.3 | Conduct visual inspection of RAH hot and cold end baskets |  | 2.5h | 2026-09-16 07:00 | 2026-09-16 09:30 | 352 | 1.15d | 0d | WGP-ENG | 2.5h | Day4 | 6477046 | 700 | W5M1 |  |
| 354 | 2.2.13.4.4 | Install RAH anti-rotation locking device |  | 1h | 2026-09-16 09:30 | 2026-09-16 10:30 | 353 | 1.2d | 0d | WC-GENER [200%] | 2h | Day4 | 6477046 | 1000 | WCG-OTHER |  |
| 355 | 2.2.13.4.5 | Conduct visual inspection of RAH radial and circumferential seals, hot and cold end |  | 2.5h | 2026-09-16 10:30 | 2026-09-16 13:00 | 354 | 1.05d | 0d | WGP-ENG | 2.5h | Day4 | 6477046 | 700 | W5M1 |  |
| 356 | 2.2.13.4.6 | Replace RAH radial and circumferential seals if required as after inspection |  | 10h | 2026-09-16 13:00 | 2026-09-16 23:00 | 355 | 0.8d | 0d | WC-GENER [200%] | 20h | Day4 | 6477046 | 1000 | WCG-OTHER |  |
| 357 | 2.2.13.4.7 | Measure and record circumferential and radial seal clearances, hot and cold end |  | 4h | 2026-09-16 23:00 | 2026-09-17 03:00 | 356 | 0.8d | 0d | WC-GENER [200%] | 8h | Day4 | 6477046 | 1000 | WCG-OTHER |  |
| 358 | 2.2.13.4.8 | Conduct visual inspection of RAH by engineering |  | 2.5h | 2026-09-17 07:00 | 2026-09-17 09:30 | 357 | 3d | 1.4d | WGP-ENG | 2.5h | Day5 | 6477046 | 700 | W5M1 |  |
| 359 | 2.2.13.5 | **RAH Expansion Joints (13.4)** |  | 3.2d | 2026-09-14 22:00 | 2026-09-19 09:00 |  | 0d |  |  | 170h | Day2 |  |  |  |  |
| 360 | 2.2.13.5.1 | Strip lagging for expansion joint replacement |  | 12h | 2026-09-14 22:00 | 2026-09-15 10:00 | 346 | 0d |  | WC-GENER [200%] | 24h | Day2 | 6477046 | 1030 | WCG-OTHER | L1 |
| 361 | 2.2.13.5.2 | Replace gas inlet expansion joint (hot end) |  | 24h | 2026-09-16 02:30 | 2026-09-17 02:30 | 360, 371 | 1.6d | 0d | WC-GENER [200%] | 48h | Day4 | 6477046 | 1000 | WCG-OTHER |  |
| 362 | 2.2.13.5.3 | Replace gas outlet expansion joint (cold end) |  | 24h | 2026-09-17 02:30 | 2026-09-18 02:30 | 361 | 1.35d | 0d | WC-GENER [200%] | 48h | Day5 | 6477046 | 1000 | WCG-OTHER |  |
| 363 | 2.2.13.5.4 | Replace air outlet (hot end) expansion joint |  | 24h | 2026-09-18 02:30 | 2026-09-19 02:30 | 362 | 1.35d | 0d | WC-GENER [200%] | 48h | Day6 | 6477046 | 1000 | WCG-OTHER |  |
| 364 | 2.2.13.5.5 | Conduct detailed inspection of RAH gas inlet and outlet expansion joints after installation |  | 2h | 2026-09-19 07:00 | 2026-09-19 09:00 | 363 | 1.35d | 0d | WGP-ENG | 2h | Day7 | 6477046 | 700 | W5M1 |  |

Notes:
- 340: Operation Description: Fit auto drain to fd fan bypass instrumentation
- 341: Operation Description: Extend FD fan shaft guard
- 345: Operation Description: SRG - BOILER 1 MOH OFFLINE SCAFFOLD SCOPE
- 346: Operation Description: SRG - BOILER 1 MAJOR OVERHAUL LAGGING SCOPE
- 348: Operation Description: ENGINEERING INSPECTIONS
- 349: Operation Description: SRG MECH - BOILER 1 MECHNICAL SCOPE
- 351: Operation Description: SRG MECH - BOILER 1 MECHNICAL SCOPE
- 352: Operation Description: Conduct inspection and service of hot end oil system cooler, pump and filters
- 353: Operation Description: ENGINEERING INSPECTIONS
- 354: Operation Description: SRG MECH - BOILER 1 MECHNICAL SCOPE
- 355: Operation Description: ENGINEERING INSPECTIONS
- 356: Operation Description: SRG MECH - BOILER 1 MECHNICAL SCOPE
- 357: Operation Description: SRG MECH - BOILER 1 MECHNICAL SCOPE
- 358: Operation Description: ENGINEERING INSPECTIONS
- 360: Operation Description: SRG - BOILER 1 MAJOR OVERHAUL LAGGING SCOPE
- 361: Operation Description: SRG MECH - BOILER 1 MECHNICAL SCOPE
- 362: Operation Description: SRG MECH - BOILER 1 MECHNICAL SCOPE
- 363: Operation Description: SRG MECH - BOILER 1 MECHNICAL SCOPE
- 364: Operation Description: ENGINEERING INSPECTIONS

| ID | WBS | Task | Type | Duration | Start | Finish | Predecessors | Total slack | Free slack | Resources | Work | Day | Work Order No. | Operation No. | Assigned Department | Text12 |
| --- | --- | --- | --- | --- | --- | --- | --- | --- | --- | --- | --- | --- | --- | --- | --- | --- |
| 365 | 2.2.13.6 | **Flue Gas and Air Ducting (13.5)** |  | 3.15d | 2026-09-15 08:00 | 2026-09-19 11:00 |  | 1.95d |  |  | 6h | Day2 |  |  |  |  |
| 366 | 2.2.13.6.1 | Stroke test bypass and main dampers for full fucntionality and smooth operation |  | 2h | 2026-09-15 08:00 | 2026-09-15 10:00 | 346 | 4.9d | 4.1d | WGP-ETP [200%] | 4h | Day3 | 6477046 | 280 | W5E1 |  |
| 367 | 2.2.13.6.2 | Conduct internal inspection of RAH gas and air ducting - as per scope 13.5 |  | 2h | 2026-09-19 09:00 | 2026-09-19 11:00 | 364 | 1.55d | 0d | WGP-ENG | 2h | Day7 | 6477046 | 700 | W5M1 |  |
| 368 | 2.2.13.7 | **RAH Fire Control System (13.6)** |  | 0d | 2026-09-17 03:00 | 2026-09-17 04:00 |  | 3.45d |  |  | 2h | Day2 |  |  |  |  |
| 369 | 2.2.13.7.1 | Inspect condition of RAH fire system inside RAH ducting |  | 1h | 2026-09-17 03:00 | 2026-09-17 04:00 | 357 | 3.45d | 2.75d | WC-GENER [200%] | 2h | Day5 | 6477046 | 1000 | WCG-OTHER |  |
| 370 | 2.2.13.8 | **Stack (13.7)** |  | 1.92d | 2026-09-15 02:30 | 2026-09-17 10:42 |  | 2.95d |  |  | 50.5h | Day2 |  |  |  |  |
| 371 | 2.2.13.8.1 | Replace stack inlet expansion joint |  | 24h | 2026-09-15 02:30 | 2026-09-16 02:30 | 118 | 2.4d | 0d | WC-GENER [200%] | 48h | Day3 | 6477046 | 1000 | WCG-OTHER |  |
| 372 | 2.2.13.8.2 | Visually inspect Stack internal surface |  | 2.5h | 2026-09-17 08:12 | 2026-09-17 10:42 | 118 | 3.23d | 2.43d | WGP-ENG | 2.5h | Day5 | 6477046 | 700 | W5M1 |  |
| 373 | 2.2.13.9 | Replace RAH insulation with new upon completion of inspection. Re-use cladding if in acceptable condition |  | 8h | 2026-09-19 11:00 | 2026-09-19 19:00 | 358, 364, 367, 517 | 1.6d | 1.15d | WC-GENER [200%] | 16h | Day7 | 6477046 | 1030 | WCG-OTHER | RL |
| 374 | 2.2.13.10 | Strip RAH falls protection barricades & access ladders for doors #2, #3 & FD fan |  | 4h | 2026-09-19 11:00 | 2026-09-19 15:00 | 358, 364, 367 | 1.6d | 1.15d | WC-GENER [200%] | 8h | Day7 | 6477046 | 1010 | WCG-OTHER |  |
| 375 | 2.2.13.11 | **Adhoc Maintenance** |  | 4.5d | 2026-09-14 14:00 | 2026-09-22 11:00 |  | 0.15d |  |  | 17h | Day2 |  |  |  |  |
| 376 | 2.2.13.11.1 | Replace worn linkage on rah bypass damper |  | 4h | 2026-09-22 07:00 | 2026-09-22 11:00 | 357 | 0.8d | 0d | WGP-MTP [200%] | 8h | Day10 | WO5926896 | 10 | W5M1 |  |
| 377 | 2.2.13.11.2 | **Changeout RAH gearbox motor - leaking oil** |  | 0.5d | 2026-09-14 14:00 | 2026-09-15 11:00 |  | 0.15d |  |  | 9h | Day2 |  |  |  |  |
| 378 | 2.2.13.11.2.1 | Disconnect RAH gearbox motor |  | 1h | 2026-09-14 14:00 | 2026-09-14 15:00 | 98 | 0.1d | 0d | WGP-ETP | 1h | Day2 | WO6750113 | 10 | W5E1 |  |
| 379 | 2.2.13.11.2.2 | Changeout RAH gearbox motor |  | 3h | 2026-09-14 15:00 | 2026-09-15 08:00 | 378 | 4.8d | 0d | WGP-MTP [200%] | 6h | Day2 | WO6750113 | 21 | W5M1 |  |
| 380 | 2.2.13.11.2.3 | Reconnect RAH gearbox motor |  | 2h | 2026-09-15 09:00 | 2026-09-15 11:00 | 379 | 4.8d | 4d | WGP-ETP | 2h | Day3 | WO6750113 | 30 | W5E1 |  |
| 381 | 2.2.13.12 | RAH & Ducting Maintenance Complete | milestone | 0h | 2026-09-22 11:00 | 2026-09-22 11:00 | 349, 358, 364, 367, 373, 374, 369, 366, 372, 376, 380 | 0.8d |  |  |  | Day10 |  |  |  |  |
| 382 | 2.2.14 | **Windbox and Air Registers (14)** |  | 3.1d | 2026-09-15 08:30 | 2026-09-20 23:00 |  | 1.6d |  |  | 59h | Day2 |  |  |  |  |
| 383 | 2.2.14.1 | Erect access scaffold to allow access to windbox and air registers - as per scope 14.1 |  | 8h | 2026-09-15 08:30 | 2026-09-15 16:30 | 273 | 1.6d | 0d | WC-GENER [200%] | 16h | Day3 | 6477046 | 1010 | WCG-OTHER |  |
| 384 | 2.2.14.2 | Stroke test and lubricate air registers |  | 2h | 2026-09-16 10:00 | 2026-09-16 12:00 | 383 | 1.6d | 0d | WGP-MTP [200%] | 4h | Day4 | 6477046 | 290 | W5M1 |  |
| 385 | 2.2.14.3 | Clean up windbox |  | 2h | 2026-09-20 12:00 | 2026-09-20 14:00 | 384, 389 | 1.25d | 0d | WGP-MTP [200%] | 4h | Day8 | 6477046 | 300 | W5M1 |  |
| 386 | 2.2.14.4 | Conduct visual inspection of burners, air registers, rear of furnace front wall tubes, casing, turning vanes, and expansion joints |  | 3h | 2026-09-20 14:00 | 2026-09-20 17:00 | 385 | 1.45d | 0d | WGP-ENG | 3h | Day8 | 6477046 | 700 | W5M1 |  |
| 387 | 2.2.14.5 | Strip windbox and air register access scaffolds ready for box up |  | 6h | 2026-09-20 17:00 | 2026-09-20 23:00 | 386 | 1.6d | 0d | WC-GENER [200%] | 12h | Day8 | 6477046 | 1010 | WCG-OTHER |  |
| 388 | 2.2.14.6 | **Adhoc Maintenance - Windbox and Air Registers** |  | 0d | 2026-09-19 12:00 | 2026-09-20 12:00 |  | 0.45d |  |  | 20h | Day2 |  |  |  |  |
| 389 | 2.2.14.6.1 | Re-align tracking on burner 1 air register - currently not meeting closed limits |  | 10h | 2026-09-19 12:00 | 2026-09-20 12:00 | 384 | 0.45d | 0d | WGP-MTP [200%] | 20h | Day7 | WO6092168 | 20 | W5M1 |  |
| 390 | 2.2.14.7 | Windbox and Air Registers Maintainence Complete | milestone | 0h | 2026-09-20 23:00 | 2026-09-20 23:00 | 387 | 1.95d |  |  |  | Day8 |  |  |  |  |

Notes:
- 366: Operation Description: Stroke test bypass and main dampers for full fucntionality and smooth operation
- 367: Operation Description: ENGINEERING INSPECTIONS
- 369: Operation Description: SRG MECH - BOILER 1 MECHNICAL SCOPE
- 371: Operation Description: SRG MECH - BOILER 1 MECHNICAL SCOPE
- 372: Operation Description: ENGINEERING INSPECTIONS
- 373: Operation Description: SRG - BOILER 1 MAJOR OVERHAUL LAGGING SCOPE
- 374: Operation Description: SRG - BOILER 1 MOH OFFLINE SCAFFOLD SCOPE
- 376: Operation Description: Replace worn linkage on rah bypass damper
- 378: Operation Description: Disconnect RAH gearbox motor
- 379: Operation Description: Changeout RAH gearbox motor
- 380: Operation Description: Reconnect RAH gearbox motor
- 383: Operation Description: SRG - BOILER 1 MOH OFFLINE SCAFFOLD SCOPE
- 384: Operation Description: Stroke test and lubricate air registers
- 385: change to eng / Operation Description: Clean up windbox
- 386: Operation Description: ENGINEERING INSPECTIONS
- 387: Operation Description: SRG - BOILER 1 MOH OFFLINE SCAFFOLD SCOPE
- 389: Operation Description: Re-align tracking on burner 1 air register - currently not meeting closed limits

| ID | WBS | Task | Type | Duration | Start | Finish | Predecessors | Total slack | Free slack | Resources | Work | Day | Work Order No. | Operation No. | Text12 | Assigned Department |
| --- | --- | --- | --- | --- | --- | --- | --- | --- | --- | --- | --- | --- | --- | --- | --- | --- |
| 391 | 2.2.15 | **Drains & Blowdown System General (15)** |  | 4d | 2026-09-14 04:00 | 2026-09-19 07:30 |  | 1.95d |  |  | 148h | Day2 |  |  |  |  |
| 392 | 2.2.15.1 | **Drains & Blowdown System General - Above Ground Level (15.2)** |  | 4d | 2026-09-14 04:00 | 2026-09-18 17:00 |  | 1.95d |  |  | 82h | Day2 |  |  |  |  |
| 393 | 2.2.15.1.1 | Perform fused alumina blasting of all above ground drain & blowdown piping welds - as per scope 15 |  | 4h | 2026-09-14 04:00 | 2026-09-14 20:00 | 305 | 3.2d | 0d | WC-SNDBST [200%] | 8h | Day2 | 6477046 | 1020 | M | WCG-SRG |
| 394 | 2.2.15.1.2 | Sweep blast of all piping to enable accurate UTWT, removing surface corrosion - drains & blowdown ablove ground |  | 4h | 2026-09-14 20:00 | 2026-09-15 00:00 | 393 | 3.2d | 0d | WC-SNDBST [200%] | 8h | Day2 | 6477046 | 1020 | M | WCG-SRG |
| 395 | 2.2.15.1.3 | Perform NDT of drains & blowdown system (above ground) |  | 12h | 2026-09-15 07:00 | 2026-09-16 10:00 | 394 | 3.45d | 0d | WC-NDT [200%] | 24h | Day3 | 6477046 | 1040 |  | WCT-ALS |
| 396 | 2.2.15.1.4 | Conduct visual inspection and review UTWT of all drains & blowdown lines - as per scope 15.2 |  | 2h | 2026-09-16 10:00 | 2026-09-16 12:00 | 395 | 3.5d | 1.15d | WGP-ENG | 2h | Day4 | 6477046 | 700 |  | W5M1 |
| 397 | 2.2.15.1.5 | Re-instate lagging on drains & blowdown system (Above ground level) - as per scope 15.2 |  | 20h | 2026-09-17 21:00 | 2026-09-18 17:00 | 396, 517 | 1.95d | 0d | WC-GENER [200%] | 40h | Day5 | 6477046 | 1030 | RL | WCG-OTHER |
| 398 | 2.2.15.1.6 | Drains & Blowdown System General (Above Ground Level) Maintenance Complete | milestone | 0h | 2026-09-18 17:00 | 2026-09-18 17:00 | 397 | 1.95d |  |  |  | Day6 |  |  |  |  |
| 399 | 2.2.15.2 | **Drains & Blowdown System General - Ground Level (15.3)** |  | 3.2d | 2026-09-15 00:00 | 2026-09-19 07:30 |  | 1.95d |  |  | 66h | Day2 |  |  |  |  |
| 400 | 2.2.15.2.1 | Perform fused alumina blasting of all ground level drain & blowdown piping welds - as per scope 15.3 |  | 3h | 2026-09-15 00:00 | 2026-09-15 03:00 | 394 | 3.2d | 0d | WC-SNDBST [200%] | 6h | Day3 | 6477046 | 1020 | M | WCG-SRG |
| 401 | 2.2.15.2.2 | Sweep blast of all piping to enable accurate UTWT, removing surface corrosion - drains & blowdown ground level |  | 3h | 2026-09-15 03:00 | 2026-09-15 06:00 | 400 | 3.2d | 0d | WC-SNDBST [200%] | 6h | Day3 | 6477046 | 1020 | M | WCG-SRG |
| 402 | 2.2.15.2.3 | Perform NDT of drains & blowdown system (ground level) |  | 10h | 2026-09-17 12:30 | 2026-09-18 13:30 | 401 | 1.75d | 0d | WC-NDT [200%] | 20h | Day5 | 6477046 | 1040 |  | WCT-ALS |
| 403 | 2.2.15.2.4 | Conduct visual inspection and review UTWT of all drains & blowdown lines - as per scope 15.3 |  | 2h | 2026-09-18 13:30 | 2026-09-18 15:30 | 402 | 1.6d | 0d | WGP-ENG | 2h | Day6 | 6477046 | 700 |  | W5M1 |
| 404 | 2.2.15.2.5 | Re-instate lagging on drains & blowdown system (ground level) - as per scope 15.3 |  | 16h | 2026-09-18 15:30 | 2026-09-19 07:30 | 403, 517 | 1.6d | 0d | WC-GENER [200%] | 32h | Day6 | 6477046 | 1030 | RL | WCG-OTHER |
| 405 | 2.2.15.2.6 | Drains & Blowdown System General (Ground Level) Maintenance Complete | milestone | 0h | 2026-09-19 07:30 | 2026-09-19 07:30 | 404 | 1.95d |  |  |  | Day7 |  |  |  |  |
| 406 | 2.2.16 | **Integral Piping (16)** |  | 3.25d | 2026-09-15 15:00 | 2026-09-21 16:30 |  | 0.85d |  |  | 42.5h | Day2 |  |  |  |  |
| 407 | 2.2.16.1 | Strip lagging around attemperator line 4-way support bracket |  | 4h | 2026-09-16 17:00 | 2026-09-16 21:00 | 157 | 0d |  | WC-GENER [200%] | 8h | Day4 | 6477046 | 1030 | L2 | WCG-OTHER |
| 408 | 2.2.16.2 | Perform fused alumina blasting of integral piping welds - as per scope 16.1 |  | 2h | 2026-09-19 03:00 | 2026-09-19 05:00 | 407, 144 | 0d |  | WC-SNDBST [200%] | 4h | Day7 | 6477046 | 1020 | L | WCG-SRG |
| 409 | 2.2.16.3 | Perform NDT of Integral piping - as per scope 16.1 |  | 4h | 2026-09-21 07:00 | 2026-09-21 11:00 | 408 | 1.2d | 0d | WC-NDT [200%] | 8h | Day9 | 6477046 | 1040 |  | WCT-ALS |
| 410 | 2.2.16.4 | Conduct visual inspection of integral piping including hot/cold position hangers - as per scope 16.1 |  | 1.5h | 2026-09-21 11:00 | 2026-09-21 12:30 | 409 | 1.1d | 0d | WGP-ENG | 1.5h | Day9 | 6477046 | 700 |  | W5M1 |
| 411 | 2.2.16.5 | Re-instate lagging around attemperator line 4-way support bracket |  | 4h | 2026-09-21 12:30 | 2026-09-21 16:30 | 410, 517 | 1.1d | 0d | WC-GENER [200%] | 8h | Day9 | 6477046 | 1030 | RL | WCG-OTHER |
| 412 | 2.2.16.6 | **Integral Piping Adhoc Maintenance** |  | 0.5d | 2026-09-15 15:00 | 2026-09-16 12:00 |  | 3.9d |  |  | 13h | Day2 |  |  |  |  |
| 413 | 2.2.16.6.1 | **CHANGEOUT LEAKING GATE VALVE ON BLR1 HS LINE** |  | 0.5d | 2026-09-15 15:00 | 2026-09-16 12:00 |  | 3.9d |  |  | 13h | Day2 |  |  |  |  |
| 414 | 2.2.16.6.1.1 | TAGOUT FOR REPLACEMENT OF LEAKING GATE VALVE ON BLR1 HS LINE - REQUIRES BOILER DEPRESSURISED |  | 1h | 2026-09-15 15:00 | 2026-09-15 16:00 | 131 | 3.9d | 0d | WGP-PROD | 1h | Day3 | WO6678721 | 10 |  | W5P1 |
| 415 | 2.2.16.6.1.2 | Changeout leaking gate valve on BLR1 HS Line |  | 4h | 2026-09-15 16:00 | 2026-09-16 10:00 | 414 | 3.9d | 0d | WC-MISC [200%] | 8h | Day3 | WO6678721 | 20 |  | WCG-OTHER |
| 416 | 2.2.16.6.1.3 | Mpi welds after hs line valve replacement |  | 2h | 2026-09-16 10:00 | 2026-09-16 12:00 | 415 | 3.9d | 2.75d | WC-NDT [200%] | 4h | Day4 | WO6678721 | 30 |  | WCT-ALS |
| 417 | 2.2.16.7 | Integral Piping Maintenance Complete | milestone | 0h | 2026-09-21 16:30 | 2026-09-21 16:30 | 411, 416 | 1.15d |  |  |  | Day9 |  |  |  |  |

Notes:
- 393: Operation Description: SRG - BOILER 1 MOH SANDBLASTING SCOPE
- 394: Operation Description: SRG - BOILER 1 MOH SANDBLASTING SCOPE
- 395: Operation Description: BOILER 1 MAJOR OVERHAUL NDT & METALLURGY SCOPE
- 396: Operation Description: ENGINEERING INSPECTIONS
- 397: Operation Description: SRG - BOILER 1 MAJOR OVERHAUL LAGGING SCOPE
- 400: Operation Description: SRG - BOILER 1 MOH SANDBLASTING SCOPE
- 401: Operation Description: SRG - BOILER 1 MOH SANDBLASTING SCOPE
- 402: Operation Description: BOILER 1 MAJOR OVERHAUL NDT & METALLURGY SCOPE
- 403: Operation Description: ENGINEERING INSPECTIONS
- 404: Operation Description: SRG - BOILER 1 MAJOR OVERHAUL LAGGING SCOPE
- 407: Operation Description: SRG - BOILER 1 MAJOR OVERHAUL LAGGING SCOPE
- 408: Operation Description: SRG - BOILER 1 MOH SANDBLASTING SCOPE
- 409: Operation Description: BOILER 1 MAJOR OVERHAUL NDT & METALLURGY SCOPE
- 410: Operation Description: ENGINEERING INSPECTIONS
- 411: Operation Description: SRG - BOILER 1 MAJOR OVERHAUL LAGGING SCOPE
- 414: Operation Description: TAGOUT FOR REPLACEMENT OF LEAKING GATE VALVE ON BLR1 HS LINE - REQUIRES BOILER DEPRESSURISED
- 415: Operation Description: Changeout leaking gate valve on BLR1 HS Line
- 416: Operation Description: Mpi welds after hs line valve replacement

| ID | WBS | Task | Type | Duration | Start | Finish | Predecessors | Total slack | Free slack | Resources | Work | Day | Work Order No. | Operation No. | Assigned Department | Text12 |
| --- | --- | --- | --- | --- | --- | --- | --- | --- | --- | --- | --- | --- | --- | --- | --- | --- |
| 418 | 2.2.17 | **Natural Gas System (17)** |  | 4.2d | 2026-09-14 15:00 | 2026-09-22 09:00 |  | 0.1d |  |  | 98h | Day2 |  |  |  |  |
| 419 | 2.2.17.1 | **Gas Valves** |  | 3.5d | 2026-09-14 15:00 | 2026-09-21 10:00 |  | 0.1d |  |  | 18h | Day2 |  |  |  |  |
| 420 | 2.2.17.1.1 | Disconnect any failed gas valves ready for replacement |  | 2h | 2026-09-14 15:00 | 2026-09-14 17:00 | 378 | 0.1d | 0d | WGP-ETP | 2h | Day2 | 6477046 | 320 | W5E1 |  |
| 421 | 2.2.17.1.2 | Replace any gas valves that have failed pressure test |  | 4h | 2026-09-15 07:00 | 2026-09-15 11:00 | 420 | 1.65d | 0d | WGP-MTP [200%] | 8h | Day3 | 6477046 | 330 | W5M1 |  |
| 422 | 2.2.17.1.3 | Changeout burner 1 & 3 manual block valves |  | 3h | 2026-09-20 12:00 | 2026-09-20 15:00 | 421 | 1.35d | 0d | WGP-MTP [200%] | 6h | Day8 | WO6809668 | 10 | W5M1 |  |
| 423 | 2.2.17.1.4 | Reconnect all gas valves |  | 2h | 2026-09-21 08:00 | 2026-09-21 10:00 | 422 | 1.7d | 0d | WGP-ETP | 2h | Day9 | 6477046 | 350 | W5E1 |  |
| 424 | 2.2.17.1.5 | Gas Valve Maintenance Complete | milestone | 0h | 2026-09-21 10:00 | 2026-09-21 10:00 | 423 | 1.7d | 0.7d |  |  | Day9 |  |  |  |  |
| 425 | 2.2.17.2 | **Gas Pressure Regulator Valve (Axial PRV)** |  | 4.05d | 2026-09-15 07:00 | 2026-09-22 08:00 |  | 0.25d |  |  | 26h | Day2 |  |  |  |  |
| 426 | 2.2.17.2.1 | Disconnect gas pressure regulator valve (axial PRV) |  | 1h | 2026-09-15 07:00 | 2026-09-15 08:00 | 420 | 0.25d | 0d | WGP-MTP [200%] | 2h | Day3 | 6477046 | 360 | W5M1 |  |
| 427 | 2.2.17.2.2 | Remove gas pressure regulator valve (axial PRV) for overhaul |  | 3h | 2026-09-15 09:00 | 2026-09-15 12:00 | 426 | 1d | 0d | WGP-MTP [200%] | 6h | Day3 | 6477046 | 360 | W5M1 |  |
| 428 | 2.2.17.2.3 | Overhaul gas pressure regulator valve (axial PRV) |  | 10h | 2026-09-15 12:00 | 2026-09-16 12:00 | 427 | 1d | 0d | WC-MISC | 10h | Day3 | 6477046 | 370 | WCG-OTHER |  |
| 429 | 2.2.17.2.4 | Re-install gas pressure regulator valve (axial PRV) after overhaul |  | 3h | 2026-09-16 12:00 | 2026-09-16 15:00 | 428 | 0.85d | 0d | WGP-MTP [200%] | 6h | Day4 | 6477046 | 360 | W5M1 |  |
| 430 | 2.2.17.2.5 | Reconnect gas pressure regulator valve (axial PRV) |  | 1h | 2026-09-22 07:00 | 2026-09-22 08:00 | 429 | 1.05d | 0d | WGP-MTP [200%] | 2h | Day10 | 6477046 | 360 | W5M1 |  |
| 431 | 2.2.17.2.6 | Gas Pressure Regulator Valve (Axial PRV) Maintenance Complete | milestone | 0h | 2026-09-22 08:00 | 2026-09-22 08:00 | 430 | 1.1d | 0.1d |  |  | Day10 |  |  |  |  |
| 432 | 2.2.17.3 | **Multi Gas Analyser Change out** |  | 2d | 2026-09-15 12:00 | 2026-09-18 08:00 |  | 2.7d |  |  | 44h | Day2 |  |  |  |  |
| 433 | 2.2.17.3.1 | Tagout for removal and service of boiler multi gas analyser |  | 2h | 2026-09-15 12:00 | 2026-09-15 14:00 | 427 | 2.55d | 0d | WGP-PROD [200%] | 4h | Day3 | 6925247 | 10 | W5P1 |  |
| 434 | 2.2.17.3.2 | Remove boiler multi gas analyser |  | 4h | 2026-09-16 08:00 | 2026-09-16 12:00 | 433 | 2.75d | 0d | WGP-ETP [200%] | 8h | Day4 | 6925247 | 20 | W5E1 |  |
| 435 | 2.2.17.3.3 | Annual change out of boiler multi gas analyser - thermal systems |  | 24h | 2026-09-16 12:00 | 2026-09-17 12:00 | 434 | 2.75d | 0d | WGP-DELAY | 24h | Day4 | 6925247 | 30 | WCG-OTHER |  |
| 436 | 2.2.17.3.4 | Fit boiler multi gas analyser after service by thermal systems |  | 4h | 2026-09-17 14:00 | 2026-09-18 08:00 | 435 | 2.55d | 1.7d | WGP-ETP [200%] | 8h | Day5 | 6925247 | 40 | W5E1 |  |
| 437 | 2.2.17.4 | Changeout LPG ignition gas regulator and valves |  | 3h | 2026-09-19 09:00 | 2026-09-19 12:00 | 429 | 0d |  | WGP-MTP [200%] | 6h | Day7 | 6477046 | 380 | W5M1 |  |
| 438 | 2.2.17.5 | Remove and clean gas strainer |  | 2h | 2026-09-22 07:00 | 2026-09-22 09:00 | 437 | 0.95d | 0d | WGP-MTP [200%] | 4h | Day10 | 6477046 | 340 | W5M1 |  |
| 439 | 2.2.17.6 | Natural Gas System Maintenance Complete | milestone | 0h | 2026-09-22 09:00 | 2026-09-22 09:00 | 437, 431, 424, 438, 436 | 1d |  |  |  | Day10 |  |  |  |  |
| 440 | 2.2.18 | **HS Header (19)** |  | 5.4d | 2026-09-14 13:00 | 2026-09-23 11:00 |  | 0d |  |  | 141h | Day2 |  |  |  |  |
| 441 | 2.2.18.1 | Strip lagging on HS header for inspection & NDT - as per scope 19.1 |  | 24h | 2026-09-14 13:00 | 2026-09-15 13:00 | 72 | 0.25d | 0d | WC-GENER [200%] | 48h | Day2 | 6477046 | 1030 | WCG-OTHER | L2 |
| 442 | 2.2.18.2 | perform dry fused alumina blasting on HS header |  | 5h | 2026-09-15 18:00 | 2026-09-15 23:00 | 441 | 0d |  | WC-SNDBST [200%] | 10h | Day3 | 6477046 | 1020 | WCG-SRG | H |
| 443 | 2.2.18.3 | Perform NDT of HS header - as per scope 19.1 |  | 10h | 2026-09-16 15:00 | 2026-09-17 16:00 | 442 | 1.65d | 0d | WC-NDT [200%] | 20h | Day4 | 6477046 | 1040 | WCT-ALS |  |
| 444 | 2.2.18.4 | Metallurgical replicas of HS header to be taken - as per scope 19.1 |  | 12h | 2026-09-22 08:00 | 2026-09-23 11:00 | 442 | 0d |  | WC-NDT | 12h | Day10 | 6477046 | 1040 | WCT-ALS |  |
| 445 | 2.2.18.5 | Conduct visual inspection of HS header & sign off for lagging to be reinstalled |  | 3h | 2026-09-17 16:00 | 2026-09-18 09:00 | 443 | 1.65d | 0d | WGP-ENG | 3h | Day5 | 6477046 | 700 | W5M1 |  |
| 446 | 2.2.18.6 | Re-Instate lagging on HS header |  | 24h | 2026-09-18 09:00 | 2026-09-19 09:00 | 445, 517 | 1.8d |  | WC-GENER [200%] | 48h | Day6 | 6477046 | 1030 | WCG-OTHER | RL |
| 447 | 2.2.18.7 | HS Header Maintenance Complete | milestone | 0h | 2026-09-23 11:00 | 2026-09-23 11:00 | 446, 443, 444 | 0d |  |  |  | Day11 |  |  |  |  |

Notes:
- 420: Operation Description: Disconnect any failed gas valves ready for replacement
- 421: Operation Description: Replace any gas valves that have failed pressure test
- 422: Operation Description: Changeout burner 1 & 3 manual block valves
- 423: Operation Description: Reconnect all gas valves
- 426: Operation Description: REMOVE/REFIT PRESSURE REGULATOR FOR OVERHAUL
- 427: Operation Description: REMOVE/REFIT PRESSURE REGULATOR FOR OVERHAUL
- 428: Operation Description: THERMAL SYSTEMS - OVERHAUL GAS PRESSURE REGULATOR
- 429: Operation Description: REMOVE/REFIT PRESSURE REGULATOR FOR OVERHAUL
- 430: Operation Description: REMOVE/REFIT PRESSURE REGULATOR FOR OVERHAUL
- 433: Operation Description: Tagout for removal and service of boiler multi gas analyser
- 434: Operation Description: Remove boiler multi gas analyser
- 435: Operation Description: Annual change out of boiler multi gas analyser - thermal systems
- 436: Operation Description: Fit boiler multi gas analyser after service by thermal systems
- 437: Operation Description: Changeout LPG ignition gas regulator and valves
- 438: Operation Description: Remove and clean gas strainer
- 441: Operation Description: SRG - BOILER 1 MAJOR OVERHAUL LAGGING SCOPE
- 442: Operation Description: SRG - BOILER 1 MOH SANDBLASTING SCOPE
- 443: Operation Description: BOILER 1 MAJOR OVERHAUL NDT & METALLURGY SCOPE
- 444: Operation Description: BOILER 1 MAJOR OVERHAUL NDT & METALLURGY SCOPE
- 445: Operation Description: ENGINEERING INSPECTIONS
- 446: Operation Description: SRG - BOILER 1 MAJOR OVERHAUL LAGGING SCOPE

| ID | WBS | Task | Type | Duration | Start | Finish | Predecessors | Total slack | Free slack | Calendar | Resources | Work | Day | Work Order No. | Operation No. | Operation Description | Assigned Department |
| --- | --- | --- | --- | --- | --- | --- | --- | --- | --- | --- | --- | --- | --- | --- | --- | --- | --- |
| 448 | 2.2.19 | **PDSHUT289 - Boiler 1 Electrical Maintenance** |  | 2.3d | 2026-09-14 10:00 | 2026-09-17 09:00 |  | 3.4d |  |  |  | 32h | Day2 |  |  |  |  |
| 449 | 2.2.19.1 | PDMAIN09 - HV STARTER MAJOR MAINTENANCE - STARTER-WG110-FDB001 |  | 3h | 2026-09-15 13:00 | 2026-09-15 16:00 | 338 | 3.9d | 0d |  | WGP-ETP [200%] | 6h | Day3 | 6815552 | 10 | HV STARTER MAJOR MAINTENANCE | W5E1 |
| 450 | 2.2.19.2 | PDMAIN40 - MOTOR OVERHAUL - MOTOR-WG110-FDB001 |  | 1h | 2026-09-15 16:00 | 2026-09-15 17:00 | 449 | 3.95d | 0.65d |  | WGP-DELAY | 1h | Day3 | 6736730 | 10 | MOTOR CHANGEOUT | W5E1 |
| 451 | 2.2.19.3 | PDMAIN22 - HV CABLE MAINTENANCE - CABLE-WG110-FDB001 |  | 2h | 2026-09-17 07:00 | 2026-09-17 09:00 | 450 | 3.35d | 0d |  | WGP-ETP [200%] | 4h | Day5 | 6740358 | 10 | HV CABLE MAINTENANCE | W5E1 |
| 452 | 2.2.19.4 | PDMAIN09 - HV CONTACTOR MAINTENANCE - STARTER-WG110-FDB001 |  | 8h | 2026-09-15 13:00 | 2026-09-16 11:00 | 338 | 3.9d | 0d |  | WC-MISC [200%] | 16h | Day3 | 6815552 | 20 | HV CONTACTOR MAINTENANCE | WCG-OTHER |
| 453 | 2.2.19.5 | Protection Relay??? |  | 1h | 2026-09-16 11:00 | 2026-09-16 12:00 | 452 | 3.9d | 0.5d |  | WC-MISC [200%] | 2h | Day4 | 6815552 | 30 |  | WCG-OTHER |
| 454 | 2.2.19.6 | PDSHUT289 Complete | milestone | 0h | 2026-09-17 09:00 | 2026-09-17 09:00 | 451, 453 | 3.4d |  |  |  |  | Day5 |  |  |  |  |
| 455 | 2.2.19.7 | **LV Starter Maintenance** |  | 0.15d | 2026-09-14 10:00 | 2026-09-14 11:30 |  | 5.55d |  |  |  | 3h | Day2 |  |  |  |  |
| 456 | 2.2.19.7.1 | PDMAIN34 - LV STARTER (POWERHOUSE) MAINTENANCE - STARTER-WG110-101HEV08 |  | 0.5h | 2026-09-14 10:00 | 2026-09-14 10:30 | 76 | 21.55d | 0d | 24 Hours | WGP-ETP [200%] | 1h | Day2 | 6860918 | 30 | LV STARTER MAJOR MAINTENANCE | W5E1 |
| 457 | 2.2.19.7.2 | PDMAIN34 - LV STARTER (POWERHOUSE) MAINTENANCE - STARTER-WG110-101HEV09 |  | 0.5h | 2026-09-14 10:30 | 2026-09-14 11:00 | 456 | 21.55d | 0d | 24 Hours | WGP-ETP [200%] | 1h | Day2 | 6860928 | 30 | LV STARTER MAJOR MAINTENANCE | W5E1 |
| 458 | 2.2.19.7.3 | PDMAIN34 - LV STARTER (POWERHOUSE) MAINTENANCE - STARTER-WG110-RAL101 |  | 0.5h | 2026-09-14 11:00 | 2026-09-14 11:30 | 457 | 21.55d | 0d | 24 Hours | WGP-ETP [200%] | 1h | Day2 | 6728906 | 30 | LV STARTER MAJOR MAINTENANCE | W5E1 |
| 459 | 2.2.19.7.4 | LV Starter Maintenance Complete | milestone | 0h | 2026-09-14 11:30 | 2026-09-14 11:30 | 458 | 5.55d |  |  |  |  | Day2 |  |  |  |  |
| 460 | 2.2.20 | **BMS & Critical non BMS Instruments** |  | 2.15d | 2026-09-15 10:00 | 2026-09-17 17:00 |  | 0.25d |  |  |  | 27h | Day3 |  |  |  |  |
| 461 | 2.2.20.1 | **Instrumentation route - BMS Temp Transmitters** |  | 0.4d | 2026-09-15 10:00 | 2026-09-15 14:00 |  | 0.15d |  |  |  | 4h |  |  |  |  |  |
| 462 | 2.2.20.1.1 | 101TT17 Boiler 1 Air Heater Air Outlet Temperature |  | 0.4h | 2026-09-15 10:00 | 2026-09-15 10:24 | 125 | 0.3d | 0d |  | WGP-ETP | 0.4h | Day3 | 6710430 | 10 | Instrumentation route - BMS Temp Transmitters | W5E1 |
| 463 | 2.2.20.1.2 | 101TT18 Boiler 1 Final Steam Temperature |  | 0.4h | 2026-09-15 10:24 | 2026-09-15 10:48 | 462 | 0.3d | 0d |  | WGP-ETP | 0.4h | Day3 | 6710430 | 10 | Instrumentation route - BMS Temp Transmitters | W5E1 |
| 464 | 2.2.20.1.3 | 101TT20 Boiler 1 Air Heater Gas Outlet Temperature |  | 0.4h | 2026-09-15 10:48 | 2026-09-15 11:12 | 463 | 0.3d | 0d |  | WGP-ETP | 0.4h | Day3 | 6710430 | 10 | Instrumentation route - BMS Temp Transmitters | W5E1 |
| 465 | 2.2.20.1.4 | 101TT21 Boiler 1 Air Heater Air Inlet Temperature |  | 0.4h | 2026-09-15 11:12 | 2026-09-15 11:36 | 464 | 0.3d | 0d |  | WGP-ETP | 0.4h | Day3 | 6710430 | 10 | Instrumentation route - BMS Temp Transmitters | W5E1 |
| 466 | 2.2.20.1.5 | 101TT22 Boiler 1 Air heater Gas Inlet Temperature |  | 0.4h | 2026-09-15 11:36 | 2026-09-15 12:00 | 465 | 0.3d | 0d |  | WGP-ETP | 0.4h | Day3 | 6710430 | 10 | Instrumentation route - BMS Temp Transmitters | W5E1 |
| 467 | 2.2.20.1.6 | 101TT24 Boiler 1 Primary Superheater Outlet Temperature |  | 0.4h | 2026-09-15 12:00 | 2026-09-15 12:24 | 466 | 0.3d | 0d |  | WGP-ETP | 0.4h | Day3 | 6710430 | 10 | Instrumentation route - BMS Temp Transmitters | W5E1 |
| 468 | 2.2.20.1.7 | 101TT25 Boiler 1 Secondary Superheater Inlet Temperature |  | 0.4h | 2026-09-15 12:24 | 2026-09-15 12:48 | 467 | 0.27d | 0d |  | WGP-ETP | 0.4h | Day3 | 6710430 | 10 | Instrumentation route - BMS Temp Transmitters | W5E1 |
| 469 | 2.2.20.1.8 | 101TT42 Boiler 1 Air Heater Bearing Temperature |  | 0.4h | 2026-09-15 12:48 | 2026-09-15 13:12 | 468 | 0.23d | 0d |  | WGP-ETP | 0.4h | Day3 | 6710430 | 10 | Instrumentation route - BMS Temp Transmitters | W5E1 |
| 470 | 2.2.20.1.9 | 101TT43 Boiler 1 Air Heater Bearing Temperature |  | 0.4h | 2026-09-15 13:12 | 2026-09-15 13:36 | 469 | 0.19d | 0d |  | WGP-ETP | 0.4h | Day3 | 6710430 | 10 | Instrumentation route - BMS Temp Transmitters | W5E1 |
| 471 | 2.2.20.1.10 | 101TT50 Boiler 1 Gas Header Temperature |  | 0.4h | 2026-09-15 13:36 | 2026-09-15 14:00 | 470 | 0.15d | 0d |  | WGP-ETP | 0.4h | Day3 | 6710430 | 10 | Instrumentation route - BMS Temp Transmitters | W5E1 |

Notes:
- 449: Opportunity to bring in earlier
- 453: Set up correctly

| ID | WBS | Task | Duration | Start | Finish | Predecessors | Total slack | Free slack | Resources | Work | Day | Work Order No. | Operation No. | Operation Description | Assigned Department |
| --- | --- | --- | --- | --- | --- | --- | --- | --- | --- | --- | --- | --- | --- | --- | --- |
| 472 | 2.2.20.2 | **Instrumentation route - Non BMS Temp Transmitters** | 0.1d | 2026-09-15 14:00 | 2026-09-15 15:00 |  | 0.1d |  |  | 1h | Day3 |  |  |  |  |
| 473 | 2.2.20.2.1 | Instrumentation route - Non BMS Flow Transmitters | 1h | 2026-09-15 14:00 | 2026-09-15 15:00 | 471 | 0.1d | 0d | WGP-ETP | 1h | Day3 | 6757287 | 10 | Instrumentation route - Non BMS Temp Transmitters | W5E1 |
| 474 | 2.2.20.3 | **Instrumentation route - BMS Flow Transmitters** | 0.3d | 2026-09-15 15:00 | 2026-09-16 10:00 |  | 0.1d |  |  | 5h |  |  |  |  |  |
| 475 | 2.2.20.3.1 | 101FT02 Boiler 1 Fuel Gas Flow Transmitter | 1h | 2026-09-15 15:00 | 2026-09-15 16:00 | 473 | 0.1d | 0d | WGP-ETP | 1h | Day3 | 6710430 | 20 | Instrumentation route - BMS Flow Transmitters | W5E1 |
| 476 | 2.2.20.3.2 | 101FT03 Boiler 1 Combustion Air Flow Transmitter | 1h | 2026-09-15 16:00 | 2026-09-15 17:00 | 475 | 0.15d | 0d | WGP-ETP | 1h | Day3 | 6710430 | 20 | Instrumentation route - BMS Flow Transmitters | W5E1 |
| 477 | 2.2.20.3.3 | 101FT03A Boiler 1 Combustion Air Flow Transmitter A | 1h | 2026-09-16 07:00 | 2026-09-16 08:00 | 476 | 0.25d | 0d | WGP-ETP | 1h | Day4 | 6710430 | 20 | Instrumentation route - BMS Flow Transmitters | W5E1 |
| 478 | 2.2.20.3.4 | 101FT04 Boiler 1 Feed Water Flow Transmitter | 1h | 2026-09-16 08:00 | 2026-09-16 09:00 | 477 | 0.3d | 0d | WGP-ETP | 1h | Day4 | 6710430 | 20 | Instrumentation route - BMS Flow Transmitters | W5E1 |
| 479 | 2.2.20.3.5 | 101FT05 Boiler 1 Steam Flow Transmitter | 1h | 2026-09-16 09:00 | 2026-09-16 10:00 | 478 | 0.3d | 0d | WGP-ETP | 1h | Day4 | 6710430 | 20 | Instrumentation route - BMS Flow Transmitters | W5E1 |
| 480 | 2.2.20.4 | **Instrumentation route - BMS Level Transmitters** | 0.3d | 2026-09-16 10:00 | 2026-09-16 13:00 |  | 0.25d |  |  | 3h |  |  |  |  |  |
| 481 | 2.2.20.4.1 | 101LT01 Boiler 1 Drum Level Transmitter North | 1.5h | 2026-09-16 10:00 | 2026-09-16 11:30 | 479 | 0.3d | 0d | WGP-ETP | 1.5h | Day4 | 6710430 | 30 | Instrumentation route - BMS Level Transmitters | W5E1 |
| 482 | 2.2.20.4.2 | 101LT02 Boiler 1 Drum Level Transmitter South | 1.5h | 2026-09-16 11:30 | 2026-09-16 13:00 | 481 | 0.25d | 0d | WGP-ETP | 1.5h | Day4 | 6710430 | 30 | Instrumentation route - BMS Level Transmitters | W5E1 |
| 483 | 2.2.20.5 | **Instrumentation route - BMS Pressure Transmitters** | 0.4d | 2026-09-16 13:00 | 2026-09-17 09:00 |  | 0.25d |  |  | 6h |  |  |  |  |  |
| 484 | 2.2.20.5.1 | 101PT02 Boiler 1 Steam Pressure | 0.5h | 2026-09-16 13:00 | 2026-09-16 13:30 | 482 | 0.2d | 0d | WGP-ETP | 0.5h | Day4 | 6710430 | 40 | Instrumentation route - BMS Pressure Transmitters | W5E1 |
| 485 | 2.2.20.5.2 | 101PT04 North Boiler 1 Drum Pressure North | 0.5h | 2026-09-16 13:30 | 2026-09-16 14:00 | 484 | 0.15d | 0d | WGP-ETP | 0.5h | Day4 | 6710430 | 40 | Instrumentation route - BMS Pressure Transmitters | W5E1 |
| 486 | 2.2.20.5.3 | 101PT04 South Boiler 1 Drum Pressure South | 0.5h | 2026-09-16 14:00 | 2026-09-16 14:30 | 485 | 0.1d | 0d | WGP-ETP | 0.5h | Day4 | 6710430 | 40 | Instrumentation route - BMS Pressure Transmitters | W5E1 |
| 487 | 2.2.20.5.4 | 101PT06 Boiler 1 Windbox Pressure | 0.5h | 2026-09-16 14:30 | 2026-09-16 15:00 | 486 | 0.1d | 0d | WGP-ETP | 0.5h | Day4 | 6710430 | 40 | Instrumentation route - BMS Pressure Transmitters | W5E1 |
| 488 | 2.2.20.5.5 | 101PT08 Boiler 1 Furnace Pressure | 0.5h | 2026-09-16 15:00 | 2026-09-16 15:30 | 487 | 0.1d | 0d | WGP-ETP | 0.5h | Day4 | 6710430 | 40 | Instrumentation route - BMS Pressure Transmitters | W5E1 |
| 489 | 2.2.20.5.6 | 101PT11 Boiler 1 Ignition Gas Burner Pressure | 0.5h | 2026-09-16 15:30 | 2026-09-16 16:00 | 488 | 0.1d | 0d | WGP-ETP | 0.5h | Day4 | 6710430 | 40 | Instrumentation route - BMS Pressure Transmitters | W5E1 |
| 490 | 2.2.20.5.7 | 101PT22 Boiler 1 Gas Fuel at Burner Pressure | 0.5h | 2026-09-16 16:00 | 2026-09-16 16:30 | 489 | 0.15d | 0d | WGP-ETP | 0.5h | Day4 | 6710430 | 40 | Instrumentation route - BMS Pressure Transmitters | W5E1 |
| 491 | 2.2.20.5.8 | 101PT34 Boiler 1 FD Fan Pressure | 0.5h | 2026-09-16 16:30 | 2026-09-16 17:00 | 490 | 0.2d | 0d | WGP-ETP | 0.5h | Day4 | 6710430 | 40 | Instrumentation route - BMS Pressure Transmitters | W5E1 |
| 492 | 2.2.20.5.9 | 101PT36 Boiler 1 Air Heater Gas Inlet Pressure | 0.5h | 2026-09-17 07:00 | 2026-09-17 07:30 | 491 | 0.25d | 0d | WGP-ETP | 0.5h | Day5 | 6710430 | 40 | Instrumentation route - BMS Pressure Transmitters | W5E1 |
| 493 | 2.2.20.5.10 | 101PT37 Boiler 1 Air Heater Gas Outlet Pressure | 0.5h | 2026-09-17 07:30 | 2026-09-17 08:00 | 492 | 0.3d | 0d | WGP-ETP | 0.5h | Day5 | 6710430 | 40 | Instrumentation route - BMS Pressure Transmitters | W5E1 |
| 494 | 2.2.20.5.11 | 101PT50 Boiler 1 Gas Fuel Pressure | 0.5h | 2026-09-17 08:00 | 2026-09-17 08:30 | 493 | 0.3d | 0d | WGP-ETP | 0.5h | Day5 | 6710430 | 40 | Instrumentation route - BMS Pressure Transmitters | W5E1 |
| 495 | 2.2.20.5.12 | 101PT52 Boiler 1 Gas Header Pressure | 0.5h | 2026-09-17 08:30 | 2026-09-17 09:00 | 494 | 0.3d | 0d | WGP-ETP | 0.5h | Day5 | 6710430 | 40 | Instrumentation route - BMS Pressure Transmitters | W5E1 |

| ID | WBS | Task | Type | Duration | Start | Finish | Predecessors | Total slack | Free slack | Resources | Work | Day | Work Order No. | Operation No. | Assigned Department |
| --- | --- | --- | --- | --- | --- | --- | --- | --- | --- | --- | --- | --- | --- | --- | --- |
| 496 | 2.2.20.6 | **Instrumentation route - Non BMS Pressure Transmitters** |  | 0.65d | 2026-09-17 09:00 | 2026-09-17 17:00 |  | 0.25d |  |  | 8h |  |  |  |  |
| 497 | 2.2.20.6.1 | 101FY01G Boiler 1 Fuel Gas Valve I/P |  | 1h | 2026-09-17 09:00 | 2026-09-17 10:00 | 495 | 0.3d | 0d | WGP-ETP | 1h | Day5 | 6757287 | 20 | W5E1 |
| 498 | 2.2.20.6.2 | 101FY01GM Boiler 1 Minimum Gas Valve I/P |  | 1h | 2026-09-17 10:00 | 2026-09-17 11:00 | 497 | 0.3d | 0d | WGP-ETP | 1h | Day5 | 6757287 | 20 | W5E1 |
| 499 | 2.2.20.6.3 | 101FY03 Boiler 1 FD Fan Inlet Vanes Actuator I/P |  | 1h | 2026-09-17 11:00 | 2026-09-17 12:00 | 498 | 0.3d | 0d | WGP-ETP | 1h | Day5 | 6757287 | 20 | W5E1 |
| 500 | 2.2.20.6.4 | 101TY03A Boiler 1 Air Heater Inlet Damper I/P |  | 1h | 2026-09-17 12:00 | 2026-09-17 13:00 | 499 | 0.25d | 0d | WGP-ETP | 1h | Day5 | 6757287 | 20 | W5E1 |
| 501 | 2.2.20.6.5 | 101TY03B Boiler 1 Air Heater Bypass Damper I/P |  | 1h | 2026-09-17 13:00 | 2026-09-17 14:00 | 500 | 0.15d | 0d | WGP-ETP | 1h | Day5 | 6757287 | 20 | W5E1 |
| 502 | 2.2.20.6.6 | 101FY04A Boiler 1 Feedwater Valve A I/P |  | 1h | 2026-09-17 14:00 | 2026-09-17 15:00 | 501 | 0.1d | 0d | WGP-ETP | 1h | Day5 | 6757287 | 20 | W5E1 |
| 503 | 2.2.20.6.7 | 101FY04B Boiler 1 Feedwater Valve B I/P |  | 1h | 2026-09-17 15:00 | 2026-09-17 16:00 | 502 | 0.1d | 0d | WGP-ETP | 1h | Day5 | 6757287 | 20 | W5E1 |
| 504 | 2.2.20.6.8 | 101TY18 Boiler 1 Attemperator Valves I/P |  | 1h | 2026-09-17 16:00 | 2026-09-17 17:00 | 503 | 0.15d | 0d | WGP-ETP | 1h | Day5 | 6757287 | 20 | W5E1 |
| 505 | 2.2.20.6.9 | BMS & Critical non BMS Instruments Calibrations Complete | milestone | 0h | 2026-09-17 17:00 | 2026-09-17 17:00 | 504 | 0.25d | 0d |  |  | Day5 |  |  |  |
| 506 | 2.2.21 | **Adhoc Maintenance - Electrical** |  | 0.8d | 2026-09-17 23:00 | 2026-09-19 11:00 |  | 0.25d |  |  | 26h | Day2 |  |  |  |
| 507 | 2.2.21.1 | REPLACE BOILER 1 EXHAUST GAS ECONOMISER EXIT TEMP (101TI22) TEMPERATURE TRANSMITTER |  | 2h | 2026-09-18 07:00 | 2026-09-18 09:00 | 505 | 0.25d | 0d | WGP-ETP | 2h | Day6 | WO6762791 | 10 | W5E1 |
| 508 | 2.2.21.2 | REPAIR STANDING ALARM BLR1O2 ANALYSER DIFF HIGH. O2 ANALYSER B HAS FAILED AND IS NOW READING HIGH 5.6 |  | 2h | 2026-09-18 09:00 | 2026-09-18 11:00 | 507 | 0.3d | 0d | WGP-ETP | 2h | Day6 | WO6790766 | 10 | W5E1 |
| 509 | 2.2.21.3 | Tidy up existing thermocouple wiring |  | 10h | 2026-09-18 11:00 | 2026-09-19 11:00 | 508 | 0d |  | WGP-ETP | 10h | Day6 | 6477046 | 390 | W5E1 |
| 510 | 2.2.21.4 | Erect scaff to access secondary gas analyser rosemount 1B02 |  | 4h | 2026-09-17 23:00 | 2026-09-18 03:00 | 214 | 0.8d | 0d | WC-GENER [200%] | 8h | Day5 | 6477046 | 400 | WCG-OTHER |
| 511 | 2.2.21.5 | Remove secondary gas analyser rosemount 1B02 |  | 4h | 2026-09-18 08:00 | 2026-09-18 12:00 | 510 | 8.35d | 0.35d | WGP-ETP | 4h | Day6 | 6477046 | 410 | W5E1 |
| 512 | 2.2.21.6 | Adhoc Maintenance - Electrical Complete | milestone | 0h | 2026-09-19 11:00 | 2026-09-19 11:00 | 507, 508, 509, 511 | 8d |  |  |  | Day7 |  |  |  |
| 513 | 2.2.22 | **TA1 Generator Prep - Adhoc** |  | 0.8d | 2026-09-18 07:00 | 2026-09-20 17:00 |  | 0.8d |  |  | 31h | Day2 |  |  |  |
| 514 | 2.2.22.1 | NRG - Inspect TA1 CTs |  | 10h | 2026-09-18 07:00 | 2026-09-18 17:00 | 510 | 0.35d | 0d | WC-MISC | 10h | Day6 | WO6908139 | 30 | WCG-OTHER |
| 515 | 2.2.22.2 | Havcon to conduct 3D scan of TA1 electrical cabinets |  | 1h | 2026-09-18 07:00 | 2026-09-18 08:00 | 510 | 1.05d | 0.75d | WC-MISC | 1h | Day6 | WO6908139 | 50 | WCG-OTHER |
| 516 | 2.2.22.3 | Review drawings and asbuild for TA1 generator replacement |  | 20h | 2026-09-19 07:00 | 2026-09-20 17:00 | 514, 515 | 0.35d |  | WGP-ETP | 20h | Day7 | WO6908139 | 40 | W5E1 |
| 517 | 2.2.23 | Lagging Removal Complete | milestone | 0h | 2026-09-17 21:00 | 2026-09-17 21:00 | 441, 346, 360, 325, 278, 143, 157, 227, 161, 172, 407, 212 | 0.8d | 0d |  |  | Day5 |  |  |  |
| 518 | 2.2.24 | Boiler Maintenance Complete | milestone | 0h | 2026-09-23 11:00 | 2026-09-23 11:00 | 505, 459, 447, 439, 417, 405, 398, 390, 381, 328, 323, 285, 276, 271, 267, 264, 254, 236, 232, 225, 210, 186, 133, 343, 259, 454, 514, 516 | 0d |  |  |  | Day11 |  |  |  |
| 519 | 2.3 | **Boxup Boiler & Bring Back Online** |  | 0.45d | 2026-09-23 11:00 | 2026-09-23 20:00 |  | 0d |  |  | 24h | Day3 |  |  |  |
| 520 | 2.3.1 | Confirm all CSE's removed |  | 1h | 2026-09-23 11:00 | 2026-09-23 12:00 | 518 | 0d |  | WGP-PROD [200%] | 2h | Day11 | 6477046 | 501 | W5P1 |
| 521 | 2.3.2 | Close air path doors |  | 4h | 2026-09-23 12:00 | 2026-09-23 16:00 | 520 | 0d |  | WC-GENER [200%] | 8h | Day11 | 6477046 | 1001 | WCG-OTHER |
| 522 | 2.3.3 | Close gas path doors |  | 4h | 2026-09-23 16:00 | 2026-09-23 20:00 | 521 | 0d |  | WC-GENER [200%] | 8h | Day11 | 6477046 | 1001 | WCG-OTHER |
| 523 | 2.3.4 | Close steam drum doors |  | 1h | 2026-09-23 14:00 | 2026-09-23 15:00 | 155 | 0.1d | 0.05d | WC-GENER [200%] | 2h | Day11 | 6477046 | 1001 | WCG-OTHER |
| 524 | 2.3.5 | Close flash tank door |  | 1h | 2026-09-23 19:00 | 2026-09-23 20:00 | 311 | 0d |  | WC-GENER [200%] | 2h | Day11 | 6477046 | 1001 | WCG-OTHER |
| 525 | 2.3.6 | Close IBO door |  | 1h | 2026-09-23 19:00 | 2026-09-23 20:00 | 311 | 0d |  | WC-GENER [200%] | 2h | Day11 | 6477046 | 1001 | WCG-OTHER |
| 526 | 2.3.7 | All Doors Closed | milestone | 0h | 2026-09-23 20:00 | 2026-09-23 20:00 | 525, 524, 522, 523 | 0.05d | 0d |  |  | Day11 |  |  |  |

Notes:
- 497: Operation Description: Instrumentation route - Non BMS Pressure Transmitters
- 498: Operation Description: Instrumentation route - Non BMS Pressure Transmitters
- 499: Operation Description: Instrumentation route - Non BMS Pressure Transmitters
- 500: Operation Description: Instrumentation route - Non BMS Pressure Transmitters
- 501: Operation Description: Instrumentation route - Non BMS Pressure Transmitters
- 502: Operation Description: Instrumentation route - Non BMS Pressure Transmitters
- 503: Operation Description: Instrumentation route - Non BMS Pressure Transmitters
- 504: Operation Description: Instrumentation route - Non BMS Pressure Transmitters
- 507: Operation Description: REPLACE BOILER 1 EXHAUST GAS ECONOMISER EXIT TEMP (101TI22) TEMPERATURE TRANSMITTER
- 508: Operation Description: REPAIR STANDING ALARM BLR1O2 ANALYSER DIFF HIGH. O2 ANALYSER B HAS FAILED AND IS NOW READING HIGH 5.6
- 509: Operation Description: Tidy up existing thermocouple wiring
- 510: Operation Description: Erect scaff to access secondary gas analyser rosemount 1B02
- 511: Operation Description: Remove secondary gas analyser rosemount 1B02
- 514: Operation Description: NRG - Inspect TA1 CTs
- 515: Operation Description: Havcon to conduct 3D scan of TA1 electrical cabinets
- 516: Operation Description: Review drawings and asbuild for TA1 generator replacement
- 520: Operation Description: Confirm all CSE's Removed
- 521: Operation Description: SRG - CLOSE DOORS
- 522: Operation Description: SRG - CLOSE DOORS
- 523: Operation Description: SRG - CLOSE DOORS
- 524: Operation Description: SRG - CLOSE DOORS
- 525: Operation Description: SRG - CLOSE DOORS

| ID | WBS | Task | Type | Duration | Start | Finish | Predecessors | Total slack | Free slack | Calendar | Resources | Work | Day | Work Order No. | Operation No. | Assigned Department |
| --- | --- | --- | --- | --- | --- | --- | --- | --- | --- | --- | --- | --- | --- | --- | --- | --- |
| 527 | 2.4 | **Gas System Boxup** |  | 0.35d | 2026-09-23 12:00 | 2026-09-23 16:00 |  | 0d |  |  |  | 8h | Day3 |  |  |  |
| 528 | 2.4.1 | Remove blank and refit burner 1 gas spool |  | 0.5h | 2026-09-23 12:00 | 2026-09-23 12:30 | 520 | 0d |  |  | WGP-MTP [200%] | 1h | Day11 | 6477046 | 510 | W5M1 |
| 529 | 2.4.2 | Remove blank and refit burner 2 gas spool |  | 0.5h | 2026-09-23 12:30 | 2026-09-23 13:00 | 528 | 0d |  |  | WGP-MTP [200%] | 1h | Day11 | 6477046 | 510 | W5M1 |
| 530 | 2.4.3 | Remove blank and refit burner 3 gas spool |  | 0.5h | 2026-09-23 13:00 | 2026-09-23 13:30 | 529 | 0d |  |  | WGP-MTP [200%] | 1h | Day11 | 6477046 | 510 | W5M1 |
| 531 | 2.4.4 | Remove blank and refit burner 4 gas spool |  | 0.5h | 2026-09-23 13:30 | 2026-09-23 14:00 | 530 | 0d |  |  | WGP-MTP [200%] | 1h | Day11 | 6477046 | 510 | W5M1 |
| 532 | 2.4.5 | Remove blank and refit burner 5 gas spool |  | 0.5h | 2026-09-23 14:00 | 2026-09-23 14:30 | 531 | 0d |  |  | WGP-MTP [200%] | 1h | Day11 | 6477046 | 510 | W5M1 |
| 533 | 2.4.6 | Remove blank and refit burner 6 gas spool |  | 0.5h | 2026-09-23 14:30 | 2026-09-23 15:00 | 532 | 0d |  |  | WGP-MTP [200%] | 1h | Day11 | 6477046 | 510 | W5M1 |
| 534 | 2.4.7 | Swing Main and Pilot Gas System Blanks |  | 0.5h | 2026-09-23 15:00 | 2026-09-23 15:30 | 533 | 0d |  |  | WGP-MTP [200%] | 1h | Day11 | 6477046 | 510 | W5M1 |
| 535 | 2.4.8 | Deisolate main gas system |  | 0.5h | 2026-09-23 15:30 | 2026-09-23 16:00 | 534 | 0d |  |  | WGP-PROD [200%] | 1h | Day11 | 6477046 | 520 | W5P1 |
| 536 | 2.5 | **Balance FD Fan** | inactive | 0.2d | 2026-09-23 20:00 | 2026-09-24 09:30 |  | -0.2d | 0d |  |  | 13h |  |  |  |  |
| 537 | 2.5.1 | Amend tagging as required to allow test run and balance of FD fan | inactive | 1h | 2026-09-23 20:00 | 2026-09-23 21:00 | 526 | -0.2d | 0d |  | WGP-PROD [200%] | 2h | Day11 |  |  |  |
| 538 | 2.5.2 | Test Run FD fan Prior to boiler start up balancing | inactive | 2h | 2026-09-24 07:00 | 2026-09-24 09:00 | 537 | -0.1d | 0d | 10.3 CALENDAR | WGP-PROD [200%] | 4h | Day12 |  |  |  |
| 539 | 2.5.3 | Assist with FD fan balance | inactive | 2h | 2026-09-24 07:00 | 2026-09-24 09:00 | 537 | -0.15d | 0d |  | WGP-MTP [200%] | 4h | Day12 |  |  |  |
| 540 | 2.5.4 | Balance FD fan | inactive | 2h | 2026-09-24 07:00 | 2026-09-24 09:00 | 537 | -0.15d | 0d |  | WC-VIBE | 2h | Day12 |  |  |  |
| 541 | 2.5.5 | Coat weights after balancing fan | inactive | 0.5h | 2026-09-24 09:00 | 2026-09-24 09:30 | 540, 539 | -0.15d | 0d |  | WGP-MTP [200%] | 1h | Day12 |  |  |  |
| 542 | 2.5.6 | FD Fan Balancing Complete | milestone, inactive | 0h | 2026-09-24 09:30 | 2026-09-24 09:30 | 541, 538 | -0.15d | 0d |  |  |  | Day12 |  |  |  |
| 543 | 2.6 | Purge LPG System ready for start up |  | 2h | 2026-09-23 16:00 | 2026-09-24 08:00 | 535 | 0d |  | 10.3 CALENDAR |  |  | Day11 | 6477046 |  |  |
| 544 | 2.7 | Detag Boiler ready for FD fan balance, commissioning & start-up |  | 2h | 2026-09-24 08:00 | 2026-09-24 10:00 | 543, 526, 518, 542 | 0d |  |  | WGP-PROD [200%] | 4h | Day12 | 6477046 | 540 | W5P1 |
| 545 | 2.8 | **Commissioning** |  | 1.6d | 2026-09-24 07:00 | 2026-09-27 14:00 |  | 0.25d |  |  |  | 90h | Day3 |  |  |  |
| 546 | 2.8.1 | Calibrate O2 Analyser |  | 2h | 2026-09-24 07:00 | 2026-09-24 09:00 | 537 | 1.45d |  |  | WGP-ETP [200%] | 4h | Day12 | 6477046 | 550 | W5E1 |
| 547 | 2.8.2 | Boiler Commissioning |  | 48h | 2026-09-24 10:00 | 2026-09-26 10:00 | 544 | 0d |  |  | WGP-DELAY | 48h | Day12 | 6477046 |  |  |
| 548 | 2.8.3 | Boiler prestart commissioning checks as per CDS |  | 2h | 2026-09-26 10:00 | 2026-09-26 12:00 | 547 | 0d |  |  | WGP-PROD [200%] | 4h | Day14 | 6477046 | 560 | W5P1 |
| 549 | 2.8.4 | light up boiler as per CDS |  | 2h | 2026-09-26 12:00 | 2026-09-26 14:00 | 548 | 0d |  |  | WGP-PROD [200%] | 4h | Day14 | 6477046 | 560 | W5P1 |
| 550 | 2.8.5 | BMS Commissioning |  | 6h | 2026-09-26 14:00 | 2026-09-27 10:00 | 549 | 0d |  |  | WGP-ETP [200%] | 12h | Day14 | 6477046 | 570 | W5E1 |
| 551 | 2.8.6 | Thermal systems assist with BMS comissioning |  | 6h | 2026-09-26 14:00 | 2026-09-27 10:00 | 549 | 0d |  |  | WC-MISC | 6h | Day14 | 6477046 |  |  |
| 552 | 2.8.7 | Live steam lifts on flash tank safety valve |  | 4h | 2026-09-27 10:00 | 2026-09-27 14:00 | 551, 550 | 4d |  |  | WGP-PROD [200%] | 8h | Day15 | 6477046 | 580 | W5P1 |
| 553 | 2.8.8 | Conduct trevi testing on safety valves |  | 4h | 2026-09-27 10:00 | 2026-09-27 14:00 | 551, 550 | 0d |  | 24 Hours | WC-MISC | 4h | Day15 | 6477046 | 590 | WCG-OTHER |
| 554 | 2.9 | Boiler 2 Major Overhaul Complete | milestone | 0h | 2026-09-27 14:00 | 2026-09-27 14:00 | 553, 546 | 0d |  |  |  |  | Day15 |  |  |  |

Notes:
- 528: Operation Description: SWING GAS BLANKS & REFIT BURNER SPOOLS FOR BIC
- 529: Operation Description: SWING GAS BLANKS & REFIT BURNER SPOOLS FOR BIC
- 530: Operation Description: SWING GAS BLANKS & REFIT BURNER SPOOLS FOR BIC
- 531: Operation Description: SWING GAS BLANKS & REFIT BURNER SPOOLS FOR BIC
- 532: Operation Description: SWING GAS BLANKS & REFIT BURNER SPOOLS FOR BIC
- 533: Operation Description: SWING GAS BLANKS & REFIT BURNER SPOOLS FOR BIC
- 534: Operation Description: SWING GAS BLANKS & REFIT BURNER SPOOLS FOR BIC
- 535: Operation Description: Deisolate main gas system
- 536: FD fan balance removed from scope
- 543: Operation Description: Purge LPG System ready for start up
- 544: Operation Description: Detag Boiler ready for FD fan balance, commissioning & start-up
- 546: Operation Description: Calibrate O2 Analyser
- 548: Operation Description: COMMENCE BOILER START UP PROCEDURE
- 549: Operation Description: COMMENCE BOILER START UP PROCEDURE
- 550: Operation Description: BMS COMISSIONING
- 552: Operation Description: Live steam lifts on flash tank safety valve
- 553: Update Calendar / Operation Description: Conduct trevi testing on safety valves

| ID | WBS | Task | Duration | Start | Finish | Predecessors | Total slack | Resources | Work | Day | Work Order No. | Operation No. | Operation Description | Assigned Department |
| --- | --- | --- | --- | --- | --- | --- | --- | --- | --- | --- | --- | --- | --- | --- |
| 555 | 3 | **Post work** | 4d | 2026-09-27 14:00 | 2026-10-03 20:00 |  | 0d |  | 454h | Day2 |  |  |  |  |
| 556 | 3.1 | Dismantle all boiler 1 MOH scaffold | 150h | 2026-09-27 14:00 | 2026-10-03 20:00 | 554 | 0d | WC-GENER [200%] | 300h | Day15 | WO6927382 | 10 | Dismantle all boiler 1 MOH scaffold | WCG-OTHER |
| 557 | 3.2 | Cleanup and dispose of any left over lagging materials | 20h | 2026-09-27 14:00 | 2026-09-28 10:00 | 554 | 3.75d | WC-GENER [200%] | 40h | Day15 | WO6927382 | 20 | Cleanup and dispose of any left over lagging materials | WCG-OTHER |
| 558 | 3.3 | Powerhouse housekeeping after boiler 1 MOH | 20h | 2026-09-27 14:00 | 2026-09-29 14:00 | 554 | 2.55d | WGP-MTP [200%] | 40h | Day15 | WO6927382 | 30 | Powerhouse housekeeping after boiler 1 MOH | W5M1 |
| 559 | 3.4 | Powerhouse housekeeping after boiler 1 MOH | 10h | 2026-09-27 14:00 | 2026-09-28 14:00 | 554 | 3.35d | WGP-ETP | 10h | Day15 | WO6927382 | 40 | Powerhouse housekeeping after boiler 1 MOH | W5E1 |
| 560 | 3.5 | Powerhouse housekeeping after boiler 1 MOH | 20h | 2026-09-27 14:00 | 2026-09-28 10:00 | 554 | 3.75d | WGP-PROD [200%] | 40h | Day15 | WO6927382 | 50 | Powerhouse housekeeping after boiler 1 MOH | W5P1 |
| 561 | 3.6 | **TA1** | 0.65d | 2026-09-27 14:00 | 2026-09-28 14:00 |  | 3.35d |  | 24h | Day2 |  |  |  |  |
| 562 | 3.6.1 | Bring TA1 BIC | 24h | 2026-09-27 14:00 | 2026-09-28 14:00 | 554 | 3.35d | WGP-PROD | 24h | Day15 | WO6908139 | 100 | Bring TA1 BIC | W5P1 |
