# boiler-candidate-task43-complete - Project Save

Schedule from MS Project XML, 2026-08-17 to 2026-09-24, status date 2026-08-28, A marks actual dates.

## Calendars

- Standard: Mon-Fri 07:30-15:30; Sat-Sun off.
- 24 Hours: Mon-Sun 00:00-00:00.
- 10.3 CALENDAR: Mon-Sun 07:00-17:00.

## Resources

| Resource | Group |
| --- | --- |
| WGP-PROD | W5P1 |
| WC-MISC | WCG-OTHER |
| WGP-ETP | W5E1 |
| WC-SCAF | WCG-UGL |
| WC-VIBE | WCG-ALS |
| WC-ELECT | WCG-UGL |
| WGP-MTP | W5M1 |
| WC-SNDBST | WCG-SRG |
| WC-NDT | WCG-ALS |
| WC-MECH | WCG-UGL |
| WC-OPER | WCG-VEOLIA |
| WC-VACTRK | WCG-VEOLIA |
| WC-INSP | WCG-ALS |
| WGP-GL | W5P1 |
| WGP-DELAY | W5M1 |
| WGP-ENG | W5M1 |
| WC-CRN25 | WCG-FREO |
| WC-HP55M | WCG-VEOLIA |
| WGP-DRONE | W7D1 |
| WC-CPINSP | WCS-ALS |
| WC-ALIGN | WCT-ALS |
| WC-CRN60 | WCG-GCS |
| WC-CRN20 | WCG-GCS |
| WC-LAGG | WCG-SRG |
| WC-CRN95 | WCG-GCS |
| WC-CRN80 |  |
| WC-LPW | WCG-VEOLIA |
| WESTARC |  |
| METALLURGICAL |  |
| WESTARC |  |
| WC-CRN100 | WCG-GCS |

## Schedule

| ID | WBS | Task | Type | Duration | Start | Finish | Predecessors | Complete | Remaining | Total slack | Calendar | Resources | Work | Actual work | Day | Work Order No. | Operation No. | Operation Description | Assigned Department |
| --- | --- | --- | --- | --- | --- | --- | --- | --- | --- | --- | --- | --- | --- | --- | --- | --- | --- | --- | --- |
| 1 | 1 | **Pre-Work** |  | 78.44d | 2026-08-17 07:00 A | 2026-09-12 10:30 |  | 67% | 25.88d | 37.31d |  |  | 587h | 405.6h | Day4 |  |  |  |  |
| 2 | 1.1 | **Scaffold** |  | 69.75d | 2026-08-17 07:30 A | 2026-09-09 13:30 A |  | 100% |  |  |  |  | 284h | 284h | Day4 |  |  |  |  |
| 3 | 1.1.1 | Conduct all pre-work scaffold lifts |  | 8h | 2026-08-17 07:30 A | 2026-08-17 15:30 A | 68FS-28ed | 100% |  |  | Standard | WC-SCAF [200%] | 16h | 16h |  | WO6899500 | 10 | Boiler 1 MOH scaffold pre-work | WCG-UGL |
| 4 | 1.1.2 | Scaffold access to Feedwater flow element (1.3) |  | 4h | 2026-08-18 07:30 A | 2026-08-18 11:30 A | 3 | 100% |  |  | Standard | WC-SCAF [200%] | 8h | 8h |  | WO6899500 | 10 | Boiler 1 MOH scaffold pre-work | WCG-UGL |
| 5 | 1.1.3 | Scaffold access to Feedwater isolating valve and NRV, 4-way pipe support (1.4 & 1.5) |  | 8h | 2026-08-18 11:30 A | 2026-08-19 11:30 A | 4 | 100% |  |  | Standard | WC-SCAF [200%] | 16h | 16h |  | WO6899500 | 10 | Boiler 1 MOH scaffold pre-work | WCG-UGL |
| 6 | 1.1.4 | Scaffold access to Steam drum & Steam drum safety valves (2.1 & 2.3.6-10) |  | 12h | 2026-08-19 11:30 A | 2026-08-20 15:30 A | 5 | 100% |  |  | Standard | WC-SCAF [200%] | 24h | 24h |  | WO6899500 | 10 | Boiler 1 MOH scaffold pre-work | WCG-UGL |
| 7 | 1.1.5 | Scaffold access to Attemperator inspection ports (3.2.4) |  | 6h | 2026-08-21 07:30 A | 2026-08-21 13:30 A | 6 | 100% |  |  | Standard | WC-SCAF [200%] | 12h | 12h |  | WO6899500 | 10 | Boiler 1 MOH scaffold pre-work | WCG-UGL |
| 8 | 1.1.6 | Scaffold access to Attemperator Externals (3.3) |  | 8h | 2026-08-21 13:30 A | 2026-08-24 13:30 A | 7 | 100% |  |  | Standard | WC-SCAF [200%] | 16h | 16h |  | WO6899500 | 10 | Boiler 1 MOH scaffold pre-work | WCG-UGL |
| 9 | 1.1.7 | Scaffold access to secondary superheater outlet header (5.1.1-2) |  | 8h | 2026-08-24 13:30 A | 2026-08-25 13:30 A | 8 | 100% |  |  | Standard | WC-SCAF [200%] | 16h | 16h |  | WO6899500 | 10 | Boiler 1 MOH scaffold pre-work | WCG-UGL |
| 10 | 1.1.8 | Scaffold access to Furnace door #4 (8.1.2) |  | 2h | 2026-08-25 13:30 A | 2026-08-25 15:30 A | 9 | 100% |  |  | Standard | WC-SCAF [200%] | 4h | 4h |  | WO6899500 | 10 | Boiler 1 MOH scaffold pre-work | WCG-UGL |
| 11 | 1.1.9 | Scaffold barricade & ladder access to Economsier & RAH (9.1.3 & 13.1.6) |  | 2h | 2026-08-26 07:30 A | 2026-08-26 09:30 A | 10 | 100% |  |  | Standard | WC-SCAF [200%] | 4h | 4h |  | WO6899500 | 10 | Boiler 1 MOH scaffold pre-work | WCG-UGL |
| 12 | 1.1.10 | Scaffold access to HS piping (10.1.6 & 10.2.7-8) |  | 16h | 2026-08-26 09:30 A | 2026-08-28 09:30 A | 11 | 100% |  |  | Standard | WC-SCAF [200%] | 32h | 32h |  | WO6899500 | 10 | Boiler 1 MOH scaffold pre-work | WCG-UGL |
| 13 | 1.1.11 | Scaffold to access Flash tank & Flash tank safety valve (11.1.2 & 11.2.6) |  | 6h | 2026-08-28 09:30 A | 2026-08-28 15:30 A | 12 | 100% |  |  | Standard | WC-SCAF [200%] | 12h | 12h |  | WO6899500 | 10 | Boiler 1 MOH scaffold pre-work | WCG-UGL |
| 14 | 1.1.12 | Scaffold access to FD fan door #3 (12.1.2) |  | 1h | 2026-08-31 07:30 A | 2026-08-31 08:30 A | 13 | 100% |  |  | Standard | WC-SCAF [200%] | 2h | 2h |  | WO6899500 | 10 | Boiler 1 MOH scaffold pre-work | WCG-UGL |
| 15 | 1.1.13 | Scaffold access to FD fan outlet ducting door #14 & #15 (12.1.3) |  | 4h | 2026-08-31 08:30 A | 2026-08-31 12:30 A | 14 | 100% |  |  | Standard | WC-SCAF [200%] | 8h | 8h |  | WO6899500 | 10 | Boiler 1 MOH scaffold pre-work | WCG-UGL |
| 16 | 1.1.14 | Scaffold access to FD fan expansion joint (12.2.7) |  | 4h | 2026-08-31 12:30 A | 2026-09-01 08:30 A | 15 | 100% |  |  | Standard | WC-SCAF [200%] | 8h | 8h |  | WO6899500 | 10 | Boiler 1 MOH scaffold pre-work | WCG-UGL |
| 17 | 1.1.15 | Scaffold access to Rotary air heater door #2 (13.1.4) |  | 1h | 2026-09-01 08:30 A | 2026-09-01 09:30 A | 16 | 100% |  |  | Standard | WC-SCAF [200%] | 2h | 2h |  | WO6899500 | 10 | Boiler 1 MOH scaffold pre-work | WCG-UGL |
| 18 | 1.1.16 | Scaffold handrail at Rotary air heater door #5 (13.1.7) |  | 1h | 2026-09-01 09:30 A | 2026-09-01 10:30 A | 17 | 100% |  |  | Standard | WC-SCAF [200%] | 2h | 2h |  | WO6899500 | 10 | Boiler 1 MOH scaffold pre-work | WCG-UGL |
| 19 | 1.1.17 | Scaffold access to Rotary air heater hot & cold end bearings (13.1.8-9) |  | 6h | 2026-09-01 10:30 A | 2026-09-02 08:30 A | 18 | 100% |  |  | Standard | WC-SCAF [200%] | 12h | 12h |  | WO6899500 | 10 | Boiler 1 MOH scaffold pre-work | WCG-UGL |
| 20 | 1.1.18 | Scaffold to access Rotary air heater for installation of anti-rotation device (13.3.7) |  | 4h | 2026-09-02 08:30 A | 2026-09-02 12:30 A | 19 | 100% |  |  | Standard | WC-SCAF [200%] | 8h | 8h |  | WO6899500 | 10 | Boiler 1 MOH scaffold pre-work | WCG-UGL |
| 21 | 1.1.19 | Scaffold to access Rotary air heater expansion joints x3 (13.4.4) |  | 8h | 2026-09-02 12:30 A | 2026-09-03 12:30 A | 20 | 100% |  |  | Standard | WC-SCAF [200%] | 16h | 16h |  | WO6899500 | 10 | Boiler 1 MOH scaffold pre-work | WCG-UGL |
| 22 | 1.1.20 | Scaffold access to Windbox door #1 (14.1.4) |  | 1h | 2026-09-03 12:30 A | 2026-09-03 13:30 A | 21 | 100% |  |  | Standard | WC-SCAF [200%] | 2h | 2h |  | WO6899500 | 10 | Boiler 1 MOH scaffold pre-work | WCG-UGL |
| 23 | 1.1.21 | Scaffold access to Continuous blowdown valve and enclosure rear wall drain lines (15.2.1) |  | 6h | 2026-09-03 13:30 A | 2026-09-04 11:30 A | 22 | 100% |  |  | Standard | WC-SCAF [200%] | 12h | 12h |  | WO6899500 | 10 | Boiler 1 MOH scaffold pre-work | WCG-UGL |
| 24 | 1.1.22 | Scaffold access to Final drains (15.2.2) |  | 6h | 2026-09-04 11:30 A | 2026-09-07 09:30 A | 23 | 100% |  |  | Standard | WC-SCAF [200%] | 12h | 12h |  | WO6899500 | 10 | Boiler 1 MOH scaffold pre-work | WCG-UGL |
| 25 | 1.1.23 | Scaffold access to HS drains (15.2.3) |  | 6h | 2026-09-07 09:30 A | 2026-09-07 15:30 A | 24 | 100% |  |  | Standard | WC-SCAF [200%] | 12h | 12h |  | WO6899500 | 10 | Boiler 1 MOH scaffold pre-work | WCG-UGL |
| 26 | 1.1.24 | Erect 1m mobile scaffold for misc drains access (15.3.1) |  | 2h | 2026-09-08 07:30 A | 2026-09-08 09:30 A | 25 | 100% |  |  | Standard | WC-SCAF [200%] | 4h | 4h |  | WO6899500 | 10 | Boiler 1 MOH scaffold pre-work | WCG-UGL |
| 27 | 1.1.25 | Scaffold access to Continuous blowdown & downcomer base plate (15.3.2 & 16.1.2) |  | 2h | 2026-09-08 09:30 A | 2026-09-08 11:30 A | 26 | 100% |  |  | Standard | WC-SCAF [200%] | 4h | 4h |  | WO6899500 | 10 | Boiler 1 MOH scaffold pre-work | WCG-UGL |
| 28 | 1.1.26 | Scaffold access to Attemperator return line 4-way pipe support (16.1.1) |  | 4h | 2026-09-08 11:30 A | 2026-09-08 15:30 A | 27 | 100% |  |  | Standard | WC-SCAF [200%] | 8h | 8h |  | WO6899500 | 10 | Boiler 1 MOH scaffold pre-work | WCG-UGL |
| 29 | 1.1.27 | Erect 1m mobile scaffold to access top of MCC panel (18.1) |  | 2h | 2026-09-09 07:30 A | 2026-09-09 09:30 A | 28 | 100% |  |  | Standard | WC-SCAF [200%] | 4h | 4h |  | WO6899500 | 10 | Boiler 1 MOH scaffold pre-work | WCG-UGL |
| 30 | 1.1.28 | Scaffold access to HS header vertical elbow (19.1.4) |  | 2h | 2026-09-09 09:30 A | 2026-09-09 11:30 A | 29 | 100% |  |  | Standard | WC-SCAF [200%] | 4h | 4h |  | WO6899500 | 10 | Boiler 1 MOH scaffold pre-work | WCG-UGL |
| 31 | 1.1.29 | Erect scaffold below steam drum safety valve platform prior to grid mesh removal |  | 2h | 2026-09-09 11:30 A | 2026-09-09 13:30 A | 30 | 100% |  |  |  | WC-SCAF [200%] | 4h | 4h |  | WO6899500 | 10 | Boiler 1 MOH scaffold pre-work | WCG-UGL |
| 32 | 1.1.30 | Pre-Work Scaffold Complete | milestone | 0h | 2026-09-09 13:30 A | 2026-09-09 13:30 A | 31 | 100% |  |  |  |  |  |  |  |  |  |  |  |

| ID | WBS | Task | Type | Duration | Start | Finish | Predecessors | Complete | Remaining | Total slack | Free slack | Calendar | Resources | Work | Actual work | Day | Work Order No. | Operation No. | Assigned Department |
| --- | --- | --- | --- | --- | --- | --- | --- | --- | --- | --- | --- | --- | --- | --- | --- | --- | --- | --- | --- |
| 33 | 1.2 | **Online Lagging Removal** |  | 55d | 2026-08-24 07:30 A | 2026-09-11 15:30 |  | 36% | 35.22d | 39.69d |  |  |  | 188h | 67.6h | Day4 |  |  |  |
| 34 | 1.2.1 | Strip lagging on Feedwater station piping and valves (1.2.2) |  | 12h | 2026-08-24 07:30 A | 2026-08-25 11:30 A | 68FS-21ed | 100% |  |  |  | Standard | WC-LAGG [200%] | 24h | 24h |  | WO6899500 | 20 | WCG-SRG |
| 35 | 1.2.2 | Strip lagging on Feedwater flow element nozzles (1.3.3) |  | 4h | 2026-08-25 11:30 A | 2026-08-25 15:30 A | 4, 34 | 100% |  |  |  | Standard | WC-LAGG [200%] | 8h | 8h |  | WO6899500 | 20 | WCG-SRG |
| 36 | 1.2.3 | Strip lagging on Feedwater isolating valve and NRV (1.4.3) |  | 6h | 2026-08-26 07:30 A | 2026-08-26 13:30 A | 5, 35 | 100% |  |  |  | Standard | WC-LAGG [200%] | 12h | 12h |  | WO6899500 | 20 | WCG-SRG |
| 37 | 1.2.4 | Strip lagging on Feedwater 4-way sliding support (1.5.3) |  | 4h | 2026-08-26 13:30 A | 2026-08-27 09:30 A | 36 | 100% |  |  |  | Standard | WC-LAGG [200%] | 8h | 8h |  | WO6899500 | 20 | WCG-SRG |
| 38 | 1.2.5 | Strip lagging on Steam drum doors (2.1.6-7) |  | 4h | 2026-08-27 09:30 A | 2026-08-27 13:30 | 6, 37 | 50% | 2h | 1.88d | 1.25d | Standard | WC-LAGG [200%] | 8h | 4h |  | WO6899500 | 20 | WCG-SRG |
| 39 | 1.2.6 | Strip lagging on Flash tank (11.2) |  | 20h | 2026-08-31 07:30 A | 2026-09-02 11:30 | 13, 38 | 25% | 15h | 0.1d | 0d | Standard | WC-LAGG [200%] | 40h | 10h |  | WO6899500 | 20 | WCG-SRG |
| 40 | 1.2.7 | Strip lagging on Blowdown vessel (11.3.1) |  | 4h | 2026-09-02 11:30 A | 2026-09-02 15:30 | 39 | 20% | 3.2h | 11d | 0d | Standard | WC-LAGG [200%] | 8h | 1.6h |  | WO6899500 | 20 | WCG-SRG |
| 41 | 1.2.8 | Strip lagging on FD fan and ducting (12.1.6) |  | 8h | 2026-09-03 07:30 | 2026-09-03 15:30 | 16, 40 |  |  | 11d | 2d | Standard | WC-LAGG [200%] | 16h |  |  | WO6899500 | 20 | WCG-SRG |
| 42 | 1.2.9 | Strip lagging on above ground level drains and blowdown systems (15.2.2-8) |  | 16h | 2026-09-08 07:30 | 2026-09-09 15:30 | 25, 41 |  |  | 9d | 0d | Standard | WC-LAGG [200%] | 32h |  |  | WO6899500 | 20 | WCG-SRG |
| 43 | 1.2.10 | Strip lagging on ground level drains and blowdown system (15.3.3-5) |  | 12h | 2026-09-10 07:30 | 2026-09-11 11:30 | 42 |  |  | 9d | 0d | Standard | WC-LAGG [200%] | 24h |  |  | WO6899500 | 20 | WCG-SRG |
| 44 | 1.2.11 | Strip lagging on Downcomer base plate (16.1.4) |  | 4h | 2026-09-11 11:30 | 2026-09-11 15:30 | 43 |  |  | 9d | 0d | Standard | WC-LAGG [200%] | 8h |  |  | WO6899500 | 20 | WCG-SRG |
| 45 | 1.2.12 | Online Lagging Removal Complete | milestone | 0h | 2026-09-11 15:30 | 2026-09-11 15:30 | 44, 35, 37, 38, 41, 40 |  |  | 39.69d | 2.38d |  |  |  |  |  |  |  |  |
| 46 | 1.3 | **Shutdown TA1** |  | 5.5d | 2026-09-07 20:00 | 2026-09-09 16:00 |  |  |  | 45.12d |  |  |  | 48h |  | Day2 |  |  |  |
| 47 | 1.3.1 | Shutdown TA1 in preperation for Boiler 1 MOH |  | 40h | 2026-09-07 20:00 | 2026-09-09 12:00 | 68FS-6ed |  |  | 45.12d | 0d |  | WGP-PROD | 40h |  |  |  |  |  |
| 48 | 1.3.2 | Raise TA1 HV permit |  | 4h | 2026-09-09 12:00 | 2026-09-09 16:00 | 47 |  |  | 45.12d | 8.31d |  | WGP-ETP [200%] | 8h |  |  |  |  |  |
| 49 | 1.4 | **Starter Maintenance - Pre-work** |  | 0.44d | 2026-09-12 07:00 | 2026-09-12 10:30 |  |  |  | 36.81d |  |  |  | 7h |  | Day2 |  |  |  |
| 50 | 1.4.1 | PDMAIN34 - LV STARTER (POWERHOUSE) MAINTENANCE - STARTER-WG110-ICF101 |  | 0.5h | 2026-09-12 07:00 | 2026-09-12 07:30 | 68FS-2ed |  |  | 36.81d | 0d |  | WGP-ETP [200%] | 1h |  |  | 6856614 | 30 | W5E1 |
| 51 | 1.4.2 | PDMAIN34 - LV STARTER (POWERHOUSE) MAINTENANCE - STARTER-WG110-ICF102 |  | 0.5h | 2026-09-12 07:30 | 2026-09-12 08:00 | 50 |  |  | 36.81d | 0d |  | WGP-ETP [200%] | 1h |  |  | 6860881 | 30 | W5E1 |
| 52 | 1.4.3 | PDMAIN34 - LV STARTER (POWERHOUSE) MAINTENANCE - STARTER-WG110-101BD05 |  | 0.5h | 2026-09-12 08:00 | 2026-09-12 08:30 | 51 |  |  | 36.81d | 0d |  | WGP-ETP [200%] | 1h |  |  | 6860933 | 30 | W5E1 |
| 53 | 1.4.4 | PDMAIN34 - LV STARTER (POWERHOUSE) MAINTENANCE - STARTER-WG110-SAS202 |  | 0.5h | 2026-09-12 08:30 | 2026-09-12 09:00 | 52 |  |  | 36.81d | 0d |  | WGP-ETP [200%] | 1h |  |  | 6860904 | 30 | W5E1 |
| 54 | 1.4.5 | PDMAIN34 - LV STARTER (POWERHOUSE) MAINTENANCE - STARTER-WG110-101SH10 |  | 0.5h | 2026-09-12 09:00 | 2026-09-12 09:30 | 53 |  |  | 36.81d | 0d |  | WGP-ETP [200%] | 1h |  |  | 6860932 | 30 | W5E1 |
| 55 | 1.4.6 | PDMAIN34 - LV STARTER (POWERHOUSE) MAINTENANCE - STARTER-WG110-101LEV04 |  | 0.5h | 2026-09-12 09:30 | 2026-09-12 10:00 | 54 |  |  | 36.81d | 0d |  | WGP-ETP [200%] | 1h |  |  | 6860939 | 30 | W5E1 |
| 56 | 1.4.7 | PDMAIN34 - LV STARTER (POWERHOUSE) MAINTENANCE - STARTER-WG110-101LEV05 |  | 0.5h | 2026-09-12 10:00 | 2026-09-12 10:30 | 55 |  |  | 36.81d | 0d |  | WGP-ETP [200%] | 1h |  |  | 6860941 | 30 | W5E1 |
| 57 | 1.5 | 80T Crane to assist with pre-work scaffold lifts |  | 48h | 2026-08-17 07:00 A | 2026-08-21 15:00 A | 68FS-28ed | 100% |  |  |  |  | WC-CRN80 | 48h | 48h |  | WO6899500 | 30 | WCG-GCS |
| 58 | 1.6 | Cleanaway to deliver 1x general waste & 1x Lagging bin |  | 1h | 2026-09-07 07:30 | 2026-09-07 08:30 | 68FS-7ed |  |  | 52.56d | 15.25d |  |  |  |  |  |  |  |  |
| 59 | 1.7 | Remove gridmesh to allow steam drum safety valve removal |  | 3h | 2026-08-20 15:30 A | 2026-08-21 08:30 A | 6 | 100% |  |  |  |  | WGP-MTP [200%] | 6h | 6h |  | WO6899500 | 40 | W5M1 |
| 60 | 1.8 | Remove RAH gridmesh to allow access for installation of anit-rotation device |  | 3h | 2026-09-02 12:30 | 2026-09-02 15:30 | 20 |  |  | 66.19d | 29.38d |  | WGP-MTP [200%] | 6h |  |  | WO6899500 | 50 | W5M1 |
| 61 | 1.9 | Pre-work Complete | milestone | 0h | 2026-09-12 10:30 | 2026-09-12 10:30 | 32, 45, 57, 58, 59, 60, 48, 56 |  |  | 37.31d |  |  |  |  |  |  |  |  |  |

Notes:
- 34: Operation Description: Boiler 1 MOH lagging pre-work
- 35: Operation Description: Boiler 1 MOH lagging pre-work
- 36: Operation Description: Boiler 1 MOH lagging pre-work
- 37: Operation Description: Boiler 1 MOH lagging pre-work
- 38: Operation Description: Boiler 1 MOH lagging pre-work
- 39: Operation Description: Boiler 1 MOH lagging pre-work
- 40: Operation Description: Boiler 1 MOH lagging pre-work
- 41: Operation Description: Boiler 1 MOH lagging pre-work
- 42: Operation Description: Boiler 1 MOH lagging pre-work
- 43: Operation Description: Boiler 1 MOH lagging pre-work
- 44: Operation Description: Boiler 1 MOH lagging pre-work
- 50: Operation Description: LV STARTER MAJOR MAINTENANCE
- 51: Operation Description: LV STARTER MAJOR MAINTENANCE
- 52: Operation Description: LV STARTER MAJOR MAINTENANCE
- 53: Operation Description: LV STARTER MAJOR MAINTENANCE
- 54: Operation Description: LV STARTER MAJOR MAINTENANCE
- 55: Operation Description: LV STARTER MAJOR MAINTENANCE
- 56: Operation Description: LV STARTER MAJOR MAINTENANCE
- 57: Operation Description: Conduct all pre-work scaffold lifts
- 59: Operation Description: Remove gridmesh to allow steam drum safety valve removal
- 60: Operation Description: Remove RAH gridmesh to allow access for installation of anit-rotation device

| ID | WBS | Task | Type | Duration | Start | Finish | Predecessors | Total slack | Free slack | Calendar | Resources | Work | Day | Work Order No. | Operation No. | Operation Description | Assigned Department |
| --- | --- | --- | --- | --- | --- | --- | --- | --- | --- | --- | --- | --- | --- | --- | --- | --- | --- |
| 62 | 2 | **Boiler Offline** |  | 33.25d | 2026-09-13 19:00 | 2026-09-24 21:00 |  | 0d |  | 24 Hours |  | 2732h | Day4 |  |  |  |  |
| 63 | 2.1 | **Shutdown & Isolations** |  | 29.75d | 2026-09-13 19:00 | 2026-09-23 17:00 |  | 0.38d |  |  |  | 228h | Day4 |  |  |  |  |
| 64 | 2.1.1 | **ADMIN ONLY** |  | 29.75d | 2026-09-13 19:00 | 2026-09-23 17:00 |  | 3.5d |  |  |  | 101h | Day3 |  |  |  |  |
| 65 | 2.1.1.1 | ADMIN ONLY - PARTS OPERATION - BOILER 1 MAJOR OVERHAUL |  | 1h | 2026-09-13 19:00 | 2026-09-13 20:00 |  | 33.12d |  |  | WGP-DELAY | 1h |  | 6577046 | 10 | PARTS OPERATION BOILER 1 MAJOR OVERHAUL | W5M1 |
| 66 | 2.1.1.2 | 100T crane for boiler 1 major overhaul |  | 100h | 2026-09-14 07:00 | 2026-09-23 17:00 |  | 3d |  |  | WC-CRN100 | 100h |  | 6577046 | 1050 | 100T crane for boiler 1 major overhaul | WCG-GCS |
| 67 | 2.1.2 | **Shutdown Boiler** |  | 2.25d | 2026-09-13 19:00 | 2026-09-14 13:00 |  | 0.38d |  |  |  | 33h | Day4 |  |  |  |  |
| 68 | 2.1.2.1 | Shutdown Boiler |  | 1h | 2026-09-13 19:00 | 2026-09-13 20:00 |  | 10.25d | 0d |  | WGP-PROD | 1h |  | 6577046 |  |  |  |
| 69 | 2.1.2.2 | Boiler Cooldown - Observe pressure drops and temps. Do not exceed 2° per min - AUACDS-21393 |  | 18h | 2026-09-13 19:00 | 2026-09-14 13:00 |  | 0.38d | 0d |  | WGP-PROD | 18h |  | 6577046 |  |  |  |
| 70 | 2.1.2.3 | Run FD fan to assist with cooldown |  | 14h | 2026-09-13 19:00 | 2026-09-14 09:00 |  | 9.38d | 0d |  | WGP-PROD | 14h |  | 6577046 |  |  |  |
| 71 | 2.1.3 | **Electrical Isolations** |  | 1.88d | 2026-09-13 20:00 | 2026-09-14 11:00 |  | 11d |  |  |  | 11h | Day4 |  |  |  |  |
| 72 | 2.1.3.1 | Confirm zero energy on the Main Steam Stop, Main Steam Stop Bypass, and HS Header Rotorks - Shift EI |  | 2h | 2026-09-13 20:00 | 2026-09-13 22:00 | 68 | 13.62d | 1.62d | 24 Hours | WGP-ETP | 2h |  | 6577046 |  |  |  |
| 73 | 2.1.3.2 | Rack out FD fan |  | 1h | 2026-09-14 09:00 | 2026-09-14 10:00 | 70 | 9.38d | 0d |  | WGP-ETP [200%] | 2h |  |  |  |  |  |
| 74 | 2.1.3.3 | Isolate 415v MCC board |  | 2h | 2026-09-14 07:00 | 2026-09-14 09:00 | 68 | 12d | 0d |  | WGP-ETP [200%] | 4h |  |  |  |  |  |
| 75 | 2.1.3.4 | Isolate oxygen analyser power supplies |  | 0.5h | 2026-09-14 09:00 | 2026-09-14 09:30 | 74 | 12d | 0d |  | WGP-ETP | 0.5h |  |  |  |  |  |
| 76 | 2.1.3.5 | Isolate & disconnect Igniters for CSE |  | 1h | 2026-09-14 09:30 | 2026-09-14 10:30 | 75 | 12d | 0d |  | WGP-ETP [200%] | 2h |  |  |  |  |  |
| 77 | 2.1.3.6 | Isolate attemperator power supply |  | 0.5h | 2026-09-14 10:30 | 2026-09-14 11:00 | 76 | 12d | 0d |  | WGP-ETP | 0.5h |  |  |  |  |  |
| 78 | 2.1.3.7 | Electrical Isolations Complete | milestone | 0h | 2026-09-14 11:00 | 2026-09-14 11:00 | 72, 77, 74 | 12d | 1.25d |  |  |  |  |  |  |  |  |
| 79 | 2.1.4 | **Gas Purge, Pressure Test & Isolation** |  | 2.25d | 2026-09-13 20:00 | 2026-09-14 14:00 |  | 10.25d |  |  |  | 21h | Day4 |  |  |  |  |
| 80 | 2.1.4.1 | Isolate & tag for gas purge & pressure test |  | 4h | 2026-09-13 20:00 | 2026-09-14 00:00 | 68 | 10.25d | 0.88d |  | WGP-PROD | 4h |  | 6577046 |  |  |  |
| 81 | 2.1.4.2 | Connect nitrogen & set up for purge and pressure test |  | 1h | 2026-09-14 07:00 | 2026-09-14 08:00 | 80 | 9.38d | 0d |  | WGP-ETP | 1h |  | 6577046 |  |  |  |
| 82 | 2.1.4.3 | Purge natural gas system - Thermal Systems |  | 1h | 2026-09-14 08:00 | 2026-09-14 09:00 | 81 | 9.38d | 0d |  | WC-MISC | 1h |  | 6577046 |  |  |  |
| 83 | 2.1.4.4 | Purge LPG gas system - Thermal Systems |  | 1h | 2026-09-14 09:00 | 2026-09-14 10:00 | 82 | 9.38d | 0d |  | WC-MISC | 1h |  | 6577046 |  |  |  |
| 84 | 2.1.4.5 | Conduct gas system pressure test - Thermal Systems |  | 2h | 2026-09-14 07:00 | 2026-09-14 09:00 | 80 | 9.5d | 0.12d |  | WC-MISC | 2h |  | 6577046 |  |  |  |
| 85 | 2.1.4.6 | Assist with purge and pressure test |  | 2h | 2026-09-14 08:00 | 2026-09-14 10:00 | 81 | 9.38d | 0d |  | WGP-ETP | 2h |  | 6577046 |  |  |  |
| 86 | 2.1.4.7 | Amend gas system isolation & tag for blank swing |  | 1h | 2026-09-14 10:00 | 2026-09-14 11:00 | 83, 84, 85, 73 | 9.38d | 0d |  | WGP-PROD | 1h |  | 6577046 |  |  |  |
| 87 | 2.1.4.8 | Swing Main and Pilot Gas System Blanks |  | 0.5h | 2026-09-14 11:00 | 2026-09-14 11:30 | 86 | 9.56d | 0d |  | WGP-MTP [200%] | 1h |  | 6577046 |  |  |  |
| 88 | 2.1.4.9 | Disconnect LPG gas hoses |  | 1h | 2026-09-14 11:30 | 2026-09-14 12:30 | 87 | 9.56d | 0.19d |  | WGP-MTP [200%] | 2h |  | 6577046 |  |  |  |
| 89 | 2.1.4.10 | Remove burner 1 gas spool and blank for CSE |  | 0.5h | 2026-09-14 11:00 | 2026-09-14 11:30 | 86 | 9.38d | 0d |  | WGP-MTP [200%] | 1h |  | 6577046 |  |  |  |
| 90 | 2.1.4.11 | Remove burner 2 gas spool and blank for CSE |  | 0.5h | 2026-09-14 11:30 | 2026-09-14 12:00 | 89 | 9.38d | 0d |  | WGP-MTP [200%] | 1h |  | 6577046 |  |  |  |
| 91 | 2.1.4.12 | Remove burner 3 gas spool and blank for CSE |  | 0.5h | 2026-09-14 12:00 | 2026-09-14 12:30 | 90 | 9.38d | 0d |  | WGP-MTP [200%] | 1h |  | 6577046 |  |  |  |
| 92 | 2.1.4.13 | Remove burner 4 gas spool and blank for CSE |  | 0.5h | 2026-09-14 12:30 | 2026-09-14 13:00 | 91 | 9.38d | 0d |  | WGP-MTP [200%] | 1h |  | 6577046 |  |  |  |
| 93 | 2.1.4.14 | Remove burner 5 gas spool and blank for CSE |  | 0.5h | 2026-09-14 13:00 | 2026-09-14 13:30 | 92 | 9.38d | 0d |  | WGP-MTP [200%] | 1h |  | 6577046 |  |  |  |
| 94 | 2.1.4.15 | Remove burner 6 gas spool and blank for CSE |  | 0.5h | 2026-09-14 13:30 | 2026-09-14 14:00 | 93 | 9.38d | 0d |  | WGP-MTP [200%] | 1h |  | 6577046 |  |  |  |
| 95 | 2.1.4.16 | Gas Purge, Pressure & Isolations Test Complete | milestone | 0h | 2026-09-14 14:00 | 2026-09-14 14:00 | 88, 94 | 10.75d | 0d |  |  |  |  |  |  |  |  |

Notes:
- 72: just before production isolations

| ID | WBS | Task | Type | Duration | Start | Finish | Predecessors | Total slack | Free slack | Calendar | Resources | Work | Day | Work Order No. | Operation No. | Text12 | Operation Description | Assigned Department |
| --- | --- | --- | --- | --- | --- | --- | --- | --- | --- | --- | --- | --- | --- | --- | --- | --- | --- | --- |
| 96 | 2.1.5 | **Boiler Isolations & Hydrostatic Leak Test** |  | 2.06d | 2026-09-14 10:00 | 2026-09-15 02:30 |  | 10.31d |  |  |  | 62h | Day2 |  |  |  |  |  |
| 97 | 2.1.5.1 | Isolate & tag boiler for hydro leak test |  | 2h | 2026-09-14 10:00 | 2026-09-14 12:00 | 80, 73 | 10.75d | 0d |  | WGP-PROD | 2h |  | 6577046 |  |  |  |  |
| 98 | 2.1.5.2 | Open & barricade air path doors for hydro leak test |  | 2h | 2026-09-14 12:00 | 2026-09-14 14:00 | 70, 97 | 10.75d | 0d |  | WC-MECH [400%] | 8h |  | 6577046 |  |  |  |  |
| 99 | 2.1.5.3 | Open & barricade gas path doors for hydro leak test |  | 2h | 2026-09-14 12:00 | 2026-09-14 14:00 | 70, 97 | 10.75d | 0d |  | WC-MECH [400%] | 8h |  | 6577046 |  |  |  |  |
| 100 | 2.1.5.4 | Open & barricade remaining air & gas path doors |  | 4h | 2026-09-14 14:00 | 2026-09-14 18:00 | 98, 99 | 11.12d | 0.38d |  | WC-MECH [200%] | 8h |  | 6577046 |  |  |  |  |
| 101 | 2.1.5.5 | Civmec Remove door refractory wickets |  | 2h | 2026-09-14 12:00 | 2026-09-14 14:00 | 70, 97 | 11.62d | 0.88d |  | WC-MISC [400%] | 8h |  | 6577046 |  |  |  |  |
| 102 | 2.1.5.6 | Insert FD fan rotation prevention tube |  | 1h | 2026-09-14 12:00 | 2026-09-14 13:00 | 70, 97 | 10.88d | 0.12d |  | WGP-PROD | 1h |  | 6577046 |  |  |  |  |
| 103 | 2.1.5.7 | Complete isolation & raise CSE for boiler hydro leak test |  | 1h | 2026-09-14 14:00 | 2026-09-14 15:00 | 98, 99, 102, 69, 95 | 10.75d | 0d |  | WGP-PROD [200%] | 2h |  | 6577046 |  |  |  |  |
| 104 | 2.1.5.8 | Conduct boiler hydro leak test |  | 2h | 2026-09-14 15:00 | 2026-09-14 17:00 | 103 | 10.75d | 0d |  | WGP-PROD | 2h |  | 6577046 |  |  |  |  |
| 105 | 2.1.5.9 | Engineer to witness the hydro leak test |  | 2h | 2026-09-14 15:00 | 2026-09-14 17:00 | 103 | 10.75d | 0d | 24 Hours | WGP-ENG | 2h |  | 6577046 |  |  |  |  |
| 106 | 2.1.5.10 | Sentry to assist with boiler hydro leak test inspection |  | 2h | 2026-09-14 15:00 | 2026-09-14 17:00 | 103 | 10.75d | 0d |  | WGP-PROD | 2h |  | 6577046 |  |  |  |  |
| 107 | 2.1.5.11 | Drain boiler after hydro leak test and isolate |  | 4h | 2026-09-14 17:00 | 2026-09-14 21:00 | 105, 104, 106 | 10.75d | 0d |  | WGP-PROD | 4h |  | 6577046 |  |  |  |  |
| 108 | 2.1.5.12 | Conduct attemperator leak test | inactive | 2h | 2026-09-14 21:00 | 2026-09-14 23:00 | 107 | 10.06d | 0d |  | WGP-PROD | 2h |  | 6577046 |  |  |  |  |
| 109 | 2.1.5.13 | Amend air & gas path CSE after hydro leak test |  | 2h | 2026-09-14 21:00 | 2026-09-14 23:00 | 108, 100, 101, 78 | 10.75d | 0.44d |  | WGP-PROD [200%] | 4h |  | 6577046 |  |  |  |  |
| 110 | 2.1.5.14 | Isolate & tag to open water side doors |  | 0.5h | 2026-09-14 21:00 | 2026-09-14 21:30 | 108 | 10.31d | 0d |  | WGP-PROD [200%] | 1h |  | 6577046 |  |  |  |  |
| 111 | 2.1.5.15 | Open & barricade steam drum doors |  | 1h | 2026-09-14 21:30 | 2026-09-14 22:30 | 110 | 10.31d | 0d |  | WC-MECH [200%] | 2h |  | 6577046 |  |  |  |  |
| 112 | 2.1.5.16 | Open & barricade flash tank door |  | 1h | 2026-09-14 22:30 | 2026-09-14 23:30 | 111 | 10.31d | 0d |  | WC-MECH [200%] | 2h |  | 6577046 |  |  |  |  |
| 113 | 2.1.5.17 | Open & barricade IBO door |  | 1h | 2026-09-14 23:30 | 2026-09-15 00:30 | 112 | 10.31d | 0d |  | WC-MECH [200%] | 2h |  | 6577046 |  |  |  |  |
| 114 | 2.1.5.18 | Raise CSE's for statutory inspections |  | 2h | 2026-09-15 00:30 | 2026-09-15 02:30 | 113 | 10.31d | 0d |  | WGP-PROD [200%] | 4h |  | 6577046 |  |  |  |  |
| 115 | 2.1.5.19 | Boiler Isolations & Leak Test Complete | milestone | 0h | 2026-09-15 02:30 | 2026-09-15 02:30 | 114, 109 | 10.31d | 0d |  |  |  |  |  |  |  |  |  |
| 116 | 2.2 | **Maintenance** |  | 27.88d | 2026-09-13 19:00 | 2026-09-23 02:00 |  | 2.62d |  |  |  | 2430h | Day2 |  |  |  |  |  |
| 117 | 2.2.1 | **Feedwater System (1)** |  | 11d | 2026-09-13 19:00 | 2026-09-17 11:00 |  | 18.12d |  |  |  | 104.5h | Day2 |  |  |  |  |  |
| 118 | 2.2.1.1 | Perform fused alumina blasting of all exposed welds – as per scope 1.2, 1.3, and 1.4 |  | 3h | 2026-09-13 20:00 | 2026-09-13 23:00 | 68 | 18d | 0d |  | WC-SNDBST [200%] | 6h |  | 6577046 | 1020 | L | BOILER 1 MOH SANDBLASTING SCOPE | WCG-SRG |
| 119 | 2.2.1.2 | Perform NDT of feedwater system – as per scope 1.2, 1.3, and 1.4 |  | 8h | 2026-09-14 07:00 | 2026-09-14 15:00 | 118 | 24.62d | 0d |  | WC-NDT [200%] | 16h |  | 6577046 | 1040 |  | BOILER 1 MAJOR OVERHAUL NDT & METALLURGY SCOPE | WCT-ALS |
| 120 | 2.2.1.3 | Inspect and record cold position of feedwater system hangers |  | 1.5h | 2026-09-14 15:00 | 2026-09-14 16:30 | 119 | 26.5d | 8.31d |  | WGP-ENG | 1.5h |  | 6577046 |  |  |  |  |

| ID | WBS | Task | Type | Duration | Start | Finish | Predecessors | Total slack | Free slack | Resources | Work | Day | Work Order No. | Operation No. | Assigned Department | Text12 |
| --- | --- | --- | --- | --- | --- | --- | --- | --- | --- | --- | --- | --- | --- | --- | --- | --- |
| 121 | 2.2.1.4 | **Feedwater Control Valves** |  | 9.5d | 2026-09-14 07:00 | 2026-09-17 11:00 |  | 18.19d |  |  | 68h | Day2 |  |  |  |  |
| 122 | 2.2.1.4.1 | Disconnect 2x feedwater fisher control valves |  | 2h | 2026-09-14 07:00 | 2026-09-14 09:00 |  | 18.19d | 0d | WGP-ETP [200%] | 4h |  | 6577046 |  |  |  |
| 123 | 2.2.1.4.2 | Strip & overhaul 2x feedwater fisher control valves |  | 30h | 2026-09-14 09:00 | 2026-09-17 09:00 | 122 | 18.19d | 0d | WC-MISC [200%] | 60h |  | 6577046 |  |  |  |
| 124 | 2.2.1.4.3 | Reconnect 2x feedwater fisher control valves |  | 2h | 2026-09-17 09:00 | 2026-09-17 11:00 | 123 | 18.19d | 0d | WGP-ETP [200%] | 4h |  | 6577046 |  |  |  |
| 125 | 2.2.1.5 | **Adhoc Maintenance** |  | 2.25d | 2026-09-13 19:00 | 2026-09-14 13:00 |  | 26.56d |  |  | 13h | Day3 |  |  |  |  |
| 126 | 2.2.1.5.1 | **WESTARC - Replace passing LEV04 drain valve** |  | 2.25d | 2026-09-13 19:00 | 2026-09-14 13:00 |  | 26.56d |  |  | 13h | Day3 |  |  |  |  |
| 127 | 2.2.1.5.1.1 | Tag for replacement of passing LEV04 drain valve |  | 1h | 2026-09-13 19:00 | 2026-09-13 20:00 |  | 26.56d | 1.38d | WGP-PROD | 1h |  | WO5829395 | 10 | W5P1 |  |
| 128 | 2.2.1.5.1.2 | WESTARC - Replace passing LEV04 drain valve |  | 4h | 2026-09-14 07:00 | 2026-09-14 11:00 | 127 | 25.19d | 0d | WC-MISC [200%] | 8h |  | WO5829395 | 20 | WCG-OTHER |  |
| 129 | 2.2.1.5.1.3 | NDT/MPI after replacement of LEV04 drain valve |  | 2h | 2026-09-14 11:00 | 2026-09-14 13:00 | 128 | 26.94d | 8.75d | WC-NDT [200%] | 4h |  | WO5829395 | 30 | WCT-ALS |  |
| 130 | 2.2.1.6 | Feewater Control Valve Maintenance Complete | milestone | 0h | 2026-09-17 11:00 | 2026-09-17 11:00 | 124, 120, 129 | 18.19d | 16.88d |  |  |  |  |  |  |  |
| 131 | 2.2.2 | **Steam Drum (2)** |  | 18.12d | 2026-09-14 07:00 | 2026-09-20 08:00 |  | 5.12d |  |  | 143h | Day2 |  |  |  |  |
| 132 | 2.2.2.1 | **Steam Drum Internal 2.2** |  | 4.69d | 2026-09-15 02:30 | 2026-09-16 16:00 |  | 21.12d |  |  | 51h | Day2 |  |  |  |  |
| 133 | 2.2.2.1.1 | LPW steam drum pending visual inspection |  | 8h | 2026-09-15 02:30 | 2026-09-15 11:00 | 115 | 21.25d | 0d | WC-OPER [200%]; WC-LPW | 12h |  | 6577046 |  |  |  |
| 134 | 2.2.2.1.2 | Remove approximately 100–200 L of remaining water from drum (both ends) |  | 4h | 2026-09-15 11:00 | 2026-09-15 15:00 | 133 | 21.25d | 0d | WC-OPER [200%]; WC-VACTRK | 12h |  | 6577046 |  | WCG-VEOLIA |  |
| 135 | 2.2.2.1.3 | Power wire brush all accessible internal welds selected for NDT (Steam Drum) - as per scope 2.2 |  | 6h | 2026-09-15 15:00 | 2026-09-15 21:00 | 134 | 22.38d | 1.25d | WC-MECH [200%] | 12h |  | 6577046 |  |  |  |
| 136 | 2.2.2.1.4 | Perform NDT of steam drum internals – as per scope 2.2 |  | 4h | 2026-09-16 07:00 | 2026-09-16 11:00 | 135 | 21.12d | 0d | WC-NDT [200%] | 8h |  | 6577046 | 1040 | WCT-ALS |  |
| 137 | 2.2.2.1.5 | Conduct internal visual inspection of steam drum – as per scope 2.2 |  | 3h | 2026-09-16 11:00 | 2026-09-16 14:00 | 136 | 21.12d | 0d | WGP-ENG | 3h |  | 6577046 |  |  |  |
| 138 | 2.2.2.1.6 | Close steam drum doors #12 (South) and #13 (North) and replace door gaskets |  | 2h | 2026-09-16 14:00 | 2026-09-16 16:00 | 137 | 21.12d | 11d | WGP-MTP [200%] | 4h |  | 6577046 |  |  |  |
| 139 | 2.2.2.2 | **Steam Drum External 2.3** |  | 14d | 2026-09-15 16:00 | 2026-09-20 08:00 |  | 1d |  |  | 77h | Day2 |  |  |  |  |
| 140 | 2.2.2.2.1 | Strip lagging from steam drum for external inspection – as per scope 2.3 |  | 24h | 2026-09-15 16:00 | 2026-09-16 16:00 | 337 | 1d | 0d | WC-LAGG [200%] | 48h |  | 6577046 | 1030 | WCG-SRG | L1 |
| 141 | 2.2.2.2.2 | Perform dry fused alumina blasting of all exposed welds (Steam Drum) |  | 4h | 2026-09-18 23:00 | 2026-09-19 03:00 | 140, 170 | 9.12d | 0d | WC-SNDBST [200%] | 8h |  | 6577046 | 1020 | WCG-SRG | L |
| 142 | 2.2.2.2.3 | Vacuum blasting debris (Steam Drum) |  | 4h | 2026-09-19 03:00 | 2026-09-19 09:00 | 141 | 10.62d | 0d | WC-VACTRK; WC-OPER [200%] | 6h |  | 6577046 |  |  |  |
| 143 | 2.2.2.2.4 | Perform NDT of steam drum externals – as per scope 2.3 |  | 6h | 2026-09-19 09:00 | 2026-09-19 15:00 | 142 | 11.88d | 0d | WC-NDT [200%] | 12h |  | 6577046 | 1040 | WCT-ALS |  |
| 144 | 2.2.2.2.5 | Conduct external visual inspection of steam drum – as per scope 2.3 |  | 3h | 2026-09-19 15:00 | 2026-09-20 08:00 | 143, 146 | 10.12d | 0d | WGP-ENG | 3h |  | 6577046 |  |  |  |

Notes:
- 127: Operation Description: TAGOUT FOR CHANGEOUT BOILER 1 FEED WATER SYSTEM LEV04 DRAIN VALVE - CONSTANTLY PASSING
- 128: Operation Description: WESTARC CHANGEOUT BOILER 1 FEED WATER SYSTEM LEV04 DRAIN VALVE - CONSTANTLY PASSING
- 129: Operation Description: MPI/NDT OF PIPING AFTER VALVE INSTALL ON BOILER 1 FEED DRAIN LINE
- 136: Operation Description: BOILER 1 MAJOR OVERHAUL NDT & METALLURGY SCOPE
- 140: Operation Description: BOILER 1 MAJOR OVERHAUL LAGGING SCOPE
- 141: Operation Description: BOILER 1 MOH SANDBLASTING SCOPE
- 143: Operation Description: BOILER 1 MAJOR OVERHAUL NDT & METALLURGY SCOPE

| ID | WBS | Task | Type | Duration | Start | Finish | Predecessors | Total slack | Free slack | Resources | Work | Day | Work Order No. | Operation No. | Assigned Department | Text12 |
| --- | --- | --- | --- | --- | --- | --- | --- | --- | --- | --- | --- | --- | --- | --- | --- | --- |
| 145 | 2.2.2.3 | **Steam Drum Safety Valves** |  | 0.62d | 2026-09-15 07:00 | 2026-09-15 12:00 |  | 22.19d |  |  | 13h | Day3 |  |  |  |  |
| 146 | 2.2.2.3.1 | Changeout steam drum west safety valves with certified spares |  | 2h | 2026-09-15 07:00 | 2026-09-15 09:00 | 115 | 22.19d | 0d | WGP-MTP [200%] | 4h |  | 6819789 | 10 | W5M1 |  |
| 147 | 2.2.2.3.2 | Changeout steam drum east safety valves with certified spares |  | 2h | 2026-09-15 07:00 | 2026-09-15 09:00 | 115 | 25d | 0.38d | WGP-MTP [200%] | 4h |  | 6819790 | 10 | W5M1 |  |
| 148 | 2.2.2.3.3 | 60T Crane required to assist with safety valve removal |  | 5h | 2026-09-15 07:00 | 2026-09-15 12:00 | 115 | 24.62d | 0d | WC-CRN60 | 5h |  |  |  |  |  |
| 149 | 2.2.2.3.4 | Steam Drum Safety Valve Maintenace Complete | milestone | 0h | 2026-09-15 12:00 | 2026-09-15 12:00 | 146, 148, 147 | 25.5d | 14.5d |  |  |  |  |  |  |  |
| 150 | 2.2.2.4 | Inspect steam drum magnatrol |  | 1h | 2026-09-14 07:00 | 2026-09-14 08:00 |  | 28d | 0d | WGP-ETP | 1h |  | 6577046 |  |  |  |
| 151 | 2.2.2.5 | Inspect steam drum aquarian |  | 1h | 2026-09-14 08:00 | 2026-09-14 09:00 | 150 | 28d | 17.88d | WGP-ETP | 1h |  | 6577046 |  |  |  |
| 152 | 2.2.2.6 | Steam Drum Complete | milestone | 0h | 2026-09-20 08:00 | 2026-09-20 08:00 | 144, 138, 149, 151 | 11d | 0d |  |  |  |  |  |  |  |
| 153 | 2.2.3 | **Attemperator (3)** |  | 24.06d | 2026-09-14 07:00 | 2026-09-22 07:30 |  | 3.62d |  |  | 217h | Day2 |  |  |  |  |
| 154 | 2.2.3.1 | Strip lagging from attemperator door #19 |  | 4h | 2026-09-16 13:00 | 2026-09-16 17:00 | 276 | 0.38d | 0d | WC-LAGG [200%] | 8h |  | 6577046 | 1030 | WCG-SRG | L2 |
| 155 | 2.2.3.2 | **Attemperator Internal - (3.2)** |  | 8.44d | 2026-09-16 17:00 | 2026-09-19 12:30 |  | 9.5d |  |  | 49.5h | Day2 |  |  |  |  |
| 156 | 2.2.3.2.1 | Open attemperator vessel door #19 |  | 1h | 2026-09-17 07:00 | 2026-09-17 08:00 | 154 | 10.12d | 0d | WGP-MTP [200%] | 2h |  | 6577046 |  |  |  |
| 157 | 2.2.3.2.2 | Raise CSE - Attemperator door #19 |  | 1h | 2026-09-17 08:00 | 2026-09-17 09:00 | 156 | 11.62d | 0.25d | WGP-PROD [200%] | 2h |  | 6577046 |  |  |  |
| 158 | 2.2.3.2.3 | Remove insulation from attemperator inspection nozzles I5 and I6, fully exposing end caps |  | 4h | 2026-09-16 17:00 | 2026-09-16 21:00 | 154 | 11d | 1.25d | WC-LAGG [200%] | 8h |  | 6577046 | 1030 | WCG-SRG |  |
| 159 | 2.2.3.2.4 | Cut inspection caps from attemperator inspection ports I5 (North) and I6 (South) in preparation for borescope inspection |  | 4h | 2026-09-17 07:00 | 2026-09-17 11:00 | 158 | 9.75d | 0d | WESTARC | 4h |  | 6577046 |  |  |  |
| 160 | 2.2.3.2.5 | Power wire buff of attemperator steam inlet and outlet piping welds to nozzles |  | 4h | 2026-09-17 11:00 | 2026-09-17 15:00 | 157, 159 | 11.38d | 0d | WC-MECH [200%] | 8h |  | 6577046 |  |  |  |
| 161 | 2.2.3.2.6 | Perform NDT of steam inlet and outlet piping nozzle welds – as per scope 3.2 |  | 4h | 2026-09-17 15:00 | 2026-09-18 10:00 | 160 | 9.5d | 0d | WC-NDT [200%] | 8h |  | 6577046 | 1040 | WCT-ALS |  |
| 162 | 2.2.3.2.7 | Conduct internal visual inspection via door #16 – as per scope 3.2 |  | 1.5h | 2026-09-18 10:00 | 2026-09-18 11:30 | 161 | 9.5d | 0d | WGP-ENG | 1.5h |  | 6577046 |  |  |  |
| 163 | 2.2.3.2.8 | Install new attemperator inspection caps at nozzles I5 and I6 following inspection |  | 6h | 2026-09-18 11:30 | 2026-09-19 07:30 | 162 | 9.5d | 0d | WESTARC | 6h |  | 6577046 |  |  |  |
| 164 | 2.2.3.2.9 | Perform NDT of inspection nozzle I5 and I6 welds after reinstatement – as per scope 3.2 |  | 2h | 2026-09-19 07:30 | 2026-09-19 09:30 | 163 | 9.5d | 0d | WC-NDT [200%] | 4h |  | 6577046 | 1040 | WCT-ALS |  |
| 165 | 2.2.3.2.10 | Remove CSE - Attemperator door #19 |  | 1h | 2026-09-19 09:30 | 2026-09-19 10:30 | 164 | 9.5d | 0d | WGP-PROD [200%] | 2h |  | 6577046 |  |  |  |
| 166 | 2.2.3.2.11 | Close attemperator vessel door #19 |  | 2h | 2026-09-19 10:30 | 2026-09-19 12:30 | 165 | 9.5d | 0d | WGP-MTP [200%] | 4h |  | 6577046 |  |  |  |
| 167 | 2.2.3.2.12 | Attemperator Internal Complete | milestone | 0h | 2026-09-19 12:30 | 2026-09-19 12:30 | 166 | 9.5d | 5.88d |  |  |  |  |  |  |  |
| 168 | 2.2.3.3 | **Attemperator External - (3.3)** |  | 14.31d | 2026-09-16 17:00 | 2026-09-21 11:30 |  | 3.62d |  |  | 79.5h | Day2 |  |  |  |  |
| 169 | 2.2.3.3.1 | Remove insulation to expose welds for NDT – as per scope 3.3 (Attemperator) |  | 20h | 2026-09-16 17:00 | 2026-09-17 13:00 | 154 | 10.5d | 1d | WC-LAGG [200%] | 40h |  | 6577046 | 1030 | WCG-SRG |  |
| 170 | 2.2.3.3.2 | Perform dry fused alumina blasting of all exposed welds – as per scope 3.3 (attemperator) |  | 5h | 2026-09-18 18:00 | 2026-09-18 23:00 | 169, 225 | 6.88d | 0d | WC-SNDBST [200%] | 10h |  | 6577046 | 1020 | WCG-SRG | L |
| 171 | 2.2.3.3.3 | Vacuum blasting debris (Attemperator) |  | 8h | 2026-09-18 23:00 | 2026-09-19 11:00 | 170 | 7.75d | 0d | WC-VACTRK; WC-OPER [200%] | 12h |  | 6577046 |  |  |  |
| 172 | 2.2.3.3.4 | Perform NDT of attemperator externals – as per scope 3.3 |  | 8h | 2026-09-19 11:00 | 2026-09-21 10:00 | 171 | 3.62d | 0d | WC-NDT [200%] | 16h |  | 6577046 | 1040 | WCT-ALS |  |
| 173 | 2.2.3.3.5 | Conduct external visual inspection of attemperator – as per scope 3.3 |  | 1.5h | 2026-09-21 10:00 | 2026-09-21 11:30 | 172 | 3.62d | 0d | WGP-ENG | 1.5h |  | 6577046 |  |  |  |
| 174 | 2.2.3.3.6 | Attemperator External Complete | milestone | 0h | 2026-09-21 11:30 | 2026-09-21 11:30 | 173 | 3.62d | 0d |  |  |  |  |  |  |  |

Notes:
- 146: Operation Description: Changeout steam drum west safety valves with certified spares
- 147: Operation Description: Changeout steam drum east safety valves with certified spares
- 154: Operation Description: BOILER 1 MAJOR OVERHAUL LAGGING SCOPE
- 158: Operation Description: BOILER 1 MAJOR OVERHAUL LAGGING SCOPE
- 161: Operation Description: BOILER 1 MAJOR OVERHAUL NDT & METALLURGY SCOPE
- 164: Operation Description: BOILER 1 MAJOR OVERHAUL NDT & METALLURGY SCOPE
- 169: Operation Description: BOILER 1 MAJOR OVERHAUL LAGGING SCOPE
- 170: Operation Description: BOILER 1 MOH SANDBLASTING SCOPE
- 172: Operation Description: BOILER 1 MAJOR OVERHAUL NDT & METALLURGY SCOPE

| ID | WBS | Task | Type | Duration | Start | Finish | Predecessors | Total slack | Free slack | Resources | Work | Day | Work Order No. | Text12 | Operation No. | Operation Description | Assigned Department |
| --- | --- | --- | --- | --- | --- | --- | --- | --- | --- | --- | --- | --- | --- | --- | --- | --- | --- |
| 175 | 2.2.3.4 | **Attemperator Control Valves** |  | 6.5d | 2026-09-14 07:00 | 2026-09-16 11:00 |  | 21.19d |  |  | 40h | Day2 |  |  |  |  |  |
| 176 | 2.2.3.4.1 | Remove attemperator control valves and take to workshop for overhaul |  | 4h | 2026-09-14 07:00 | 2026-09-14 11:00 |  | 21.19d | 0d | WGP-MTP [200%] | 8h |  | 6577046 |  |  |  |  |
| 177 | 2.2.3.4.2 | Crane required to remove attemperator control valves |  | 4h | 2026-09-14 11:00 | 2026-09-14 15:00 | 176 | 21.19d | 0d | WC-CRN95 | 4h |  |  |  |  |  |  |
| 178 | 2.2.3.4.3 | Overhaul attemperator control valves & replace linkages |  | 8h | 2026-09-14 15:00 | 2026-09-15 13:00 | 177 | 21.19d | 0d | WGP-MTP [200%] | 16h |  | 6577046 |  |  |  |  |
| 179 | 2.2.3.4.4 | Refit attemperator control valves after overhaul |  | 4h | 2026-09-15 13:00 | 2026-09-15 17:00 | 178 | 21.19d | 1.75d | WGP-MTP [200%] | 8h |  | 6577046 |  |  |  |  |
| 180 | 2.2.3.4.5 | Crane required to install attemperator control valves |  | 4h | 2026-09-16 07:00 | 2026-09-16 11:00 | 179 | 21.19d | 0d | WC-CRN95 | 4h |  |  |  |  |  |  |
| 181 | 2.2.3.4.6 | Attemperator Control Valve Maintenance Complete | milestone | 0h | 2026-09-16 11:00 | 2026-09-16 11:00 | 180 | 21.19d | 17.56d |  |  |  |  |  |  |  |  |
| 182 | 2.2.3.5 | Reinstate all attemperator lagging |  | 20h | 2026-09-21 11:30 | 2026-09-22 07:30 | 167, 174, 518 | 3.62d | 0d | WC-LAGG [200%] | 40h |  |  | RL |  |  |  |
| 183 | 2.2.3.6 | Attemperator Maintenance Complete | milestone | 0h | 2026-09-22 07:30 | 2026-09-22 07:30 | 182, 181 | 3.62d | 2.31d |  |  |  |  |  |  |  |  |
| 184 | 2.2.4 | **Penthouse (4)** |  | 7.31d | 2026-09-15 02:30 | 2026-09-17 13:00 |  | 17.19d |  |  | 64h | Day2 |  |  |  |  |  |
| 185 | 2.2.4.1 | **Secondary Superheater Inlet Header (4.2)** |  | 4.76d | 2026-09-15 02:30 | 2026-09-16 16:36 |  | 17.19d |  |  | 37.6h | Day2 |  |  |  |  |  |
| 186 | 2.2.4.1.1 | Erect access scaffold inside door #11 |  | 4h | 2026-09-15 02:30 | 2026-09-15 06:30 | 356, 115 | 17.19d | 0d | WC-SCAF [200%] | 8h |  | 6577046 |  | 1010 | BOILER 1 MOH SCAFFOLD SCOPE | WCG-UGL |
| 187 | 2.2.4.1.2 | Perform dry fused alumina blasting of tube to header welds and structural header support welds - As per scope 4.2 (SSIH) |  | 4h | 2026-09-15 23:00 | 2026-09-16 03:00 | 186, 444 | 15.38d | 0d | WC-SNDBST [200%] | 8h |  | 6577046 | M | 1020 | BOILER 1 MOH SANDBLASTING SCOPE | WCG-SRG |
| 188 | 2.2.4.1.3 | Vacuum blasting debris (SSIH) |  | 8h | 2026-09-16 03:00 | 2026-09-16 11:00 | 187 | 16.69d | 0d | WC-VACTRK; WC-OPER [200%] | 12h |  | 6577046 |  |  |  |  |
| 189 | 2.2.4.1.4 | Perform NDT of secondary superheater inlet header - as per scope 4.2 |  | 4h | 2026-09-16 11:00 | 2026-09-16 15:00 | 188 | 17.94d | 0d | WC-NDT [200%] | 8h |  | 6577046 |  | 1040 | BOILER 1 MAJOR OVERHAUL NDT & METALLURGY SCOPE | WCT-ALS |
| 190 | 2.2.4.1.5 | Conduct visual inspection of secondary superheater inlet header |  | 1.6h | 2026-09-16 15:00 | 2026-09-16 16:36 | 189 | 17.94d | 0d | WGP-ENG | 1.6h |  | 6577046 |  |  |  |  |
| 191 | 2.2.4.1.6 | Secondary Superheater Inlet Header Complete | milestone | 0h | 2026-09-16 16:36 | 2026-09-16 16:36 | 190 | 20.49d | 2.55d |  |  |  |  |  |  |  |  |
| 192 | 2.2.4.2 | **Economiser Riser Headers (4.3)** |  | 1.95d | 2026-09-16 16:36 | 2026-09-17 08:12 |  | 17.94d |  |  | 1.6h | Day2 |  |  |  |  |  |
| 193 | 2.2.4.2.1 | Conduct visual inspection of economiser riser headers |  | 1.6h | 2026-09-16 16:36 | 2026-09-17 08:12 | 190 | 17.94d | 0d | WGP-ENG | 1.6h |  | 6577046 |  |  |  |  |
| 194 | 2.2.4.2.2 | Economiser Riser Headers Complete | milestone | 0h | 2026-09-17 08:12 | 2026-09-17 08:12 | 193 | 18.54d | 0.6d |  |  |  |  |  |  |  |  |
| 195 | 2.2.4.3 | **Upper Waterwall Header (4.4)** |  | 0.2d | 2026-09-17 08:12 | 2026-09-17 09:48 |  | 17.94d |  |  | 1.6h | Day2 |  |  |  |  |  |
| 196 | 2.2.4.3.1 | Conduct visual inspection of upper waterwall header - as per scope 4.4 |  | 1.6h | 2026-09-17 08:12 | 2026-09-17 09:48 | 193 | 17.94d | 0d | WGP-ENG | 1.6h |  | 6577046 |  |  |  |  |
| 197 | 2.2.4.3.2 | Upper Waterwall Header Complete | milestone | 0h | 2026-09-17 09:48 | 2026-09-17 09:48 | 196 | 18.34d | 0.4d |  |  |  |  |  |  |  |  |
| 198 | 2.2.4.4 | **Saturated Steam Tubes (4.5)** |  | 0.2d | 2026-09-17 09:48 | 2026-09-17 11:24 |  | 17.94d |  |  | 1.6h | Day2 |  |  |  |  |  |
| 199 | 2.2.4.4.1 | Conduct visual inspection of saturated steam tubes - as per scope 4.5 |  | 1.6h | 2026-09-17 09:48 | 2026-09-17 11:24 | 196 | 17.94d | 0d | WGP-ENG | 1.6h |  | 6577046 |  |  |  |  |
| 200 | 2.2.4.4.2 | Saturated Steam Tubes Complete | milestone | 0h | 2026-09-17 11:24 | 2026-09-17 11:24 | 199 | 18.14d | 0.2d |  |  |  |  |  |  |  |  |

| ID | WBS | Task | Type | Duration | Start | Finish | Predecessors | Total slack | Free slack | Resources | Work | Day | Work Order No. | Operation No. | Text12 | Operation Description | Assigned Department |
| --- | --- | --- | --- | --- | --- | --- | --- | --- | --- | --- | --- | --- | --- | --- | --- | --- | --- |
| 201 | 2.2.4.5 | **Drum and Drum Connections (4.6)** |  | 4.25d | 2026-09-16 03:00 | 2026-09-17 13:00 |  | 17.94d |  |  | 21.6h | Day2 |  |  |  |  |  |
| 202 | 2.2.4.5.1 | Perform dry fused alumina blasting of drum and drum connections - As per scope 4.6 |  | 3h | 2026-09-16 03:00 | 2026-09-16 06:00 | 187 | 18d | 0.62d | WC-SNDBST [200%] | 6h |  | 6577046 | 1020 | M | BOILER 1 MOH SANDBLASTING SCOPE | WCG-SRG |
| 203 | 2.2.4.5.2 | Vacuum blasting debris (drum and drum connections) |  | 2h | 2026-09-16 11:00 | 2026-09-16 13:00 | 202, 188 | 18.36d | 0.25d | WC-VACTRK; WC-OPER [200%] | 6h |  | 6577046 |  |  |  |  |
| 204 | 2.2.4.5.3 | Perform NDT of drum and drum connections - as per scope 4.6 |  | 4h | 2026-09-16 15:00 | 2026-09-17 10:00 | 203, 189 | 18.11d | 0.17d | WC-NDT [200%] | 8h |  | 6577046 | 1040 |  | BOILER 1 MAJOR OVERHAUL NDT & METALLURGY SCOPE | WCT-ALS |
| 205 | 2.2.4.5.4 | Conduct visual inspection of drum and drum connections - as per scope 4.6 |  | 1.6h | 2026-09-17 11:24 | 2026-09-17 13:00 | 204, 199 | 17.94d | 0d | WGP-ENG | 1.6h |  | 6577046 |  |  |  |  |
| 206 | 2.2.4.5.5 | Drum and Drum Connections Complete | milestone | 0h | 2026-09-17 13:00 | 2026-09-17 13:00 | 205 | 17.94d | 0d |  |  |  |  |  |  |  |  |
| 207 | 2.2.4.6 | Penthouse Maintenance Complete | milestone | 0h | 2026-09-17 13:00 | 2026-09-17 13:00 | 191, 194, 197, 200, 206 | 17.94d | 16.62d |  |  |  |  |  |  |  |  |
| 208 | 2.2.5 | **Secondary Superheater Outlet Header (5)** |  | 18.62d | 2026-09-16 21:00 | 2026-09-23 02:00 |  | 0.38d |  |  | 187h | Day2 |  |  |  |  |  |
| 209 | 2.2.5.1 | Remove lagging from secondary superheater outlet header - as per scope 5.1 |  | 24h | 2026-09-16 21:00 | 2026-09-17 21:00 | 140, 418 | 0.38d | 0d | WC-LAGG [200%] | 48h |  | 6577046 | 1030 | L2 | BOILER 1 MAJOR OVERHAUL LAGGING SCOPE | WCG-SRG |
| 210 | 2.2.5.2 | Remove old thermocouples, identify and keep current thermocouples or replace as required (SSOH) |  | 2h | 2026-09-18 07:00 | 2026-09-18 09:00 | 209 | 6.75d | 0d | WGP-ETP | 2h |  | 6577046 |  |  |  |  |
| 211 | 2.2.5.3 | Install stepping planks on bottom of header enclosure for safe access |  | 2h | 2026-09-17 21:00 | 2026-09-17 23:00 | 209 | 0.38d | 0d | WC-SCAF [200%] | 4h |  | 6577046 | 1010 |  | BOILER 1 MOH SCAFFOLD SCOPE | WCG-UGL |
| 212 | 2.2.5.4 | Perform dry fused alumina blasting of secondary superheater outlet header - As per scope 5.2 |  | 4h | 2026-09-17 23:00 | 2026-09-18 03:00 | 211 | 0.38d | 0d | WC-SNDBST [200%] | 8h |  | 6577046 | 1020 | M | BOILER 1 MOH SANDBLASTING SCOPE | WCG-SRG |
| 213 | 2.2.5.5 | Vacuum blasting debris (SSOH) |  | 8h | 2026-09-18 03:00 | 2026-09-18 11:00 | 212 | 0.5d | 0d | WC-VACTRK; WC-OPER [200%] | 12h |  | 6577046 |  |  |  |  |
| 214 | 2.2.5.6 | Remove 300mm tube sample from secondary superheater outlet header & install new section of tube - as per scope 5.2 |  | 4h | 2026-09-18 11:00 | 2026-09-18 15:00 | 213 | 0.5d | 0d | WESTARC | 4h |  | 6577046 |  |  |  |  |
| 215 | 2.2.5.7 | Removed tube section from SSOH to be sent for analysis |  | 2h | 2026-09-18 15:00 | 2026-09-19 08:00 | 214 | 0.38d | 0d | WC-NDT | 2h |  | 6577046 | 1040 |  | BOILER 1 MAJOR OVERHAUL NDT & METALLURGY SCOPE | WCT-ALS |
| 216 | 2.2.5.8 | Perform NDT of secondary superheater outlet header - as per scope 5.2 |  | 8h | 2026-09-19 08:00 | 2026-09-19 16:00 | 215 | 0.38d |  | WC-NDT [200%] | 16h |  | 6577046 | 1040 |  | BOILER 1 MAJOR OVERHAUL NDT & METALLURGY SCOPE | WCT-ALS |
| 217 | 2.2.5.9 | Perform metallurgy testing of SSOH - as per scope 5.2 |  | 4h | 2026-09-21 07:00 | 2026-09-21 11:00 | 216 | 0.38d | 0d | WC-NDT | 4h |  | 6577046 | 1040 |  | BOILER 1 MAJOR OVERHAUL NDT & METALLURGY SCOPE | WCT-ALS |
| 218 | 2.2.5.10 | Conduct visual inspection of secondary superheater outlet header |  | 3h | 2026-09-21 11:00 | 2026-09-21 14:00 | 217 | 0.38d | 0d | WGP-ENG | 3h |  | 6577046 |  |  |  |  |
| 219 | 2.2.5.11 | Install additional thermocouples as identified by engineering. This work is critical to review potential design excursions (SSOH) |  | 12h | 2026-09-18 09:00 | 2026-09-19 11:00 | 210 | 6.75d | 6.38d | WGP-ETP | 12h |  | 6577046 |  |  |  |  |
| 220 | 2.2.5.12 | Box up secondary superheater outlet header |  | 4h | 2026-09-21 14:00 | 2026-09-21 18:00 | 218, 219 | 1.31d | 0d | WC-MECH [200%] | 8h |  | 6577046 |  |  |  |  |
| 221 | 2.2.5.13 | Install new insulation and reinstate cladding on secondary superheater outlet header - as per scope 5.1 |  | 32h | 2026-09-21 18:00 | 2026-09-23 02:00 | 220, 518 | 1.31d | 0d | WC-LAGG [200%] | 64h |  | 6577046 | 1030 | RL | BOILER 1 MAJOR OVERHAUL LAGGING SCOPE | WCG-SRG |
| 222 | 2.2.5.14 | Secondary Superheater Outlet Header Complete | milestone | 0h | 2026-09-23 02:00 | 2026-09-23 02:00 | 221 | 1.31d | 0d |  |  |  |  |  |  |  |  |
| 223 | 2.2.6 | **Primary Superheater Outlet Header (6)** |  | 8.06d | 2026-09-16 16:00 | 2026-09-19 08:30 |  | 11.25d |  |  | 53.5h | Day2 |  |  |  |  |  |
| 224 | 2.2.6.1 | Remove cladding and insulation on primary superheater outlet header - as per scope 6.1 |  | 12h | 2026-09-16 16:00 | 2026-09-17 04:00 | 140 | 11.25d | 2.12d | WC-LAGG [200%] | 24h |  | 6577046 | 1030 | L1 | BOILER 1 MAJOR OVERHAUL LAGGING SCOPE | WCG-SRG |
| 225 | 2.2.6.2 | Perform dry fused alumina blasting of primary superheater outlet header - As per scope 6.1 |  | 3h | 2026-09-18 03:00 | 2026-09-18 06:00 | 224, 212 | 8.38d | 0d | WC-SNDBST [200%] | 6h |  | 6577046 | 1020 | L | BOILER 1 MOH SANDBLASTING SCOPE | WCG-SRG |
| 226 | 2.2.6.3 | Vacuum blasting debris (PSOH) |  | 4h | 2026-09-18 06:00 | 2026-09-18 10:00 | 225 | 12.38d | 0d | WC-VACTRK; WC-OPER [200%] | 9h |  | 6577046 |  |  |  |  |
| 227 | 2.2.6.4 | Perform NDT of primary superheater outlet header - as per scope 6.1 |  | 6h | 2026-09-18 10:00 | 2026-09-18 16:00 | 226 | 12.38d | 0d | WC-NDT [200%] | 12h |  | 6577046 | 1040 |  | BOILER 1 MAJOR OVERHAUL NDT & METALLURGY SCOPE | WCT-ALS |
| 228 | 2.2.6.5 | Conduct visual inspection of primary superheater outlet header |  | 2.5h | 2026-09-18 16:00 | 2026-09-19 08:30 | 227 | 12.5d | 0d | WGP-ENG | 2.5h |  | 6577046 |  |  |  |  |
| 229 | 2.2.6.6 | Primary Superheater Outlet Header Complete | milestone | 0h | 2026-09-19 08:30 | 2026-09-19 08:30 | 228 | 12.5d | 11.19d |  |  |  |  |  |  |  |  |

| ID | WBS | Task | Type | Duration | Start | Finish | Predecessors | Total slack | Free slack | Resources | Work | Day | Work Order No. | Operation No. | Operation Description | Assigned Department |
| --- | --- | --- | --- | --- | --- | --- | --- | --- | --- | --- | --- | --- | --- | --- | --- | --- |
| 230 | 2.2.7 | **Superheater Enclosure (7)** |  | 9.12d | 2026-09-14 07:00 | 2026-09-17 08:00 |  | 15.56d |  |  | 73h | Day2 |  |  |  |  |
| 231 | 2.2.7.1 | **Superheater Tube Bank (7.2)** |  | 0.31d | 2026-09-15 08:00 | 2026-09-15 10:30 |  | 21.56d |  |  | 2.5h | Day2 |  |  |  |  |
| 232 | 2.2.7.1.1 | Conduct visual inspection of superheater tube bank - as per scope 7.2 |  | 2.5h | 2026-09-15 08:00 | 2026-09-15 10:30 | 327 | 21.56d | 0d | WGP-ENG | 2.5h |  | 6577046 |  |  |  |
| 233 | 2.2.7.1.2 | Superheater Tube Bank Complete | milestone | 0h | 2026-09-15 10:30 | 2026-09-15 10:30 | 232 | 24.25d | 22.94d |  |  |  |  |  |  |  |
| 234 | 2.2.7.2 | **Primary Superheater Outlet Tubes #7, 8 & 9 (7.3)** |  | 3.38d | 2026-09-14 07:00 | 2026-09-15 10:00 |  | 15.56d |  |  | 12h | Day2 |  |  |  |  |
| 235 | 2.2.7.2.1 | Perform metallugical testing of primary superheater outlet tubes 7, 8 & 9 - as per scope 7.3 |  | 4h | 2026-09-14 07:00 | 2026-09-14 11:00 |  | 15.56d | 0d | WC-NDT | 4h |  | 6577046 | 1040 | BOILER 1 MAJOR OVERHAUL NDT & METALLURGY SCOPE | WCT-ALS |
| 236 | 2.2.7.2.2 | Calculate useful remnant life of primary superheater outlet tubes 7, 8 & 9 based on results of OT and HT (HRL) |  | 8h | 2026-09-14 11:00 | 2026-09-15 10:00 | 235 | 15.56d | 0d | WC-NDT | 8h |  | 6577046 | 1040 | BOILER 1 MAJOR OVERHAUL NDT & METALLURGY SCOPE | WCT-ALS |
| 237 | 2.2.7.2.3 | Primary Superheater Outlet Tubes #7, 8 & 9 complete | milestone | 0h | 2026-09-15 10:00 | 2026-09-15 10:00 | 236 | 24.31d | 5.75d |  |  |  |  |  |  |  |
| 238 | 2.2.7.3 | **Secondary Superheater Outlet Tubes #9, 10 (7.4)** |  | 9.12d | 2026-09-14 07:00 | 2026-09-17 08:00 |  | 18.56d |  |  | 40h | Day2 |  |  |  |  |
| 239 | 2.2.7.3.1 | Review current tube metal thermocouples and recommend additional locations and installation methodology as required - as per scope 7.4 (secondary superheater outlet tubes #9 & 10) |  | 4h | 2026-09-15 10:00 | 2026-09-15 14:00 | 236 | 18.56d | 0d | WC-NDT | 4h |  | 6577046 | 1040 | BOILER 1 MAJOR OVERHAUL NDT & METALLURGY SCOPE | WCT-ALS |
| 240 | 2.2.7.3.2 | Perform metallugical testing of secondary superheater outlet tubes #9 & 10 - as per scope 7.4 |  | 4h | 2026-09-15 14:00 | 2026-09-16 09:00 | 239 | 18.56d | 0d | WC-NDT | 4h |  | 6577046 | 1040 | BOILER 1 MAJOR OVERHAUL NDT & METALLURGY SCOPE | WCT-ALS |
| 241 | 2.2.7.3.3 | Calculate useful remnant life of secondary superheater outlet tubes #9 & 10 based on results of OT and HT (HRL) |  | 8h | 2026-09-16 09:00 | 2026-09-17 08:00 | 240 | 18.56d | 0d | WC-NDT | 8h |  | 6577046 | 1040 | BOILER 1 MAJOR OVERHAUL NDT & METALLURGY SCOPE | WCT-ALS |
| 242 | 2.2.7.3.4 | Add additional thermocouples as identified by engineering - as per scope 7.4 (secondary superheater outlet tubes #9 & 10) |  | 12h | 2026-09-14 07:00 | 2026-09-15 09:00 |  | 24.44d | 5.88d | WGP-ETP [200%] | 24h |  | 6577046 |  |  |  |
| 243 | 2.2.7.3.5 | Secondary Superheater Outlet Tubes #9 & 10 Complete | milestone | 0h | 2026-09-17 08:00 | 2026-09-17 08:00 | 241, 242 | 18.56d | 0d |  |  |  |  |  |  |  |
| 244 | 2.2.7.4 | **Superheater Enclosure Wall Tubes (7.5)** |  | 0.31d | 2026-09-15 10:30 | 2026-09-15 13:00 |  | 21.56d |  |  | 2.5h | Day2 |  |  |  |  |
| 245 | 2.2.7.4.1 | Conduct visual inspection of superheater enclosure wall tubes - as per scope 7.5 |  | 2.5h | 2026-09-15 10:30 | 2026-09-15 13:00 | 232 | 21.56d | 0d | WGP-ENG | 2.5h |  | 6577046 |  |  |  |
| 246 | 2.2.7.4.2 | Superheater Enclosure Wall Tubes Complete | milestone | 0h | 2026-09-15 13:00 | 2026-09-15 13:00 | 245 | 23.94d | 5.38d |  |  |  |  |  |  |  |
| 247 | 2.2.7.5 | **Screen Wall Tubes (7.6)** |  | 0.31d | 2026-09-15 13:00 | 2026-09-15 15:30 |  | 23.31d |  |  | 2.5h | Day2 |  |  |  |  |
| 248 | 2.2.7.5.1 | Conduct visual inspection of screen wall tubes - as per scope 7.6 |  | 2.5h | 2026-09-15 13:00 | 2026-09-15 15:30 | 245 | 23.31d | 0d | WGP-ENG | 2.5h |  | 6577046 |  |  |  |
| 249 | 2.2.7.5.2 | Screen Wall Tubes Complete | milestone | 0h | 2026-09-15 15:30 | 2026-09-15 15:30 | 248 | 23.62d | 5.06d |  |  |  |  |  |  |  |
| 250 | 2.2.7.6 | **Superheater Enclosure Headers (7.7)** |  | 5.06d | 2026-09-15 15:30 | 2026-09-17 08:00 |  | 18.56d |  |  | 2.5h | Day2 |  |  |  |  |
| 251 | 2.2.7.6.1 | Conduct visual inspection of superheater enclosure headers - as per scope 7.7 |  | 2.5h | 2026-09-15 15:30 | 2026-09-16 08:00 | 248 | 21.56d | 3d | WGP-ENG | 2.5h |  | 6577046 |  |  |  |
| 252 | 2.2.7.6.2 | Superheater enclosure Headers Complete | milestone | 0h | 2026-09-17 08:00 | 2026-09-17 08:00 | 251, 237, 243, 246, 249 | 18.56d | 17.25d |  |  |  |  |  |  |  |
| 253 | 2.2.7.7 | **Superheater Safety Valve** |  | 0.5d | 2026-09-15 09:00 | 2026-09-15 13:00 |  | 23.94d |  |  | 11h | Day3 |  |  |  |  |
| 254 | 2.2.7.7.1 | Changeout superheater safety valve with certified spare |  | 3h | 2026-09-15 09:00 | 2026-09-15 12:00 | 146 | 23.94d | 0d | WGP-MTP [200%] | 6h |  | 6819791 | 10 | Changeout superheater safety valve with certified spare | W5M1 |
| 255 | 2.2.7.7.2 | 60T Crane to assist with superheater safety valve changeout |  | 3h | 2026-09-15 09:00 | 2026-09-15 12:00 | 146 | 24.06d | 0.12d | WC-CRN60 | 3h |  |  |  |  |  |
| 256 | 2.2.7.7.3 | Send safety valves off-site for service & recertification |  | 1h | 2026-09-15 12:00 | 2026-09-15 13:00 | 254 | 23.94d | 0d | WGP-MTP [200%] | 2h |  |  |  |  |  |
| 257 | 2.2.7.7.4 | Superheater Safety Valve Complete | milestone | 0h | 2026-09-15 13:00 | 2026-09-15 13:00 | 254, 255, 256 | 23.94d | 22.62d |  |  |  |  |  |  |  |

| ID | WBS | Task | Type | Duration | Start | Finish | Predecessors | Total slack | Free slack | Resources | Work | Day | Work Order No. | Operation No. | Operation Description | Assigned Department | Text12 |
| --- | --- | --- | --- | --- | --- | --- | --- | --- | --- | --- | --- | --- | --- | --- | --- | --- | --- |
| 258 | 2.2.8 | **Furnace (8)** |  | 3.94d | 2026-09-14 07:00 | 2026-09-15 14:30 |  | 26.19d |  |  | 36h | Day2 |  |  |  |  |  |
| 259 | 2.2.8.1 | **Burners (8.2)** |  | 1.25d | 2026-09-15 02:30 | 2026-09-15 12:30 |  | 23.75d |  |  | 18h | Day2 |  |  |  |  |  |
| 260 | 2.2.8.1.1 | Internal scaffold access to all 6 burners and inspection ports in sidewalls - Do not restrict access to refractory |  | 8h | 2026-09-15 02:30 | 2026-09-15 10:30 | 115 | 23.75d | 0d | WC-SCAF [200%] | 16h |  | 6577046 | 1010 | BOILER 1 MOH SCAFFOLD SCOPE | WCG-UGL |  |
| 261 | 2.2.8.1.2 | Conduct visual inspection of all burners & inspection ports - as per scope 8.2 |  | 2h | 2026-09-15 10:30 | 2026-09-15 12:30 | 260 | 23.75d | 0d | WGP-ENG | 2h |  | 6577046 |  |  |  |  |
| 262 | 2.2.8.1.3 | Burner Maintenanec Complete | milestone | 0h | 2026-09-15 12:30 | 2026-09-15 12:30 | 261 | 24d | 22.69d |  |  |  |  |  |  |  |  |
| 263 | 2.2.8.2 | **Furnace Tubes (8.3)** |  | 0.25d | 2026-09-15 12:30 | 2026-09-15 14:30 |  | 23.75d |  |  | 2h | Day2 |  |  |  |  |  |
| 264 | 2.2.8.2.1 | Conduct visual inspection of furnace tubes - as per scope 8.3 |  | 2h | 2026-09-15 12:30 | 2026-09-15 14:30 | 261 | 23.75d | 0d | WGP-ENG | 2h |  | 6577046 |  |  |  |  |
| 265 | 2.2.8.2.2 | Furnance Tubes Complete | milestone | 0h | 2026-09-15 14:30 | 2026-09-15 14:30 | 264 | 23.75d | 22.44d |  |  |  |  |  |  |  |  |
| 266 | 2.2.8.3 | **Burner Inspection Ports (8.4)** |  | 0.5d | 2026-09-14 07:00 | 2026-09-14 11:00 |  | 27.19d |  |  | 16h | Day2 |  |  |  |  |  |
| 267 | 2.2.8.3.1 | Inspect & clean burner inspection port glass windows |  | 4h | 2026-09-14 07:00 | 2026-09-14 11:00 |  | 30.75d |  | WGP-MTP [200%] | 8h |  | 6577046 |  |  |  |  |
| 268 | 2.2.8.3.2 | Replace burner inspection port air hoses |  | 4h | 2026-09-14 07:00 | 2026-09-14 11:00 |  | 27.19d | 0d | WGP-MTP [200%] | 8h |  | 6577046 |  |  |  |  |
| 269 | 2.2.8.3.3 | Burner Inspection Port Maintenance Complete | milestone | 0h | 2026-09-14 11:00 | 2026-09-14 11:00 | 268 | 27.19d | 25.88d |  |  |  |  |  |  |  |  |
| 270 | 2.2.9 | **Economiser (9)** |  | 0.88d | 2026-09-15 06:30 | 2026-09-15 13:30 |  | 17.19d |  |  | 11h | Day2 |  |  |  |  |  |
| 271 | 2.2.9.1 | Install marine ply boards flat ontop of economiser fin tubes to enable engineering inspection |  | 2h | 2026-09-15 06:30 | 2026-09-15 08:30 | 186 | 17.19d | 0d | WC-SCAF [200%] | 4h |  | 6577046 | 1010 | BOILER 1 MOH SCAFFOLD SCOPE | WCG-UGL |  |
| 272 | 2.2.9.2 | Conduct visual inspection of economiser - as per scope 9.1 |  | 3h | 2026-09-15 08:30 | 2026-09-15 11:30 | 271 | 23.88d | 0d | WGP-ENG | 3h |  | 6577046 |  |  |  |  |
| 273 | 2.2.9.3 | Remove marine ply boards used for economiser inspections |  | 2h | 2026-09-15 11:30 | 2026-09-15 13:30 | 272 | 23.88d | 0d | WC-SCAF [200%] | 4h |  | 6577046 | 1010 | BOILER 1 MOH SCAFFOLD SCOPE | WCG-UGL |  |
| 274 | 2.2.9.4 | Economiser Complete | milestone | 0h | 2026-09-15 13:30 | 2026-09-15 13:30 | 273 | 23.88d | 22.56d |  |  |  |  |  |  |  |  |
| 275 | 2.2.10 | **HS Piping (10)** |  | 18.12d | 2026-09-15 07:00 | 2026-09-21 08:00 |  | 1.12d |  |  | 201h | Day2 |  |  |  |  |  |
| 276 | 2.2.10.1 | Remove lagging on HS piping - as per scope 10.1 & 10.2 |  | 24h | 2026-09-15 13:00 | 2026-09-16 13:00 | 443 | 0.38d | 0d | WC-LAGG [200%] | 48h |  | 6577046 | 1030 | BOILER 1 MAJOR OVERHAUL LAGGING SCOPE | WCG-SRG | L2 |
| 277 | 2.2.10.2 | Perform fused alumina blasting of HS piping exposed welds - as per scope 10.1 |  | 5h | 2026-09-16 18:00 | 2026-09-16 23:00 | 276 | 3.88d | 0d | WC-SNDBST [200%] | 10h |  | 6577046 | 1020 | BOILER 1 MOH SANDBLASTING SCOPE | WCG-SRG | M |
| 278 | 2.2.10.3 | Vacuum blasting debris (HS Piping) |  | 12h | 2026-09-16 23:00 | 2026-09-17 13:00 | 277 | 4.56d | 0d | WC-VACTRK; WC-OPER [200%] | 18h |  | 6577046 |  |  |  |  |
| 279 | 2.2.10.4 | Perform NDT on HS piping - as per scope 10.1 |  | 8h | 2026-09-17 13:00 | 2026-09-18 12:00 | 278 | 3.44d | 0d | WC-NDT [200%] | 16h |  | 6577046 | 1040 | BOILER 1 MAJOR OVERHAUL NDT & METALLURGY SCOPE | WCT-ALS |  |
| 280 | 2.2.10.5 | Perform metallugical testing of HS piping - as per scope 10.1 |  | 12h | 2026-09-18 12:00 | 2026-09-19 15:00 | 279 | 3.44d | 0d | WC-NDT | 12h |  | 6577046 | 1040 | BOILER 1 MAJOR OVERHAUL NDT & METALLURGY SCOPE | WCT-ALS |  |
| 281 | 2.2.10.6 | Conduct visual inspection of HS piping & pipe hangers - as per scope 10.1 & 10.2 |  | 3h | 2026-09-19 15:00 | 2026-09-20 08:00 | 280 | 6.56d | 0d | WGP-ENG | 3h |  | 6577046 |  |  |  |  |

| ID | WBS | Task | Type | Duration | Start | Finish | Predecessors | Total slack | Free slack | Resources | Work | Day | Work Order No. | Operation No. | Assigned Department | Text12 |
| --- | --- | --- | --- | --- | --- | --- | --- | --- | --- | --- | --- | --- | --- | --- | --- | --- |
| 282 | 2.2.10.7 | **Adhoc Maintenance - HS Piping** |  | 9.75d | 2026-09-15 07:00 | 2026-09-18 13:00 |  | 9.88d |  |  | 46h | Day2 |  |  |  |  |
| 283 | 2.2.10.7.1 | **Replace Faulty HS Flow Element (Adhoc) (10.2)** |  | 9.12d | 2026-09-15 07:00 | 2026-09-18 08:00 |  | 9.88d |  |  | 39h | Day2 |  |  |  |  |
| 284 | 2.2.10.7.1.1 | Cut out and remove existing HS flow element |  | 5h | 2026-09-15 07:00 | 2026-09-15 12:00 | 115 | 9.88d | 0d | WC-MISC | 5h |  | WO5731696 | 10 | WCG-OTHER |  |
| 285 | 2.2.10.7.1.2 | Install new HS Flow element, with appropriate Weld Procedure |  | 5h | 2026-09-15 12:00 | 2026-09-15 17:00 | 284 | 11.62d | 1.75d | WC-MISC | 5h |  | WO5731696 | 20 | WCG-OTHER |  |
| 286 | 2.2.10.7.1.3 | Perform NDT of welds on newly installed HS flow element BEFORE PWHT |  | 2h | 2026-09-16 07:00 | 2026-09-16 09:00 | 285 | 9.88d | 0d | WC-NDT [200%] | 4h |  | WO5731696 | 30 | WCT-ALS |  |
| 287 | 2.2.10.7.1.4 | Perform post weld heat treatment of HS flow element welds |  | 12h | 2026-09-16 09:00 | 2026-09-17 11:00 | 286 | 11.94d | 0d | WC-MISC | 12h |  | WO5731696 | 40 | WCG-OTHER |  |
| 288 | 2.2.10.7.1.5 | Perform NDT of welds on newly installed HS flow element AFTER PWHT |  | 4h | 2026-09-17 11:00 | 2026-09-17 15:00 | 287 | 11.94d | 0d | WC-NDT [200%] | 8h |  | WO5731696 | 50 | WCT-ALS |  |
| 289 | 2.2.10.7.1.6 | Perform calibration of DP transmitter to suit new flow element characteristics |  | 2h | 2026-09-17 15:00 | 2026-09-17 17:00 | 288 | 11.94d | 1.75d | WGP-ETP [200%] | 4h |  | WO5731696 | 60 | W5E1 |  |
| 290 | 2.2.10.7.1.7 | Inspect removed flow element to determine cause of deviation |  | 1h | 2026-09-18 07:00 | 2026-09-18 08:00 | 289 | 10.19d | 0d | WGP-ENG | 1h |  | WO5731696 | 70 | W5M1 |  |
| 291 | 2.2.10.7.1.8 | HS Flow Element Replacement Complete | milestone | 0h | 2026-09-18 08:00 | 2026-09-18 08:00 | 290 | 11.94d | 0d |  |  |  |  |  |  |  |
| 292 | 2.2.10.7.2 | **Westarc - Changeout leaking gate valve on BLR1 HS Line** |  | 0.62d | 2026-09-18 08:00 | 2026-09-18 13:00 |  | 11.94d |  |  | 7h | Day2 |  |  |  |  |
| 293 | 2.2.10.7.2.1 | Changeout leaking gate valve on BLR1 HS Line |  | 3h | 2026-09-18 08:00 | 2026-09-18 11:00 | 291 | 11.94d | 0d | WESTARC | 3h |  | WO6678721 | 10 | W5M1 |  |
| 294 | 2.2.10.7.2.2 | Mpi welds after hs line valve replacement |  | 2h | 2026-09-18 11:00 | 2026-09-18 13:00 | 293 | 11.94d | 0d | WC-NDT [200%] | 4h |  | WO6678721 | 20 | WCT-ALS |  |
| 295 | 2.2.10.7.3 | Adhoc Maintenance - HS Piping - Complete | milestone | 0h | 2026-09-18 13:00 | 2026-09-18 13:00 | 294, 291 | 11.94d | 5.38d |  |  |  |  |  |  |  |
| 296 | 2.2.10.8 | Reinstante lagging on HS Piping |  | 24h | 2026-09-20 08:00 | 2026-09-21 08:00 | 291, 281, 518, 295 | 6.56d | 0d | WC-LAGG [200%] | 48h |  |  |  |  | RL |
| 297 | 2.2.10.9 | HS Piping Maintenance Complete | milestone | 0h | 2026-09-21 08:00 | 2026-09-21 08:00 | 296 | 6.56d | 5.25d |  |  |  |  |  |  |  |
| 298 | 2.2.11 | **Flash Tank & Blowdown Vessel (11)** |  | 17d | 2026-09-13 23:00 | 2026-09-19 15:00 |  | 13.12d |  |  | 280h | Day2 |  |  |  |  |
| 299 | 2.2.11.1 | **Flash Tank (11.2)** |  | 16.75d | 2026-09-13 23:00 | 2026-09-19 13:00 |  | 13.12d |  |  | 258h | Day2 |  |  |  |  |
| 300 | 2.2.11.1.1 | Perform fused alumina blasting of exposed external door welds, nozzle welds, and support leg attachment welds (FLT) |  | 3h | 2026-09-13 23:00 | 2026-09-14 02:00 | 118 | 18d | 0d | WC-SNDBST [200%] | 6h |  | 6577046 | 1020 | WCG-SRG | L |
| 301 | 2.2.11.1.2 | Vacuum blasting debris (FLT) |  | 4h | 2026-09-14 02:00 | 2026-09-14 09:00 | 300 | 25.62d | 0d | WC-VACTRK; WC-OPER [200%] | 6h |  | 6577046 |  |  |  |
| 302 | 2.2.11.1.3 | Perform NDT of flash tank – as per scope 11.2 |  | 8h | 2026-09-14 09:00 | 2026-09-15 08:00 | 301 | 24.88d | 0d | WC-NDT [200%] | 16h |  | 6577046 | 1040 | WCT-ALS |  |
| 303 | 2.2.11.1.4 | Conduct visual inspection of flash tank – Internal and External |  | 2h | 2026-09-15 08:00 | 2026-09-15 10:00 | 302 | 24.88d | 12.38d | WGP-ENG | 2h |  | 6577046 |  |  |  |
| 304 | 2.2.11.1.5 | **Flash Tank Maintenance** |  | 13.31d | 2026-09-15 02:30 | 2026-09-19 13:00 |  | 12.56d |  |  | 228h | Day3 |  |  |  |  |
| 305 | 2.2.11.1.5.1 | Remove flash tank fisher control valve & prepare for transport |  | 2h | 2026-09-15 02:30 | 2026-09-15 04:30 | 115 | 12.56d | 0d | WC-MECH [200%] | 4h |  |  |  |  |  |
| 306 | 2.2.11.1.5.2 | Remove flash tank leveltrol & prepare for transport |  | 2h | 2026-09-15 04:30 | 2026-09-15 06:30 | 305 | 12.56d | 0d | WC-MECH [200%] | 4h |  | WO6522219 | 10 | W5M1 |  |
| 307 | 2.2.11.1.5.3 | Remove flash tank safety valve & prepare for transport |  | 2h | 2026-09-15 06:30 | 2026-09-15 08:30 | 306 | 13.44d | 0d | WC-MECH [200%] | 4h |  | 6800110 | 10 | W5M1 |  |
| 308 | 2.2.11.1.5.4 | Franna to assist with removing flash tank valves & leveltrol |  | 6h | 2026-09-15 07:00 | 2026-09-15 13:00 | 115 | 24.5d | 12d | WC-CRN60 | 6h |  |  |  |  |  |
| 309 | 2.2.11.1.5.5 | WPC to service flash tank fisher control valve & leveltrol |  | 4ed | 2026-09-15 06:30 | 2026-09-19 06:30 | 306 | 12.56d | 0d | WGP-DELAY | 96h |  |  |  |  |  |
| 310 | 2.2.11.1.5.6 | Valvology - Service and re-certify flash tank safety valve |  | 4ed | 2026-09-15 08:30 | 2026-09-19 08:30 | 307 | 13.44d | 0.25d | WGP-DELAY | 96h |  | 6800110 | 20 | WCG-OTHER |  |
| 311 | 2.2.11.1.5.7 | Install flash tank fisher control valve |  | 2h | 2026-09-19 06:30 | 2026-09-19 08:30 | 309 | 13.19d | 0d | WC-MECH [200%] | 4h |  |  |  |  |  |
| 312 | 2.2.11.1.5.8 | Install flash tank leveltrol |  | 2h | 2026-09-19 08:30 | 2026-09-19 10:30 | 311 | 13.19d | 0d | WC-MECH [200%] | 4h |  | WO6522219 | 20 | W5M1 |  |
| 313 | 2.2.11.1.5.9 | Install flash tank safety valve |  | 2h | 2026-09-19 10:30 | 2026-09-19 12:30 | 310, 312 | 13.19d | 0.06d | WC-MECH [200%] | 4h |  | 6800110 | 30 | W5M1 |  |
| 314 | 2.2.11.1.5.10 | Franna to assist with installing flash tank valves & leveltrol |  | 6h | 2026-09-19 07:00 | 2026-09-19 13:00 | 309 | 12.5d | 0d | WC-CRN60 | 6h |  |  |  |  |  |
| 315 | 2.2.11.1.6 | Flash Tank Complete | milestone | 0h | 2026-09-19 13:00 | 2026-09-19 13:00 | 303, 308, 313, 314 | 13.12d | 0d |  |  |  |  |  |  |  |

Notes:
- 284: Operation Description: WESTARC - Cut out and remove existing HS flow element
- 285: Operation Description: WESTARC - Install new HS Flow element, with appropriate Weld Procedure
- 286: Operation Description: Perform NDT of welds on newly installed HS flow element BEFORE PWHT
- 287: Operation Description: HEATECH - Perform post weld heat treatment of HS flow element welds
- 288: Operation Description: Perform NDT of welds on newly installed HS flow element AFTER PWHT
- 289: Operation Description: Perform calibration of DP transmitter to suit new flow element characteristics
- 290: Operation Description: Inspect removed flow element to determine cause of deviation
- 293: Operation Description: Changeout leaking gate valve on BLR1 HS Line
- 294: Operation Description: Mpi welds after hs line valve replacement
- 300: Operation Description: BOILER 1 MOH SANDBLASTING SCOPE
- 302: Operation Description: BOILER 1 MAJOR OVERHAUL NDT & METALLURGY SCOPE
- 306: Operation Description: Remove flash tank leveltrol & prepare for transport
- 307: Operation Description: Remove flash tank safety valve & prepare for transport
- 310: Operation Description: Valvology - Service and re-certify flash tank safety valve
- 312: Operation Description: Install flash tank leveltrol
- 313: Operation Description: Install flash tank safety valve

| ID | WBS | Task | Type | Duration | Start | Finish | Predecessors | Total slack | Free slack | Resources | Work | Day | Work Order No. | Operation No. | Text12 | Operation Description | Assigned Department |
| --- | --- | --- | --- | --- | --- | --- | --- | --- | --- | --- | --- | --- | --- | --- | --- | --- | --- |
| 316 | 2.2.11.2 | **Blowdown Vessel (11.3)** |  | 1.62d | 2026-09-14 02:00 | 2026-09-14 15:00 |  | 18d |  |  | 20h | Day2 |  |  |  |  |  |
| 317 | 2.2.11.2.1 | Perform fused alumina blasting of exposed external manway welds (BDV) |  | 2h | 2026-09-14 02:00 | 2026-09-14 04:00 | 300 | 18d | 0d | WC-SNDBST [200%] | 4h |  | 6577046 | 1020 | L | BOILER 1 MOH SANDBLASTING SCOPE | WCG-SRG |
| 318 | 2.2.11.2.2 | Vacuum blasting debris (BDV) |  | 4h | 2026-09-14 04:00 | 2026-09-14 09:00 | 317 | 27.25d | 0d | WC-VACTRK; WC-OPER [200%] | 6h |  | 6577046 |  |  |  |  |
| 319 | 2.2.11.2.3 | Perform NDT of blowdown vessel – as per scope 11.3 |  | 4h | 2026-09-14 09:00 | 2026-09-14 13:00 | 318 | 27.25d | 0d | WC-NDT [200%] | 8h |  | 6577046 | 1040 |  | BOILER 1 MAJOR OVERHAUL NDT & METALLURGY SCOPE | WCT-ALS |
| 320 | 2.2.11.2.4 | Conduct visual inspection of blowdown vessel – Internal and External |  | 2h | 2026-09-14 13:00 | 2026-09-14 15:00 | 319 | 27.25d | 0d | WGP-ENG | 2h |  | 6577046 |  |  |  |  |
| 321 | 2.2.11.2.5 | Blowdown Vessel Complete | milestone | 0h | 2026-09-14 15:00 | 2026-09-14 15:00 | 320 | 27.88d | 14.75d |  |  |  |  |  |  |  |  |
| 322 | 2.2.11.3 | Remove CSE – Flash Tank door #16 and Blowdown Vessel door #17 |  | 2h | 2026-09-19 13:00 | 2026-09-19 15:00 | 315, 321 | 13.12d | 0d | WGP-PROD | 2h |  | 6577046 |  |  |  |  |
| 323 | 2.2.11.4 | Flash Tank & Blowdown Vessel Complete | milestone | 0h | 2026-09-19 15:00 | 2026-09-19 15:00 | 322 | 13.12d | 0d |  |  |  |  |  |  |  |  |
| 324 | 2.2.12 | **FD Fan (12)** |  | 13.25d | 2026-09-14 07:00 | 2026-09-18 17:00 |  | 4.38d |  |  | 161h | Day2 |  |  |  |  |  |
| 325 | 2.2.12.1 | **FD Fan and Inlet Attenuation Module Inspection** |  | 9.88d | 2026-09-15 07:00 | 2026-09-18 14:00 |  | 1.38d |  |  | 122h | Day2 |  |  |  |  |  |
| 326 | 2.2.12.1.1 | **FD Fan Maintenance** |  | 9.88d | 2026-09-15 07:00 | 2026-09-18 14:00 |  | 9d |  |  | 73h | Day2 |  |  |  |  |  |
| 327 | 2.2.12.1.1.1 | Visually inspect inlet guide vanes, bushes, and linkages |  | 1h | 2026-09-15 07:00 | 2026-09-15 08:00 | 105 | 9d | 0d | WGP-ENG | 1h |  | 6577046 |  |  |  |  |
| 328 | 2.2.12.1.1.2 | Ensure IGV bushes are protected from water and debris intrusion prior to LPW of Fan impeller | inactive | 2h | 2026-09-13 19:00 | 2026-09-13 21:00 |  | 11.12d | 0d | WC-OPER [200%] | 4h |  | 6577046 |  |  |  |  |
| 329 | 2.2.12.1.1.3 | LPW FD fan impeller | inactive | 8h | 2026-09-13 21:00 | 2026-09-14 11:00 | 328 | 11.12d | 2.62d | WC-OPER [200%]; WC-LPW | 12h |  | 6577046 |  |  |  |  |
| 330 | 2.2.12.1.1.4 | Remove FD fan bearings and strip shaft ready for NDT |  | 12h | 2026-09-15 08:00 | 2026-09-16 10:00 | 329, 344, 327 | 9d | 0d | WGP-MTP [200%] | 24h |  | 6577046 |  |  |  |  |
| 331 | 2.2.12.1.1.5 | Perform NDT of FD fan shaft |  | 6h | 2026-09-16 10:00 | 2026-09-16 16:00 | 330 | 9d | 0d | WC-NDT [200%] | 12h |  | 6577046 | 1040 |  | BOILER 1 MAJOR OVERHAUL NDT & METALLURGY SCOPE | WCT-ALS |
| 332 | 2.2.12.1.1.6 | Install new FD fan bearings and inpro seals |  | 12h | 2026-09-16 16:00 | 2026-09-18 08:00 | 331 | 9.81d | 0d | WGP-MTP [200%] | 24h |  | 6577046 |  |  |  |  |
| 333 | 2.2.12.1.1.7 | Service Automatic Lubricators |  | 2h | 2026-09-18 08:00 | 2026-09-18 10:00 | 332 | 9.81d | 0d | WGP-MTP [200%] | 4h |  | 6577046 |  |  |  |  |
| 334 | 2.2.12.1.1.8 | Changeout FD fan actuator ram |  | 2h | 2026-09-18 10:00 | 2026-09-18 12:00 | 333 | 14.81d | 0d | WGP-MTP [200%] | 4h |  |  |  |  |  |  |
| 335 | 2.2.12.1.1.9 | Stroke test and confirm smooth operation of IGV |  | 2h | 2026-09-18 12:00 | 2026-09-18 14:00 | 334 | 14.81d | 13.5d | WGP-ETP [200%] | 4h |  | 6577046 |  |  |  |  |
| 336 | 2.2.12.1.2 | **Replace FD Fan Outlet Expansion Joint** |  | 8.12d | 2026-09-15 10:00 | 2026-09-18 03:00 |  | 1d |  |  | 48h | Day2 |  |  |  |  |  |
| 337 | 2.2.12.1.2.1 | Partial insulation removal as required to enable access to all expansion joint bolts |  | 6h | 2026-09-15 10:00 | 2026-09-15 16:00 | 371 | 1d | 0d | WC-LAGG [200%] | 12h |  | 6577046 | 1030 | L1 | BOILER 1 MAJOR OVERHAUL LAGGING SCOPE | WCG-SRG |
| 338 | 2.2.12.1.2.2 | Replace FD fan outlet expansion joint |  | 12h | 2026-09-15 16:00 | 2026-09-16 04:00 | 337 | 21.31d | 5.12d | WC-MECH [200%] | 24h |  | 6577046 |  |  |  |  |
| 339 | 2.2.12.1.2.3 | Refit insulation after replacement of FD Fan outlet expansion joint |  | 6h | 2026-09-17 21:00 | 2026-09-18 03:00 | 338, 518 | 16.19d | 1.75d | WC-LAGG [200%] | 12h |  | 6577046 | 1030 | RL | BOILER 1 MAJOR OVERHAUL LAGGING SCOPE | WCG-SRG |
| 340 | 2.2.12.1.3 | Conduct visual inspection of FD fan - As per scope 12.2 |  | 1h | 2026-09-16 10:00 | 2026-09-16 11:00 | 330, 337 | 21.19d | 19.88d | WGP-ENG | 1h |  | 6577046 |  |  |  |  |

Notes:
- 328: Removed from scope
- 329: Removed from scope

| ID | WBS | Task | Type | Duration | Start | Finish | Predecessors | Total slack | Free slack | Resources | Work | Day | Work Order No. | Operation No. | Operation Description | Assigned Department | Text12 |
| --- | --- | --- | --- | --- | --- | --- | --- | --- | --- | --- | --- | --- | --- | --- | --- | --- | --- |
| 341 | 2.2.12.2 | **FD Fan Motor** |  | 13.25d | 2026-09-14 07:00 | 2026-09-18 17:00 |  | 9.5d |  |  | 34h | Day2 |  |  |  |  |  |
| 342 | 2.2.12.2.1 | Raise HV permit for FD fan motor |  | 1h | 2026-09-14 07:00 | 2026-09-14 08:00 |  | 9.5d | 0d | WGP-ETP | 1h |  | 6736730 | 15 | RAISE FD MOTOR HV PERMIT | W5E1 |  |
| 343 | 2.2.12.2.2 | Disconnect FD fan motor ready for changeout |  | 2h | 2026-09-14 08:00 | 2026-09-14 10:00 | 342 | 9.5d | 0d | WGP-ETP [200%] | 4h |  | 6736730 | 20 | DISCONNECT MOTOR FOR OVERHAUL | W5E1 |  |
| 344 | 2.2.12.2.3 | Remove FD fan motor and send to RIMS yard |  | 4h | 2026-09-14 10:00 | 2026-09-14 14:00 | 343 | 9.5d | 2.25d | WGP-MTP [200%] | 8h |  | 6577046 |  |  |  |  |
| 345 | 2.2.12.2.4 | 25t crane to assist with FD fan motor removal |  | 4h | 2026-09-14 10:00 | 2026-09-14 14:00 | 343 | 21.44d | 11.62d | WC-CRN25 | 4h |  |  |  |  |  |  |
| 346 | 2.2.12.2.5 | Review report for new motor and confirm correct grease has been used - Mobilith SHC100 (AML381) |  | 1h | 2026-09-18 10:00 | 2026-09-18 11:00 | 344, 333 | 9.81d | 0d | WGP-ENG | 1h |  | 6577046 |  |  |  |  |
| 347 | 2.2.12.2.6 | Install new FD fan motor |  | 4h | 2026-09-18 11:00 | 2026-09-18 15:00 | 346 | 11.56d | 0d | WGP-MTP [200%] | 8h |  | 6577046 |  |  |  |  |
| 348 | 2.2.12.2.7 | 25T crane to assist with FD fan motor installation |  | 4h | 2026-09-18 11:00 | 2026-09-18 15:00 | 346, 345 | 11.56d | 0d | WC-CRN25 | 4h |  | 6577046 |  |  |  |  |
| 349 | 2.2.12.2.8 | Connect new FD fan motor |  | 2h | 2026-09-18 15:00 | 2026-09-18 17:00 | 347, 348 | 11.56d | 0d | WGP-ETP [200%] | 4h |  | 6736730 | 30 | RECONNECT MOTOR FOR OVERHAUL | W5E1 |  |
| 350 | 2.2.12.3 | **Adhoc Maintenance - FD Fan** |  | 0.38d | 2026-09-14 07:00 | 2026-09-14 10:00 |  | 27.31d |  |  | 5h | Day2 |  |  |  |  |  |
| 351 | 2.2.12.3.1 | Fit auto drain to fd fan bypass instrumentation |  | 2h | 2026-09-14 07:00 | 2026-09-14 09:00 |  | 27.44d | 0.12d | WGP-ETP | 2h |  | WO6567186 | 10 | Fit auto drain to fd fan bypass instrumentation | W5E1 |  |
| 352 | 2.2.12.3.2 | Extend FD fan shaft guard |  | 3h | 2026-09-14 07:00 | 2026-09-14 10:00 |  | 27.31d | 0d | WGP-MTP | 3h |  | WO6805557 | 10 | Extend FD fan shaft guard | W5M1 |  |
| 353 | 2.2.12.3.3 | Adhoc Maintenance - FD Fan - Complete | milestone | 0h | 2026-09-14 10:00 | 2026-09-14 10:00 | 352, 351 | 27.31d | 12.88d |  |  |  |  |  |  |  |  |
| 354 | 2.2.12.4 | FD Fan Complete | milestone | 0h | 2026-09-18 17:00 | 2026-09-18 17:00 | 349, 339, 353 | 14.44d | 13.12d |  |  |  |  |  |  |  |  |
| 355 | 2.2.13 | **RAH & Ducting (13)** |  | 16.5d | 2026-09-14 07:00 | 2026-09-19 19:00 |  | 1.75d |  |  | 348.5h | Day2 |  |  |  |  |  |
| 356 | 2.2.13.1 | Erect falls protection barricades & install access ladders for doors #2, #3 & FD fan - as per scope 13.1.10-13 |  | 5h | 2026-09-14 13:00 | 2026-09-14 18:00 | 69 | 1d | 0d | WC-SCAF [200%] | 10h |  | 6577046 | 1010 | BOILER 1 MOH SCAFFOLD SCOPE | WCG-UGL |  |
| 357 | 2.2.13.2 | Strip lagging around RAH drive gear to allow inspection |  | 4h | 2026-09-14 18:00 | 2026-09-14 22:00 | 356 | 1d | 0d | WC-LAGG [200%] | 8h |  | 6577046 | 1030 | BOILER 1 MAJOR OVERHAUL LAGGING SCOPE | WCG-SRG | L1 |
| 358 | 2.2.13.3 | **Rotary Air Heater Drive Mechanism (13.2)** |  | 0.56d | 2026-09-15 07:00 | 2026-09-15 11:30 |  | 24.12d |  |  | 7.5h | Day2 |  |  |  |  |  |
| 359 | 2.2.13.3.1 | Conduct visual inspection of drive gear, pin rack and gearbox |  | 1.5h | 2026-09-15 07:00 | 2026-09-15 08:30 | 357 | 24.12d | 0d | WGP-ENG | 1.5h |  | 6577046 |  |  |  |  |
| 360 | 2.2.13.3.2 | Lubricate and maintain drive gear |  | 3h | 2026-09-15 08:30 | 2026-09-15 11:30 | 359 | 24.12d | 12.94d | WC-MECH [200%] | 6h |  | 6577046 |  |  |  |  |
| 361 | 2.2.13.4 | **Rotary Air Heater Body & Bearings (13.3)** |  | 4.44d | 2026-09-14 22:00 | 2026-09-16 09:30 |  | 18.62d |  |  | 53.5h | Day2 |  |  |  |  |  |
| 362 | 2.2.13.4.1 | Conduct inspection of RAH hot and cold end bearings and note clearances |  | 4h | 2026-09-14 22:00 | 2026-09-15 02:00 | 357 | 18.62d | 0d | WC-MECH [200%] | 8h |  | 6577046 |  |  |  |  |
| 363 | 2.2.13.4.2 | Conduct inspection and service of hot end oil system cooler, pump and filters |  | 4h | 2026-09-15 02:00 | 2026-09-15 06:00 | 362 | 18.62d | 0.12d | WC-MECH [200%] | 8h |  | 6577046 |  |  |  |  |
| 364 | 2.2.13.4.3 | Conduct visual inspection of RAH hot and cold end baskets |  | 2.5h | 2026-09-15 07:00 | 2026-09-15 09:30 | 363 | 18.5d | 0d | WGP-ENG | 2.5h |  | 6577046 |  |  |  |  |
| 365 | 2.2.13.4.4 | Install RAH anti-rotation locking device |  | 1h | 2026-09-15 09:30 | 2026-09-15 10:30 | 364 | 18.5d | 0d | WC-MECH [200%] | 2h |  | 6577046 |  |  |  |  |
| 366 | 2.2.13.4.5 | Conduct visual inspection of RAH radial and circumferential seals, hot and cold end |  | 2.5h | 2026-09-15 10:30 | 2026-09-15 13:00 | 365 | 18.5d | 0d | WGP-ENG | 2.5h |  | 6577046 |  |  |  |  |
| 367 | 2.2.13.4.6 | Replace RAH radial and circumferential seals if required as after inspection |  | 10h | 2026-09-15 13:00 | 2026-09-15 23:00 | 366 | 19.44d | 0d | WC-MECH [200%] | 20h |  | 6577046 |  |  |  |  |
| 368 | 2.2.13.4.7 | Measure and record circumferential and radial seal clearances, hot and cold end |  | 4h | 2026-09-15 23:00 | 2026-09-16 03:00 | 367 | 19.44d | 0d | WC-MECH [200%] | 8h |  | 6577046 |  |  |  |  |
| 369 | 2.2.13.4.8 | Conduct visual inspection of RAH by engineering |  | 2.5h | 2026-09-16 07:00 | 2026-09-16 09:30 | 368 | 18.94d | 9.19d | WGP-ENG | 2.5h |  | 6577046 |  |  |  |  |

| ID | WBS | Task | Type | Duration | Start | Finish | Predecessors | Total slack | Free slack | Resources | Work | Day | Work Order No. | Operation No. | Text12 | Operation Description | Assigned Department |
| --- | --- | --- | --- | --- | --- | --- | --- | --- | --- | --- | --- | --- | --- | --- | --- | --- | --- |
| 370 | 2.2.13.5 | **RAH Expansion Joints (13.4)** |  | 13.38d | 2026-09-14 22:00 | 2026-09-19 09:00 |  | 1d |  |  | 170h | Day2 |  |  |  |  |  |
| 371 | 2.2.13.5.1 | Strip lagging for expansion joint replacement |  | 12h | 2026-09-14 22:00 | 2026-09-15 10:00 | 357 | 1d | 0d | WC-LAGG [200%] | 24h |  | 6577046 | 1030 | L1 | BOILER 1 MAJOR OVERHAUL LAGGING SCOPE | WCG-SRG |
| 372 | 2.2.13.5.2 | Replace gas inlet expansion joint (hot end) |  | 24h | 2026-09-16 02:30 | 2026-09-17 02:30 | 371, 382 | 10.31d | 0d | WC-MECH [200%] | 48h |  | 6577046 |  |  |  |  |
| 373 | 2.2.13.5.3 | Replace gas outlet expansion joint (cold end) |  | 24h | 2026-09-17 02:30 | 2026-09-18 02:30 | 372 | 10.31d | 0d | WC-MECH [200%] | 48h |  | 6577046 |  |  |  |  |
| 374 | 2.2.13.5.4 | Replace air outlet (hot end) expansion joint |  | 24h | 2026-09-18 02:30 | 2026-09-19 02:30 | 373 | 10.31d | 0.56d | WC-MECH [200%] | 48h |  | 6577046 |  |  |  |  |
| 375 | 2.2.13.5.5 | Conduct detailed inspection of RAH gas inlet and outlet expansion joints after installation |  | 2h | 2026-09-19 07:00 | 2026-09-19 09:00 | 374 | 9.75d | 0d | WGP-ENG | 2h |  | 6577046 |  |  |  |  |
| 376 | 2.2.13.6 | **Flue Gas and Air Ducting (13.5)** |  | 12.5d | 2026-09-15 07:00 | 2026-09-19 11:00 |  | 12.19d |  |  | 6h | Day2 |  |  |  |  |  |
| 377 | 2.2.13.6.1 | Stroke test bypass and main dampers for full fucntionality and smooth operation |  | 2h | 2026-09-15 07:00 | 2026-09-15 09:00 | 357 | 24.44d | 13.25d | WGP-ETP [200%] | 4h |  | 6577046 |  |  |  |  |
| 378 | 2.2.13.6.2 | Conduct internal inspection of RAH gas and air ducting - as per scope 13.5 |  | 2h | 2026-09-19 09:00 | 2026-09-19 11:00 | 375 | 9.75d | 0d | WGP-ENG | 2h |  | 6577046 |  |  |  |  |
| 379 | 2.2.13.7 | **RAH Fire Control System (13.6)** |  | 0.12d | 2026-09-16 03:00 | 2026-09-16 04:00 |  | 22.06d |  |  | 2h | Day2 |  |  |  |  |  |
| 380 | 2.2.13.7.1 | Inspect condition of RAH fire system inside RAH ducting |  | 1h | 2026-09-16 03:00 | 2026-09-16 04:00 | 368 | 22.06d | 10.88d | WC-MECH [200%] | 2h |  | 6577046 |  |  |  |  |
| 381 | 2.2.13.8 | **Stack (13.7)** |  | 3d | 2026-09-15 02:30 | 2026-09-16 02:30 |  | 10.31d |  |  | 50.5h | Day2 |  |  |  |  |  |
| 382 | 2.2.13.8.1 | Replace stack inlet expansion joint |  | 24h | 2026-09-15 02:30 | 2026-09-16 02:30 | 115 | 10.31d | 0d | WC-MECH [200%] | 48h |  | 6577046 |  |  |  |  |
| 383 | 2.2.13.8.2 | Visually inspect Stack internal surface |  | 2.5h | 2026-09-15 07:00 | 2026-09-15 09:30 | 115 | 24.38d | 13.19d | WGP-ENG | 2.5h |  | 6577046 |  |  |  |  |
| 384 | 2.2.13.9 | Replace RAH insulation with new upon completion of inspection. Re-use cladding if in acceptable condition |  | 8h | 2026-09-19 11:00 | 2026-09-19 19:00 | 369, 375, 378, 518 | 11.19d | 0d | WC-LAGG [200%] | 16h |  | 6577046 | 1030 | RL | BOILER 1 MAJOR OVERHAUL LAGGING SCOPE | WCG-SRG |
| 385 | 2.2.13.10 | Strip RAH falls protection barricades & access ladders for doors #2, #3 & FD fan |  | 4h | 2026-09-19 11:00 | 2026-09-19 15:00 | 369, 375, 378 | 11.69d | 0.5d | WC-SCAF [200%] | 8h |  | 6577046 | 1010 |  | BOILER 1 MOH SCAFFOLD SCOPE | WCG-UGL |
| 386 | 2.2.13.11 | **Adhoc Maintenance** |  | 6.5d | 2026-09-14 07:00 | 2026-09-16 11:00 |  | 21.19d |  |  | 17h | Day2 |  |  |  |  |  |
| 387 | 2.2.13.11.1 | Replace worn linkage on rah bypass damper |  | 4h | 2026-09-16 07:00 | 2026-09-16 11:00 | 368 | 21.19d | 10d | WGP-MTP [200%] | 8h |  | WO5926896 | 10 |  | Replace worn linkage on rah bypass damper | W5M1 |
| 388 | 2.2.13.11.2 | **Changeout RAH gearbox motor - leaking oil** |  | 0.75d | 2026-09-14 07:00 | 2026-09-14 13:00 |  | 25.19d |  |  | 9h | Day2 |  |  |  |  |  |
| 389 | 2.2.13.11.2.1 | Disconnect RAH gearbox motor |  | 1h | 2026-09-14 07:00 | 2026-09-14 08:00 |  | 25.19d | 0d | WGP-ETP | 1h |  | WO6750113 | 10 |  | Disconnect RAH gearbox motor | W5E1 |
| 390 | 2.2.13.11.2.2 | Changeout RAH gearbox motor |  | 3h | 2026-09-14 08:00 | 2026-09-14 11:00 | 389 | 26.94d | 0d | WC-MECH [200%] | 6h |  | WO6750113 | 20 |  | Changeout RAH gearbox motor | WCG-UGL |
| 391 | 2.2.13.11.2.3 | Reconnect RAH gearbox motor |  | 2h | 2026-09-14 11:00 | 2026-09-14 13:00 | 390 | 26.94d | 15.75d | WGP-ETP | 2h |  | WO6750113 | 30 |  | Reconnect RAH gearbox motor | W5E1 |
| 392 | 2.2.13.12 | RAH & Ducting Maintenance Complete | milestone | 0h | 2026-09-19 19:00 | 2026-09-19 19:00 | 360, 369, 375, 378, 384, 385, 380, 377, 383, 387, 391 | 11.19d | 9.88d |  |  |  |  |  |  |  |  |
| 393 | 2.2.14 | **Windbox and Air Registers (14)** |  | 7.38d | 2026-09-15 08:30 | 2026-09-17 19:30 |  | 17.12d |  |  | 59h | Day2 |  |  |  |  |  |
| 394 | 2.2.14.1 | Erect access scaffold to allow access to windbox and air registers - as per scope 14.1 |  | 8h | 2026-09-15 08:30 | 2026-09-15 16:30 | 271 | 17.19d | 0d | WC-SCAF [200%] | 16h |  | 6577046 | 1010 |  | BOILER 1 MOH SCAFFOLD SCOPE | WCG-UGL |
| 395 | 2.2.14.2 | Stroke test and lubricate air registers |  | 2h | 2026-09-15 16:30 | 2026-09-16 08:30 | 394 | 15.44d | 0d | WGP-MTP [200%] | 4h |  | 6577046 |  |  |  |  |
| 396 | 2.2.14.3 | Clean up windbox |  | 2h | 2026-09-17 08:30 | 2026-09-17 10:30 | 395, 400 | 15.44d | 0d | WGP-MTP [200%] | 4h |  | 6577046 |  |  |  |  |
| 397 | 2.2.14.4 | Conduct visual inspection of burners, air registers, rear of furnace front wall tubes, casing, turning vanes, and expansion joints |  | 3h | 2026-09-17 10:30 | 2026-09-17 13:30 | 396 | 15.44d | 0d | WGP-ENG | 3h |  | 6577046 |  |  |  |  |
| 398 | 2.2.14.5 | Strip windbox and air register access scaffolds ready for box up |  | 6h | 2026-09-17 13:30 | 2026-09-17 19:30 | 397 | 17.12d | 0d | WC-SCAF [200%] | 12h |  | 6577046 | 1010 |  | BOILER 1 MOH SCAFFOLD SCOPE | WCG-UGL |

| ID | WBS | Task | Type | Duration | Start | Finish | Predecessors | Total slack | Free slack | Resources | Work | Day | Work Order No. | Operation No. | Assigned Department | Text12 |
| --- | --- | --- | --- | --- | --- | --- | --- | --- | --- | --- | --- | --- | --- | --- | --- | --- |
| 399 | 2.2.14.6 | **Adhoc Maintenance - Windbox and Air Registers** |  | 3d | 2026-09-16 08:30 | 2026-09-17 08:30 |  | 15.44d |  |  | 20h | Day2 |  |  |  |  |
| 400 | 2.2.14.6.1 | Re-align tracking on burner 1 air register - currently not meeting closed limits |  | 10h | 2026-09-16 08:30 | 2026-09-17 08:30 | 395 | 15.44d | 0d | WGP-MTP [200%] | 20h |  | WO6092168 | 10 | W5M1 |  |
| 401 | 2.2.14.7 | Windbox and Air Registers Maintainence Complete | milestone | 0h | 2026-09-17 19:30 | 2026-09-17 19:30 | 398 | 17.12d | 15.81d |  |  |  |  |  |  |  |
| 402 | 2.2.15 | **Drains & Blowdown System General (15)** |  | 13.62d | 2026-09-14 04:00 | 2026-09-18 17:00 |  | 14.44d |  |  | 148h | Day2 |  |  |  |  |
| 403 | 2.2.15.1 | **Drains & Blowdown System General - Above Ground Level (15.2)** |  | 13.62d | 2026-09-14 04:00 | 2026-09-18 17:00 |  | 14.44d |  |  | 82h | Day2 |  |  |  |  |
| 404 | 2.2.15.1.1 | Perform fused alumina blasting of all above ground drain & blowdown piping welds - as per scope 15 |  | 4h | 2026-09-14 04:00 | 2026-09-14 20:00 | 317 | 18d | 0d | WC-SNDBST [200%] | 8h |  | 6577046 | 1020 | WCG-SRG | M |
| 405 | 2.2.15.1.2 | Sweep blast of all piping to enable accurate UTWT, removing surface corrosion - drains & blowdown ablove ground |  | 4h | 2026-09-14 20:00 | 2026-09-15 00:00 | 404 | 18d | 0d | WC-SNDBST [200%] | 8h |  | 6577046 | 1020 | WCG-SRG | M |
| 406 | 2.2.15.1.3 | Perform NDT of drains & blowdown system (above ground) |  | 12h | 2026-09-15 07:00 | 2026-09-16 10:00 | 405 | 18.56d | 0d | WC-NDT [200%] | 24h |  | 6577046 | 1040 | WCT-ALS |  |
| 407 | 2.2.15.1.4 | Conduct visual inspection and review UTWT of all drains & blowdown lines - as per scope 15.2 |  | 2h | 2026-09-16 10:00 | 2026-09-16 12:00 | 406 | 18.56d | 4.12d | WGP-ENG | 2h |  | 6577046 |  |  |  |
| 408 | 2.2.15.1.5 | Re-instate lagging on drains & blowdown system (Above ground level) - as per scope 15.2 |  | 20h | 2026-09-17 21:00 | 2026-09-18 17:00 | 407, 518 | 14.44d | 0d | WC-LAGG [200%] | 40h |  | 6577046 | 1030 | WCG-SRG | RL |
| 409 | 2.2.15.1.6 | Drains & Blowdown System General (Above Ground Level) Maintenance Complete | milestone | 0h | 2026-09-18 17:00 | 2026-09-18 17:00 | 408 | 14.44d | 13.12d |  |  |  |  |  |  |  |
| 410 | 2.2.15.2 | **Drains & Blowdown System General - Ground Level (15.3)** |  | 10.62d | 2026-09-15 00:00 | 2026-09-18 13:00 |  | 14.94d |  |  | 66h | Day2 |  |  |  |  |
| 411 | 2.2.15.2.1 | Perform fused alumina blasting of all ground level drain & blowdown piping welds - as per scope 15.3 |  | 3h | 2026-09-15 00:00 | 2026-09-15 03:00 | 405 | 18d | 0d | WC-SNDBST [200%] | 6h |  | 6577046 | 1020 | WCG-SRG | M |
| 412 | 2.2.15.2.2 | Sweep blast of all piping to enable accurate UTWT, removing surface corrosion - drains & blowdown ground level |  | 3h | 2026-09-15 03:00 | 2026-09-15 06:00 | 411 | 18d | 0.12d | WC-SNDBST [200%] | 6h |  | 6577046 | 1020 | WCG-SRG | M |
| 413 | 2.2.15.2.3 | Perform NDT of drains & blowdown system (ground level) |  | 10h | 2026-09-15 07:00 | 2026-09-16 08:00 | 412 | 18.88d | 0d | WC-NDT [200%] | 20h |  | 6577046 | 1040 | WCT-ALS |  |
| 414 | 2.2.15.2.4 | Conduct visual inspection and review UTWT of all drains & blowdown lines - as per scope 15.3 |  | 2h | 2026-09-16 08:00 | 2026-09-16 10:00 | 413 | 18.88d | 4.38d | WGP-ENG | 2h |  | 6577046 |  |  |  |
| 415 | 2.2.15.2.5 | Re-instate lagging on drains & blowdown system (ground level) - as per scope 15.3 |  | 16h | 2026-09-17 21:00 | 2026-09-18 13:00 | 414, 518 | 14.94d | 0d | WC-LAGG [200%] | 32h |  | 6577046 | 1030 | WCG-SRG | RL |
| 416 | 2.2.15.2.6 | Drains & Blowdown System General (Ground Level) Maintenance Complete | milestone | 0h | 2026-09-18 13:00 | 2026-09-18 13:00 | 415 | 14.94d | 13.62d |  |  |  |  |  |  |  |
| 417 | 2.2.16 | **Integral Piping (16)** |  | 8.94d | 2026-09-16 17:00 | 2026-09-19 16:30 |  | 0.38d |  |  | 29.5h | Day2 |  |  |  |  |
| 418 | 2.2.16.1 | Strip lagging around attemperator line 4-way support bracket |  | 4h | 2026-09-16 17:00 | 2026-09-16 21:00 | 154 | 0.38d | 0d | WC-LAGG [200%] | 8h |  | 6577046 | 1030 | WCG-SRG | L2 |
| 419 | 2.2.16.2 | Perform fused alumina blasting of integral piping welds - as per scope 16.1 |  | 2h | 2026-09-19 03:00 | 2026-09-19 05:00 | 418, 141 | 9.12d | 0.25d | WC-SNDBST [200%] | 4h |  | 6577046 | 1020 | WCG-SRG | L |
| 420 | 2.2.16.3 | Perform NDT of Integral piping - as per scope 16.1 |  | 4h | 2026-09-19 07:00 | 2026-09-19 11:00 | 419 | 9.62d | 0d | WC-NDT [200%] | 8h |  | 6577046 | 1040 | WCT-ALS |  |
| 421 | 2.2.16.4 | Conduct visual inspection of integral piping including hot/cold position hangers - as per scope 16.1 |  | 1.5h | 2026-09-19 11:00 | 2026-09-19 12:30 | 420 | 11.5d | 0d | WGP-ENG | 1.5h |  | 6577046 |  |  |  |
| 422 | 2.2.16.5 | Re-instate lagging around attemperator line 4-way support bracket |  | 4h | 2026-09-19 12:30 | 2026-09-19 16:30 | 421, 518 | 11.5d | 0d | WC-LAGG [200%] | 8h |  | 6577046 | 1030 | WCG-SRG | RL |
| 423 | 2.2.16.6 | Integral Piping Maintenance Complete | milestone | 0h | 2026-09-19 16:30 | 2026-09-19 16:30 | 422 | 11.5d | 10.19d |  |  |  |  |  |  |  |

Notes:
- 400: Operation Description: Re-align tracking on burner 1 air register - currently not meeting closed limits
- 404: Operation Description: BOILER 1 MOH SANDBLASTING SCOPE
- 405: Operation Description: BOILER 1 MOH SANDBLASTING SCOPE
- 406: Operation Description: BOILER 1 MAJOR OVERHAUL NDT & METALLURGY SCOPE
- 408: Operation Description: BOILER 1 MAJOR OVERHAUL LAGGING SCOPE
- 411: Operation Description: BOILER 1 MOH SANDBLASTING SCOPE
- 412: Operation Description: BOILER 1 MOH SANDBLASTING SCOPE
- 413: Operation Description: BOILER 1 MAJOR OVERHAUL NDT & METALLURGY SCOPE
- 415: Operation Description: BOILER 1 MAJOR OVERHAUL LAGGING SCOPE
- 418: Operation Description: BOILER 1 MAJOR OVERHAUL LAGGING SCOPE
- 419: Operation Description: BOILER 1 MOH SANDBLASTING SCOPE
- 420: Operation Description: BOILER 1 MAJOR OVERHAUL NDT & METALLURGY SCOPE
- 422: Operation Description: BOILER 1 MAJOR OVERHAUL LAGGING SCOPE

| ID | WBS | Task | Type | Duration | Start | Finish | Predecessors | Total slack | Free slack | Resources | Work | Day | Work Order No. | Operation No. | Operation Description | Assigned Department | Text12 |
| --- | --- | --- | --- | --- | --- | --- | --- | --- | --- | --- | --- | --- | --- | --- | --- | --- | --- |
| 424 | 2.2.17 | **Natural Gas System (17)** |  | 4d | 2026-09-14 07:00 | 2026-09-15 15:00 |  | 21.94d |  |  | 70h | Day2 |  |  |  |  |  |
| 425 | 2.2.17.1 | Clean and inspect gas system inline with gas regulations |  | 3h | 2026-09-14 07:00 | 2026-09-14 10:00 |  | 30.88d |  | WGP-MTP [200%] | 6h |  | 6577046 |  |  |  |  |
| 426 | 2.2.17.2 | **Gas Valves** |  | 3.38d | 2026-09-14 07:00 | 2026-09-15 10:00 |  | 24.31d |  |  | 22h | Day2 |  |  |  |  |  |
| 427 | 2.2.17.2.1 | Disconnect any failed gas valves ready for replacement |  | 2h | 2026-09-14 07:00 | 2026-09-14 09:00 |  | 24.31d | 0d | WGP-ETP | 2h |  | 6577046 |  |  |  |  |
| 428 | 2.2.17.2.2 | Replace any gas valves that have failed pressure test |  | 4h | 2026-09-14 09:00 | 2026-09-14 13:00 | 427 | 24.31d | 0d | WGP-MTP [200%] | 8h |  | 6577046 |  |  |  |  |
| 429 | 2.2.17.2.3 | Changeout burner 1 & 3 manual block valves |  | 3h | 2026-09-14 13:00 | 2026-09-14 16:00 | 428 | 24.31d | 0d | WGP-MTP [200%] | 6h |  | WO6809668 | 10 | Changeout burner 1 & 3 manual block valves | W5M1 |  |
| 430 | 2.2.17.2.4 | Remove and clean gas valve strainers |  | 2h | 2026-09-14 16:00 | 2026-09-15 08:00 | 429 | 24.31d | 0d | WGP-MTP [200%] | 4h |  | 6577046 |  |  |  |  |
| 431 | 2.2.17.2.5 | Reconnect all gas valves |  | 2h | 2026-09-15 08:00 | 2026-09-15 10:00 | 430 | 24.31d | 0d | WGP-ETP | 2h |  | 6577046 |  |  |  |  |
| 432 | 2.2.17.2.6 | Gas Valve Maintenance Complete | milestone | 0h | 2026-09-15 10:00 | 2026-09-15 10:00 | 431 | 24.31d | 0.62d |  |  |  |  |  |  |  |  |
| 433 | 2.2.17.3 | **Gas Pressure Regulator Valve (Axial PRV)** |  | 4d | 2026-09-14 07:00 | 2026-09-15 15:00 |  | 21.94d |  |  | 36h | Day2 |  |  |  |  |  |
| 434 | 2.2.17.3.1 | Disconnect gas pressure regulator valve (axial PRV) |  | 1h | 2026-09-14 07:00 | 2026-09-14 08:00 |  | 21.94d | 0d | WGP-MTP [200%] | 2h |  | 6577046 |  |  |  |  |
| 435 | 2.2.17.3.2 | Remove gas pressure regulator valve (axial PRV) for overhaul |  | 3h | 2026-09-14 08:00 | 2026-09-14 11:00 | 434 | 21.94d | 0d | WGP-MTP [200%] | 6h |  | 6577046 |  |  |  |  |
| 436 | 2.2.17.3.3 | Overhaul gas pressure regulator valve (axial PRV) |  | 10h | 2026-09-14 11:00 | 2026-09-15 11:00 | 435 | 23.69d | 0d | WGP-ETP [200%] | 20h |  | 6577046 |  |  |  |  |
| 437 | 2.2.17.3.4 | Re-install gas pressure regulator valve (axial PRV) after overhaul |  | 3h | 2026-09-15 11:00 | 2026-09-15 14:00 | 436 | 23.69d | 0d | WGP-MTP [200%] | 6h |  | 6577046 |  |  |  |  |
| 438 | 2.2.17.3.5 | Reconnect gas pressure regulator valve (axial PRV) |  | 1h | 2026-09-15 14:00 | 2026-09-15 15:00 | 437 | 23.69d | 0d | WGP-MTP [200%] | 2h |  | 6577046 |  |  |  |  |
| 439 | 2.2.17.3.6 | Gas Pressure Regulator Valve (Axial PRV) Maintenance Complete | milestone | 0h | 2026-09-15 15:00 | 2026-09-15 15:00 | 438 | 23.69d | 0d |  |  |  |  |  |  |  |  |
| 440 | 2.2.17.4 | Changeout LPG ignition gas regulator and valves |  | 3h | 2026-09-14 07:00 | 2026-09-14 10:00 |  | 27.31d | 3.62d | WGP-MTP [200%] | 6h |  | 6577046 |  |  |  |  |
| 441 | 2.2.17.5 | Natural Gas System Maintenance Complete | milestone | 0h | 2026-09-15 15:00 | 2026-09-15 15:00 | 440, 439, 432 | 23.69d | 22.38d |  |  |  |  |  |  |  |  |
| 442 | 2.2.18 | **HS Header (19)** |  | 13d | 2026-09-14 13:00 | 2026-09-18 21:00 |  | 0.38d |  |  | 141h | Day2 |  |  |  |  |  |
| 443 | 2.2.18.1 | Strip lagging on HS header for inspection & NDT - as per scope 19.1 |  | 24h | 2026-09-14 13:00 | 2026-09-15 13:00 | 69 | 0.38d | 0d | WC-LAGG [200%] | 48h |  | 6577046 | 1030 | BOILER 1 MAJOR OVERHAUL LAGGING SCOPE | WCG-SRG | L2 |
| 444 | 2.2.18.2 | perform dry fused alumina blasting on HS header |  | 5h | 2026-09-15 18:00 | 2026-09-15 23:00 | 443 | 15.38d | 0d | WC-SNDBST [200%] | 10h |  | 6577046 | 1020 | BOILER 1 MOH SANDBLASTING SCOPE | WCG-SRG | H |
| 445 | 2.2.18.3 | Perform NDT of HS header - as per scope 19.1 |  | 10h | 2026-09-16 07:00 | 2026-09-17 08:00 | 444 | 15.19d | 0d | WC-NDT [200%] | 20h |  | 6577046 | 1040 | BOILER 1 MAJOR OVERHAUL NDT & METALLURGY SCOPE | WCT-ALS |  |
| 446 | 2.2.18.4 | Metallurgical replicas of HS header to be taken - as per scope 19.1 |  | 12h | 2026-09-16 07:00 | 2026-09-17 10:00 | 444 | 18.31d | 4.38d | WC-NDT | 12h |  | 6577046 | 1040 | BOILER 1 MAJOR OVERHAUL NDT & METALLURGY SCOPE | WCT-ALS |  |
| 447 | 2.2.18.5 | Conduct visual inspection of HS header & sign off for lagging to be reinstalled |  | 3h | 2026-09-17 08:00 | 2026-09-17 11:00 | 445 | 15.19d | 1.25d | WGP-ENG | 3h |  | 6577046 |  |  |  |  |
| 448 | 2.2.18.6 | Re-Instate lagging on HS header |  | 24h | 2026-09-17 21:00 | 2026-09-18 21:00 | 447, 518 | 13.94d | 0d | WC-LAGG [200%] | 48h |  | 6577046 | 1030 | BOILER 1 MAJOR OVERHAUL LAGGING SCOPE | WCG-SRG | RL |
| 449 | 2.2.18.7 | HS Header Maintenance Complete | milestone | 0h | 2026-09-18 21:00 | 2026-09-18 21:00 | 448, 445, 446 | 13.94d | 12.62d |  |  |  |  |  |  |  |  |

Notes:
- 436: Lawrence or ETP?

| ID | WBS | Task | Type | Duration | Start | Finish | Predecessors | Total slack | Free slack | Calendar | Resources | Work | Day | Work Order No. | Operation No. | Operation Description | Assigned Department |
| --- | --- | --- | --- | --- | --- | --- | --- | --- | --- | --- | --- | --- | --- | --- | --- | --- | --- |
| 450 | 2.2.19 | **PDSHUT289 - Boiler 1 Electrical Maintenance** |  | 20.81d | 2026-09-14 10:00 | 2026-09-21 08:30 |  | 6.5d |  |  |  | 30h | Day2 |  |  |  |  |
| 451 | 2.2.19.1 | PDMAIN09 - HV STARTER MAJOR MAINTENANCE - STARTER-WG110-FDB001 |  | 3h | 2026-09-19 07:00 | 2026-09-19 10:00 | 349 | 10.19d | 0d |  | WGP-ETP [200%] | 6h |  | 6815552 | 10 | HV STARTER MAJOR MAINTENANCE | W5E1 |
| 452 | 2.2.19.2 | PDMAIN40 - MOTOR OVERHAUL - MOTOR-WG110-FDB001 |  | 1h | 2026-09-19 10:00 | 2026-09-19 11:00 | 451 | 11.94d | 0d |  | WGP-DELAY | 1h |  | 6736730 | 10 | MOTOR CHANGEOUT | W5E1 |
| 453 | 2.2.19.3 | PDMAIN22 - HV CABLE MAINTENANCE - CABLE-WG110-FDB001 |  | 2h | 2026-09-19 11:00 | 2026-09-19 13:00 | 452 | 11.94d | 5.44d |  | WGP-ETP [200%] | 4h |  | 6740358 | 10 | HV CABLE MAINTENANCE | W5E1 |
| 454 | 2.2.19.4 | PDMAIN09 - HV CONTACTOR MAINTENANCE - STARTER-WG110-FDB001 |  | 8h | 2026-09-19 07:00 | 2026-09-19 15:00 | 349 | 9.81d | 5.06d |  | WC-MISC [200%] | 16h |  | 6815552 | 20 | HV CONTACTOR MAINTENANCE | WCG-OTHER |
| 455 | 2.2.19.5 | Protection Relay??? |  | 1h | 2026-09-21 07:30 | 2026-09-21 08:30 | 454 | 6.5d | 0d |  |  |  |  | 6815552 | 30 |  | WCG-OTHER |
| 456 | 2.2.19.6 | PDSHUT289 Complete | milestone | 0h | 2026-09-21 08:30 | 2026-09-21 08:30 | 453, 455 | 6.5d | 5.19d |  |  |  |  |  |  |  |  |
| 457 | 2.2.19.7 | **LV Starter Maintenance** |  | 0.19d | 2026-09-14 10:00 | 2026-09-14 11:30 |  | 27.12d |  |  |  | 3h | Day2 |  |  |  |  |
| 458 | 2.2.19.7.1 | PDMAIN34 - LV STARTER (POWERHOUSE) MAINTENANCE - STARTER-WG110-101HEV08 |  | 0.5h | 2026-09-14 10:00 | 2026-09-14 10:30 | 73 | 27.12d | 0d | 24 Hours | WGP-ETP [200%] | 1h |  | 6860918 | 30 | LV STARTER MAJOR MAINTENANCE | W5E1 |
| 459 | 2.2.19.7.2 | PDMAIN34 - LV STARTER (POWERHOUSE) MAINTENANCE - STARTER-WG110-101HEV09 |  | 0.5h | 2026-09-14 10:30 | 2026-09-14 11:00 | 458 | 27.12d | 0d | 24 Hours | WGP-ETP [200%] | 1h |  | 6860928 | 30 | LV STARTER MAJOR MAINTENANCE | W5E1 |
| 460 | 2.2.19.7.3 | PDMAIN34 - LV STARTER (POWERHOUSE) MAINTENANCE - STARTER-WG110-RAL101 |  | 0.5h | 2026-09-14 11:00 | 2026-09-14 11:30 | 459 | 27.12d | 0d | 24 Hours | WGP-ETP [200%] | 1h |  | 6728906 | 30 | LV STARTER MAJOR MAINTENANCE | W5E1 |
| 461 | 2.2.19.7.4 | LV Starter Maintenance Complete | milestone | 0h | 2026-09-14 11:30 | 2026-09-14 11:30 | 460 | 27.12d | 25.81d |  |  |  |  |  |  |  |  |
| 462 | 2.2.20 | **BMS & Critical non BMS Instruments** |  | 6.88d | 2026-09-14 07:00 | 2026-09-16 14:00 |  | 19.06d |  |  |  | 27h | Day3 |  |  |  |  |
| 463 | 2.2.20.1 | **Instrumentation route - BMS Temp Transmitters** |  | 0.5d | 2026-09-14 07:00 | 2026-09-14 11:00 |  | 19.06d |  |  |  | 4h |  |  |  |  |  |
| 464 | 2.2.20.1.1 | 101TT17 Boiler 1 Air Heater Air Outlet Temperature |  | 0.4h | 2026-09-14 07:00 | 2026-09-14 07:24 |  | 19.06d | 0d |  | WGP-ETP | 0.4h |  | 6710430 | 10 | Instrumentation route - BMS Temp Transmitters | W5E1 |
| 465 | 2.2.20.1.2 | 101TT18 Boiler 1 Final Steam Temperature |  | 0.4h | 2026-09-14 07:24 | 2026-09-14 07:48 | 464 | 19.06d | 0d |  | WGP-ETP | 0.4h |  | 6710430 | 10 | Instrumentation route - BMS Temp Transmitters | W5E1 |
| 466 | 2.2.20.1.3 | 101TT20 Boiler 1 Air Heater Gas Outlet Temperature |  | 0.4h | 2026-09-14 07:48 | 2026-09-14 08:12 | 465 | 19.06d | 0d |  | WGP-ETP | 0.4h |  | 6710430 | 10 | Instrumentation route - BMS Temp Transmitters | W5E1 |
| 467 | 2.2.20.1.4 | 101TT21 Boiler 1 Air Heater Air Inlet Temperature |  | 0.4h | 2026-09-14 08:12 | 2026-09-14 08:36 | 466 | 19.06d | 0d |  | WGP-ETP | 0.4h |  | 6710430 | 10 | Instrumentation route - BMS Temp Transmitters | W5E1 |
| 468 | 2.2.20.1.5 | 101TT22 Boiler 1 Air heater Gas Inlet Temperature |  | 0.4h | 2026-09-14 08:36 | 2026-09-14 09:00 | 467 | 20.81d | 0d |  | WGP-ETP | 0.4h |  | 6710430 | 10 | Instrumentation route - BMS Temp Transmitters | W5E1 |
| 469 | 2.2.20.1.6 | 101TT24 Boiler 1 Primary Superheater Outlet Temperature |  | 0.4h | 2026-09-14 09:00 | 2026-09-14 09:24 | 468 | 20.81d | 0d |  | WGP-ETP | 0.4h |  | 6710430 | 10 | Instrumentation route - BMS Temp Transmitters | W5E1 |
| 470 | 2.2.20.1.7 | 101TT25 Boiler 1 Secondary Superheater Inlet Temperature |  | 0.4h | 2026-09-14 09:24 | 2026-09-14 09:48 | 469 | 20.81d | 0d |  | WGP-ETP | 0.4h |  | 6710430 | 10 | Instrumentation route - BMS Temp Transmitters | W5E1 |
| 471 | 2.2.20.1.8 | 101TT42 Boiler 1 Air Heater Bearing Temperature |  | 0.4h | 2026-09-14 09:48 | 2026-09-14 10:12 | 470 | 20.81d | 0d |  | WGP-ETP | 0.4h |  | 6710430 | 10 | Instrumentation route - BMS Temp Transmitters | W5E1 |
| 472 | 2.2.20.1.9 | 101TT43 Boiler 1 Air Heater Bearing Temperature |  | 0.4h | 2026-09-14 10:12 | 2026-09-14 10:36 | 471 | 20.81d | 0d |  | WGP-ETP | 0.4h |  | 6710430 | 10 | Instrumentation route - BMS Temp Transmitters | W5E1 |
| 473 | 2.2.20.1.10 | 101TT50 Boiler 1 Gas Header Temperature |  | 0.4h | 2026-09-14 10:36 | 2026-09-14 11:00 | 472 | 20.81d | 0d |  | WGP-ETP | 0.4h |  | 6710430 | 10 | Instrumentation route - BMS Temp Transmitters | W5E1 |

Notes:
- 451: Opportunity to bring in earlier
- 455: Set up correctly

| ID | WBS | Task | Duration | Start | Finish | Predecessors | Total slack | Free slack | Resources | Work | Day | Work Order No. | Operation No. | Operation Description | Assigned Department |
| --- | --- | --- | --- | --- | --- | --- | --- | --- | --- | --- | --- | --- | --- | --- | --- |
| 474 | 2.2.20.2 | **Instrumentation route - Non BMS Temp Transmitters** | 0.12d | 2026-09-14 11:00 | 2026-09-14 12:00 |  | 20.81d |  |  | 1h | Day3 |  |  |  |  |
| 475 | 2.2.20.2.1 | Instrumentation route - Non BMS Flow Transmitters | 1h | 2026-09-14 11:00 | 2026-09-14 12:00 | 473 | 20.81d | 0d | WGP-ETP | 1h |  | 6757287 | 10 | Instrumentation route - Non BMS Temp Transmitters | W5E1 |
| 476 | 2.2.20.3 | **Instrumentation route - BMS Flow Transmitters** | 0.62d | 2026-09-14 12:00 | 2026-09-14 17:00 |  | 20.81d |  |  | 5h |  |  |  |  |  |
| 477 | 2.2.20.3.1 | 101FT02 Boiler 1 Fuel Gas Flow Transmitter | 1h | 2026-09-14 12:00 | 2026-09-14 13:00 | 475 | 20.81d | 0d | WGP-ETP | 1h |  | 6710430 | 20 | Instrumentation route - BMS Flow Transmitters | W5E1 |
| 478 | 2.2.20.3.2 | 101FT03 Boiler 1 Combustion Air Flow Transmitter | 1h | 2026-09-14 13:00 | 2026-09-14 14:00 | 477 | 20.81d | 0d | WGP-ETP | 1h |  | 6710430 | 20 | Instrumentation route - BMS Flow Transmitters | W5E1 |
| 479 | 2.2.20.3.3 | 101FT03A Boiler 1 Combustion Air Flow Transmitter A | 1h | 2026-09-14 14:00 | 2026-09-14 15:00 | 478 | 20.81d | 0d | WGP-ETP | 1h |  | 6710430 | 20 | Instrumentation route - BMS Flow Transmitters | W5E1 |
| 480 | 2.2.20.3.4 | 101FT04 Boiler 1 Feed Water Flow Transmitter | 1h | 2026-09-14 15:00 | 2026-09-14 16:00 | 479 | 20.81d | 0d | WGP-ETP | 1h |  | 6710430 | 20 | Instrumentation route - BMS Flow Transmitters | W5E1 |
| 481 | 2.2.20.3.5 | 101FT05 Boiler 1 Steam Flow Transmitter | 1h | 2026-09-14 16:00 | 2026-09-14 17:00 | 480 | 20.81d | 1.75d | WGP-ETP | 1h |  | 6710430 | 20 | Instrumentation route - BMS Flow Transmitters | W5E1 |
| 482 | 2.2.20.4 | **Instrumentation route - BMS Level Transmitters** | 0.38d | 2026-09-15 07:00 | 2026-09-15 10:00 |  | 19.06d |  |  | 3h |  |  |  |  |  |
| 483 | 2.2.20.4.1 | 101LT01 Boiler 1 Drum Level Transmitter North | 1.5h | 2026-09-15 07:00 | 2026-09-15 08:30 | 481 | 19.06d | 0d | WGP-ETP | 1.5h |  | 6710430 | 30 | Instrumentation route - BMS Level Transmitters | W5E1 |
| 484 | 2.2.20.4.2 | 101LT02 Boiler 1 Drum Level Transmitter South | 1.5h | 2026-09-15 08:30 | 2026-09-15 10:00 | 483 | 20.81d | 0d | WGP-ETP | 1.5h |  | 6710430 | 30 | Instrumentation route - BMS Level Transmitters | W5E1 |
| 485 | 2.2.20.5 | **Instrumentation route - BMS Pressure Transmitters** | 0.75d | 2026-09-15 10:00 | 2026-09-15 16:00 |  | 20.81d |  |  | 6h |  |  |  |  |  |
| 486 | 2.2.20.5.1 | 101PT02 Boiler 1 Steam Pressure | 0.5h | 2026-09-15 10:00 | 2026-09-15 10:30 | 484 | 20.81d | 0d | WGP-ETP | 0.5h |  | 6710430 | 40 | Instrumentation route - BMS Pressure Transmitters | W5E1 |
| 487 | 2.2.20.5.2 | 101PT04 North Boiler 1 Drum Pressure North | 0.5h | 2026-09-15 10:30 | 2026-09-15 11:00 | 486 | 20.81d | 0d | WGP-ETP | 0.5h |  | 6710430 | 40 | Instrumentation route - BMS Pressure Transmitters | W5E1 |
| 488 | 2.2.20.5.3 | 101PT04 South Boiler 1 Drum Pressure South | 0.5h | 2026-09-15 11:00 | 2026-09-15 11:30 | 487 | 20.81d | 0d | WGP-ETP | 0.5h |  | 6710430 | 40 | Instrumentation route - BMS Pressure Transmitters | W5E1 |
| 489 | 2.2.20.5.4 | 101PT06 Boiler 1 Windbox Pressure | 0.5h | 2026-09-15 11:30 | 2026-09-15 12:00 | 488 | 20.81d | 0d | WGP-ETP | 0.5h |  | 6710430 | 40 | Instrumentation route - BMS Pressure Transmitters | W5E1 |
| 490 | 2.2.20.5.5 | 101PT08 Boiler 1 Furnace Pressure | 0.5h | 2026-09-15 12:00 | 2026-09-15 12:30 | 489 | 20.81d | 0d | WGP-ETP | 0.5h |  | 6710430 | 40 | Instrumentation route - BMS Pressure Transmitters | W5E1 |
| 491 | 2.2.20.5.6 | 101PT11 Boiler 1 Ignition Gas Burner Pressure | 0.5h | 2026-09-15 12:30 | 2026-09-15 13:00 | 490 | 20.81d | 0d | WGP-ETP | 0.5h |  | 6710430 | 40 | Instrumentation route - BMS Pressure Transmitters | W5E1 |
| 492 | 2.2.20.5.7 | 101PT22 Boiler 1 Gas Fuel at Burner Pressure | 0.5h | 2026-09-15 13:00 | 2026-09-15 13:30 | 491 | 20.81d | 0d | WGP-ETP | 0.5h |  | 6710430 | 40 | Instrumentation route - BMS Pressure Transmitters | W5E1 |
| 493 | 2.2.20.5.8 | 101PT34 Boiler 1 FD Fan Pressure | 0.5h | 2026-09-15 13:30 | 2026-09-15 14:00 | 492 | 20.81d | 0d | WGP-ETP | 0.5h |  | 6710430 | 40 | Instrumentation route - BMS Pressure Transmitters | W5E1 |
| 494 | 2.2.20.5.9 | 101PT36 Boiler 1 Air Heater Gas Inlet Pressure | 0.5h | 2026-09-15 14:00 | 2026-09-15 14:30 | 493 | 20.81d | 0d | WGP-ETP | 0.5h |  | 6710430 | 40 | Instrumentation route - BMS Pressure Transmitters | W5E1 |
| 495 | 2.2.20.5.10 | 101PT37 Boiler 1 Air Heater Gas Outlet Pressure | 0.5h | 2026-09-15 14:30 | 2026-09-15 15:00 | 494 | 20.81d | 0d | WGP-ETP | 0.5h |  | 6710430 | 40 | Instrumentation route - BMS Pressure Transmitters | W5E1 |
| 496 | 2.2.20.5.11 | 101PT50 Boiler 1 Gas Fuel Pressure | 0.5h | 2026-09-15 15:00 | 2026-09-15 15:30 | 495 | 20.81d | 0d | WGP-ETP | 0.5h |  | 6710430 | 40 | Instrumentation route - BMS Pressure Transmitters | W5E1 |
| 497 | 2.2.20.5.12 | 101PT52 Boiler 1 Gas Header Pressure | 0.5h | 2026-09-15 15:30 | 2026-09-15 16:00 | 496 | 20.81d | 0d | WGP-ETP | 0.5h |  | 6710430 | 40 | Instrumentation route - BMS Pressure Transmitters | W5E1 |

| ID | WBS | Task | Type | Duration | Start | Finish | Predecessors | Total slack | Free slack | Resources | Work | Work Order No. | Operation No. | Assigned Department | Day |
| --- | --- | --- | --- | --- | --- | --- | --- | --- | --- | --- | --- | --- | --- | --- | --- |
| 498 | 2.2.20.6 | **Instrumentation route - Non BMS Pressure Transmitters** |  | 2.75d | 2026-09-15 16:00 | 2026-09-16 14:00 |  | 20.81d |  |  | 8h |  |  |  |  |
| 499 | 2.2.20.6.1 | 101FY01G Boiler 1 Fuel Gas Valve I/P |  | 1h | 2026-09-15 16:00 | 2026-09-15 17:00 | 497 | 20.81d | 1.75d | WGP-ETP | 1h | 6757287 | 20 | W5E1 |  |
| 500 | 2.2.20.6.2 | 101FY01GM Boiler 1 Minimum Gas Valve I/P |  | 1h | 2026-09-16 07:00 | 2026-09-16 08:00 | 499 | 19.06d | 0d | WGP-ETP | 1h | 6757287 | 20 | W5E1 |  |
| 501 | 2.2.20.6.3 | 101FY03 Boiler 1 FD Fan Inlet Vanes Actuator I/P |  | 1h | 2026-09-16 08:00 | 2026-09-16 09:00 | 500 | 19.06d | 0d | WGP-ETP | 1h | 6757287 | 20 | W5E1 |  |
| 502 | 2.2.20.6.4 | 101TY03A Boiler 1 Air Heater Inlet Damper I/P |  | 1h | 2026-09-16 09:00 | 2026-09-16 10:00 | 501 | 20.81d | 0d | WGP-ETP | 1h | 6757287 | 20 | W5E1 |  |
| 503 | 2.2.20.6.5 | 101TY03B Boiler 1 Air Heater Bypass Damper I/P |  | 1h | 2026-09-16 10:00 | 2026-09-16 11:00 | 502 | 20.81d | 0d | WGP-ETP | 1h | 6757287 | 20 | W5E1 |  |
| 504 | 2.2.20.6.6 | 101FY04A Boiler 1 Feedwater Valve A I/P |  | 1h | 2026-09-16 11:00 | 2026-09-16 12:00 | 503 | 20.81d | 0d | WGP-ETP | 1h | 6757287 | 20 | W5E1 |  |
| 505 | 2.2.20.6.7 | 101FY04B Boiler 1 Feedwater Valve B I/P |  | 1h | 2026-09-16 12:00 | 2026-09-16 13:00 | 504 | 20.81d | 0d | WGP-ETP | 1h | 6757287 | 20 | W5E1 |  |
| 506 | 2.2.20.6.8 | 101TY18 Boiler 1 Attemperator Valves I/P |  | 1h | 2026-09-16 13:00 | 2026-09-16 14:00 | 505 | 20.81d | 0d | WGP-ETP | 1h | 6757287 | 20 | W5E1 |  |
| 507 | 2.2.20.6.9 | BMS & Critical non BMS Instruments Calibrations Complete | milestone | 0h | 2026-09-16 14:00 | 2026-09-16 14:00 | 506 | 20.81d | 19.5d |  |  |  |  |  |  |
| 508 | 2.2.21 | **Adhoc Maintenance - Electrical** |  | 2.75d | 2026-09-13 19:00 | 2026-09-14 17:00 |  | 30.5d |  |  | 26h |  |  |  | Day2 |
| 509 | 2.2.21.1 | REPLACE BOILER 1 EXHAUST GAS ECONOMISER EXIT TEMP (101TI22) TEMPERATURE TRANSMITTER |  | 2h | 2026-09-14 07:00 | 2026-09-14 09:00 |  | 31d | 1d | WGP-ETP | 2h | WO6762791 | 10 | W5E1 |  |
| 510 | 2.2.21.2 | REPAIR STANDING ALARM BLR1O2 ANALYSER DIFF HIGH. O2 ANALYSER B HAS FAILED AND IS NOW READING HIGH 5.6 |  | 2h | 2026-09-14 07:00 | 2026-09-14 09:00 |  | 31d | 1d | WGP-ETP | 2h | WO6790766 | 10 | W5E1 |  |
| 511 | 2.2.21.3 | Tidy up existing thermocouple wiring |  | 10h | 2026-09-14 07:00 | 2026-09-14 17:00 |  | 30d | 0d | WGP-ETP | 10h |  |  |  |  |
| 512 | 2.2.21.4 | Erect scaff to access secondary gas analyser rosemount 1B02 |  | 4h | 2026-09-13 19:00 | 2026-09-13 23:00 |  | 31.75d | 1d | WC-SCAF [200%] | 8h |  |  |  |  |
| 513 | 2.2.21.5 | Remove secondary gas analyser rosemount 1B02 |  | 4h | 2026-09-14 07:00 | 2026-09-14 11:00 | 512 | 30.75d | 0.75d | WGP-ETP | 4h |  |  |  |  |
| 514 | 2.2.21.6 | Adhoc Maintenance - Electrical Complete | milestone | 0h | 2026-09-14 17:00 | 2026-09-14 17:00 | 509, 510, 511, 513 | 30.5d |  |  |  |  |  |  |  |
| 515 | 2.2.22 | **TA1 Generator Prep - Adhoc** |  | 4.25d | 2026-09-14 07:00 | 2026-09-15 17:00 |  | 27d |  |  | 20h |  |  |  | Day2 |
| 516 | 2.2.22.1 | NRG - Inspect TA1 CTs |  | 10h | 2026-09-14 07:30 | 2026-09-15 09:30 |  | 28.44d |  |  |  |  |  |  |  |
| 517 | 2.2.22.2 | Review drawings and asbuild for TA1 generator replacement |  | 20h | 2026-09-14 07:00 | 2026-09-15 17:00 |  | 27d |  | WGP-ETP | 20h |  |  |  |  |
| 518 | 2.2.23 | Lagging Removal Complete | milestone | 0h | 2026-09-17 21:00 | 2026-09-17 21:00 | 443, 357, 371, 337, 276, 140, 154, 224, 158, 169, 418, 209 | 12.94d | 0d |  |  |  |  |  |  |
| 519 | 2.2.24 | Boiler Maintenance Complete | milestone | 0h | 2026-09-23 02:00 | 2026-09-23 02:00 | 507, 461, 449, 441, 423, 416, 409, 401, 392, 340, 335, 297, 274, 269, 265, 262, 252, 233, 229, 222, 207, 183, 130, 354, 257, 456 | 1.31d | 0d |  |  |  |  |  |  |
| 520 | 2.3 | **Boxup Boiler & Bring Back Online** |  | 11.5d | 2026-09-19 15:00 | 2026-09-23 11:00 |  | 1.75d |  |  | 24h |  |  |  | Day3 |
| 521 | 2.3.1 | Confirm all CSE's removed |  | 1h | 2026-09-23 02:00 | 2026-09-23 03:00 | 519 | 1.31d | 0d | WGP-PROD [200%] | 2h |  |  |  |  |
| 522 | 2.3.2 | Close air path doors |  | 4h | 2026-09-23 03:00 | 2026-09-23 07:00 | 521 | 1.75d | 0d | WC-MECH [200%] | 8h |  |  |  |  |
| 523 | 2.3.3 | Close gas path doors |  | 4h | 2026-09-23 07:00 | 2026-09-23 11:00 | 522 | 1.75d | 0d | WC-MECH [200%] | 8h |  |  |  |  |
| 524 | 2.3.4 | Close steam drum doors |  | 1h | 2026-09-20 08:00 | 2026-09-20 09:00 | 152 | 11d | 9.25d | WC-MECH [200%] | 2h |  |  |  |  |
| 525 | 2.3.5 | Close flash tank door |  | 1h | 2026-09-19 15:00 | 2026-09-19 16:00 | 323 | 13.12d | 11.38d | WC-MECH [200%] | 2h |  |  |  |  |
| 526 | 2.3.6 | Close IBO door |  | 1h | 2026-09-19 15:00 | 2026-09-19 16:00 | 323 | 13.12d | 11.38d | WC-MECH [200%] | 2h |  |  |  |  |
| 527 | 2.3.7 | All Doors Closed | milestone | 0h | 2026-09-23 11:00 | 2026-09-23 11:00 | 526, 525, 523, 524 | 1.75d | 0d |  |  |  |  |  |  |

Notes:
- 499: Operation Description: Instrumentation route - Non BMS Pressure Transmitters
- 500: Operation Description: Instrumentation route - Non BMS Pressure Transmitters
- 501: Operation Description: Instrumentation route - Non BMS Pressure Transmitters
- 502: Operation Description: Instrumentation route - Non BMS Pressure Transmitters
- 503: Operation Description: Instrumentation route - Non BMS Pressure Transmitters
- 504: Operation Description: Instrumentation route - Non BMS Pressure Transmitters
- 505: Operation Description: Instrumentation route - Non BMS Pressure Transmitters
- 506: Operation Description: Instrumentation route - Non BMS Pressure Transmitters
- 509: Operation Description: REPLACE BOILER 1 EXHAUST GAS ECONOMISER EXIT TEMP (101TI22) TEMPERATURE TRANSMITTER
- 510: Operation Description: REPAIR STANDING ALARM BLR1O2 ANALYSER DIFF HIGH. O2 ANALYSER B HAS FAILED AND IS NOW READING HIGH 5.6

| ID | WBS | Task | Type | Duration | Start | Finish | Predecessors | Total slack | Free slack | Calendar | Resources | Work | Day |
| --- | --- | --- | --- | --- | --- | --- | --- | --- | --- | --- | --- | --- | --- |
| 528 | 2.4 | **Gas System Boxup** |  | 0.5d | 2026-09-23 07:00 | 2026-09-23 11:00 |  | 0.81d |  |  |  | 8h | Day3 |
| 529 | 2.4.1 | Remove blank and refit burner 1 gas spool |  | 0.5h | 2026-09-23 07:00 | 2026-09-23 07:30 | 521 | 0.81d | 0d |  | WGP-MTP [200%] | 1h |  |
| 530 | 2.4.2 | Remove blank and refit burner 2 gas spool |  | 0.5h | 2026-09-23 07:30 | 2026-09-23 08:00 | 529 | 0.81d | 0d |  | WGP-MTP [200%] | 1h |  |
| 531 | 2.4.3 | Remove blank and refit burner 3 gas spool |  | 0.5h | 2026-09-23 08:00 | 2026-09-23 08:30 | 530 | 0.81d | 0d |  | WGP-MTP [200%] | 1h |  |
| 532 | 2.4.4 | Remove blank and refit burner 4 gas spool |  | 0.5h | 2026-09-23 08:30 | 2026-09-23 09:00 | 531 | 0.81d | 0d |  | WGP-MTP [200%] | 1h |  |
| 533 | 2.4.5 | Remove blank and refit burner 5 gas spool |  | 0.5h | 2026-09-23 09:00 | 2026-09-23 09:30 | 532 | 0.81d | 0d |  | WGP-MTP [200%] | 1h |  |
| 534 | 2.4.6 | Remove blank and refit burner 6 gas spool |  | 0.5h | 2026-09-23 09:30 | 2026-09-23 10:00 | 533 | 0.81d | 0d |  | WGP-MTP [200%] | 1h |  |
| 535 | 2.4.7 | Swing Main and Pilot Gas System Blanks |  | 0.5h | 2026-09-23 10:00 | 2026-09-23 10:30 | 534 | 0.81d | 0d |  | WGP-MTP [200%] | 1h |  |
| 536 | 2.4.8 | Deisolate main gas system |  | 0.5h | 2026-09-23 10:30 | 2026-09-23 11:00 | 535 | 1.5d | 0d |  | WGP-PROD [200%] | 1h |  |
| 537 | 2.5 | **Balance FD Fan** | inactive | 0.44d | 2026-09-23 11:00 | 2026-09-23 14:30 |  | 0.25d |  |  |  | 13h |  |
| 538 | 2.5.1 | Amend tagging as required to allow test run and balance of FD fan | inactive | 1h | 2026-09-23 11:00 | 2026-09-23 12:00 | 527 | 0.25d | 0d |  | WGP-PROD [200%] | 2h |  |
| 539 | 2.5.2 | Test Run FD fan Prior to boiler start up balancing | inactive | 2h | 2026-09-23 12:00 | 2026-09-23 14:00 | 538 | 0.38d | 0.06d | 10.3 CALENDAR | WGP-PROD [200%] | 4h |  |
| 540 | 2.5.3 | Assist with FD fan balance | inactive | 2h | 2026-09-23 12:00 | 2026-09-23 14:00 | 538 | 0.31d | 0d |  | WGP-MTP [200%] | 4h |  |
| 541 | 2.5.4 | Balance FD fan | inactive | 2h | 2026-09-23 12:00 | 2026-09-23 14:00 | 538 | 0.25d | 0d |  | WC-VIBE | 2h |  |
| 542 | 2.5.5 | Coat weights after balancing fan | inactive | 0.5h | 2026-09-23 14:00 | 2026-09-23 14:30 | 541, 540 | 0.31d | 0d |  | WGP-MTP [200%] | 1h |  |
| 543 | 2.5.6 | FD Fan Balancing Complete | milestone, inactive | 0h | 2026-09-23 14:30 | 2026-09-23 14:30 | 542, 539 | 1.31d | 0d |  |  |  |  |
| 544 | 2.6 | Purge LPG System ready for start up |  | 2h | 2026-09-23 11:00 | 2026-09-23 13:00 | 536 | 1.5d | 0d |  |  |  |  |
| 545 | 2.7 | Detag Boiler ready for FD fan balance, commissioning & start-up |  | 2h | 2026-09-23 13:00 | 2026-09-23 15:00 | 544, 527, 519, 543 | 1.5d | 0d |  | WGP-PROD [200%] | 4h |  |
| 546 | 2.8 | **Commissioning** |  | 4.25d | 2026-09-23 11:00 | 2026-09-24 21:00 |  | 0d |  |  |  | 38h | Day3 |
| 547 | 2.8.1 | Calibrate O2 Analyser |  | 2h | 2026-09-23 11:00 | 2026-09-23 13:00 | 538 | 3.5d |  |  | WGP-ETP [200%] | 4h |  |
| 548 | 2.8.2 | Boiler prestart commissioning checks as per CDS |  | 2h | 2026-09-23 15:00 | 2026-09-23 17:00 | 545 | 1.5d | 0d |  | WGP-PROD [200%] | 4h |  |
| 549 | 2.8.3 | light up boiler as per CDS |  | 2h | 2026-09-23 17:00 | 2026-09-23 19:00 | 548 | 1.5d |  |  | WGP-PROD [200%] | 4h |  |
| 550 | 2.8.4 | BMS Commissioning |  | 6h | 2026-09-24 07:00 | 2026-09-24 13:00 | 549 | 0d |  |  | WGP-ETP [200%] | 12h |  |
| 551 | 2.8.5 | Thermal systems assist with BMS comissioning |  | 6h | 2026-09-24 07:00 | 2026-09-24 13:00 | 549 | 0d |  |  | WC-MISC | 6h |  |
| 552 | 2.8.6 | Live steam lifts on flash tank safety valve |  | 4h | 2026-09-24 13:00 | 2026-09-24 17:00 | 551, 550 | 0d |  |  | WGP-PROD [200%] | 8h |  |
| 553 | 2.8.7 | Conduct trevi testing on safety valves |  | 4h | 2026-09-24 17:00 | 2026-09-24 21:00 | 552 | 0d |  | 24 Hours |  |  |  |
| 554 | 2.9 | Boiler 2 Major Overhaul Complete | milestone | 0h | 2026-09-24 21:00 | 2026-09-24 21:00 | 553, 547 | 0d |  |  |  |  |  |

Notes:
- 537: FD fan balance removed from scope
- 553: Update Calendar
